Task ID,Section,Description,Owner,Dependencies,Pre-requisites,Definition of Done,Status,KPIs,Target Sprint,Artifacts To Track,Validation Method,Estimate (O/M/P),Planned Start,Planned Finish,Percent Complete,Dependency Types,Cadence
EXC-INIT-001,AI Foundation,Sprint 0 - Environment Setup with Agent Ecosystem,Tech Lead (STOA-Foundation),,FILE:.specify/memory/Framework.md;FILE:audit-matrix.yml;POLICY:Budget approved;ENV:AI tools access;ENV:GitHub Enterprise;FILE:docs/architecture/adr/ADR-006-agent-tools.md;FILE:docs/shared/review-checklist.md;FILE:docs/operations/pr-checklist.md;FILE:docs/operations/project-playbook.md,"Complete AI-enhanced environment with automation pipelines operational; artifacts: setup-complete-checklist.md, automation-metrics.json, pipeline-status.yaml; targets: >=80%, zero errors; verified by: pnpm test",Completed,"Setup time <4 hours total, 80% tasks automated, zero manual configuration errors",0,ARTIFACT:docs/agent/setup-complete-checklist.md;ARTIFACT:artifacts/metrics/automation-metrics.json;ARTIFACT:infra/monitoring/pipeline-status.yaml;EVIDENCE:.specify/sprints/sprint-0/attestations/EXC-INIT-001/attestation.json,VALIDATE:pnpm test,120/240/480,2025-12-14,2025-12-14,100,,
AI-SETUP-001,AI Foundation,Configure Claude Code with Custom Commands and Hooks,AI Specialist (STOA-Intelligence),EXC-INIT-001,FILE:.specify/memory/Framework.md;FILE:audit-matrix.yml;ENV:Claude Code access;ENV:project repository created;FILE:docs/agent/setup-complete-checklist.md,".claude/commands configured, hooks system active, slash commands tested; targets: >=100%, <100ms",Completed,"100% commands functional, hooks triggering <100ms",0,ARTIFACT:artifacts/reports/command-test-results.csv;EVIDENCE:.specify/sprints/sprint-0/attestations/AI-SETUP-001/attestation.json;ARTIFACT:tools/integrations/codex/**;ARTIFACT:tools/integrations/jules/**,VALIDATE:pnpm test,60/120/240,2025-12-14,2025-12-15,100,EXC-INIT-001:FS,
AI-SETUP-002,AI Foundation,GitHub Copilot Enterprise Automation Setup,AI Specialist (STOA-Intelligence),AI-SETUP-001,FILE:.specify/memory/Framework.md;FILE:audit-matrix.yml;ENV:GitHub Enterprise;ENV:Copilot licenses;FILE:docs/architecture/adr/ADR-005-workflow-engine.md;FILE:docs/shared/review-checklist.md;FILE:docs/operations/pr-checklist.md;FILE:artifacts/reports/command-test-results.csv,"copilot-instructions.md created, copilot-setup-steps.yml automated, coding agent enabled; targets: >=100%, <2s",Completed,"Copilot response <2s, 100% team access, automation workflows active",0,ARTIFACT:docs/shared/copilot-instructions.md;ARTIFACT:docs/planning/team-licenses.csv;ARTIFACT:infra/monitoring/workflow-automation.yaml;EVIDENCE:.specify/sprints/sprint-0/attestations/AI-SETUP-002/attestation.json,VALIDATE:pnpm typecheck,60/120/240,2025-12-15,2025-12-16,100,AI-SETUP-001:FS,
AI-SETUP-003,AI Foundation,"External AI Tools Integration (Codex, Jules)",AI Specialist (STOA-Intelligence),AI-SETUP-001,FILE:.specify/memory/Framework.md;FILE:audit-matrix.yml;ENV:API keys configured;ENV:sandbox environments;FILE:docs/architecture/adr/ADR-006-agent-tools.md;FILE:artifacts/reports/command-test-results.csv,"Codex CLI configured, Jules connected, security sandboxing verified, automation triggers set; targets: <5s; verified by: pnpm test, pnpm test:integration; gates: security-scan-pass",Completed,"External tools integrated, sandboxing validated, <5s response time",0,ARTIFACT:infra/monitoring/sandbox-security.json;ARTIFACT:artifacts/metrics/response-metrics.csv;ARTIFACT:apps/ai-worker/**;EVIDENCE:.specify/sprints/sprint-0/attestations/AI-SETUP-003/attestation.json,VALIDATE:pnpm test;VALIDATE:pnpm test:integration;GATE:security-scan-pass,90/180/360,2025-12-15,2025-12-17,100,AI-SETUP-001:FS,
ENV-001-AI,Foundation Setup,Automated Monorepo Creation,Tech Lead + Claude Code (STOA-Automation),AI-SETUP-001,FILE:.specify/memory/Framework.md;FILE:audit-matrix.yml;ENV:Claude Code ready;ENV:automation commands configured;FILE:docs/architecture/repo-layout.md;FILE:artifacts/reports/command-test-results.csv,"Monorepo generated via Claude slash command, structure validated, AI-optimized configuration; targets: >=100%, <10 min, zero errors; verified by: pnpm build",Completed,"Setup <10 minutes, zero manual steps, 100% best practices applied",0,ARTIFACT:turbo.json;ARTIFACT:pnpm-workspace.yaml;ARTIFACT:apps/ai-worker/package.json;ARTIFACT:apps/ai-worker/tsconfig.json;ARTIFACT:vitest.config.ts;ARTIFACT:apps/ai-worker/.env.example;ARTIFACT:eslint.config.mjs;ARTIFACT:apps/ai-worker/.gitignore;ARTIFACT:apps/api/package.json;ARTIFACT:apps/api/src/index.ts;ARTIFACT:apps/api/src/context.ts;ARTIFACT:packages/domain/package.json;ARTIFACT:packages/domain/tsconfig.json;ARTIFACT:packages/application/package.json;ARTIFACT:packages/application/tsconfig.json;ARTIFACT:packages/adapters/package.json;ARTIFACT:packages/adapters/tsconfig.json;ARTIFACT:packages/validators/package.json;ARTIFACT:packages/validators/tsconfig.json;ARTIFACT:packages/db/package.json;ARTIFACT:packages/db/tsconfig.json;ARTIFACT:packages/ui/package.json;ARTIFACT:packages/ui/tsconfig.json;ARTIFACT:packages/api-client/package.json;ARTIFACT:packages/api-client/tsconfig.json;ARTIFACT:packages/typescript-config/package.json;ARTIFACT:packages/typescript-config/base.json;ARTIFACT:packages/typescript-config/nextjs.json;ARTIFACT:packages/typescript-config/react.json;ARTIFACT:packages/typescript-config/react-library.json;EVIDENCE:.specify/sprints/sprint-0/attestations/ENV-001-AI/attestation.json,VALIDATE:pnpm build,60/120/240,2025-12-15,2025-12-16,100,AI-SETUP-001:FS,
ENV-002-AI,Foundation Setup,Automated Development Tools Configuration,Backend Dev + AI Specialist (STOA-Intelligence),ENV-001-AI,FILE:.specify/memory/Framework.md;FILE:audit-matrix.yml;ENV:Monorepo ready;ENV:Copilot automation active;FILE:docs/architecture/adr/ADR-006-agent-tools.md;FILE:docs/operations/engineering-playbook.md;FILE:turbo.json,"ESLint/Prettier AI-configured, Husky hooks with AI validation, conventional commits automated; targets: <5 min, zero errors; verified by: pnpm lint",Completed,"Configuration time <5 minutes, AI-suggested rules applied, zero conflicts",0,ARTIFACT:eslint.config.mjs;ARTIFACT:.prettierrc;ARTIFACT:tools/scripts/commitlint.config.js;ARTIFACT:artifacts/reports/lint-results.json;ARTIFACT:artifacts/reports/env-validation-results.json;ARTIFACT:tests/mocks/**;ARTIFACT:tests/unit/**;EVIDENCE:.specify/sprints/sprint-0/attestations/ENV-002-AI/attestation.json;ARTIFACT:packages/ai/tsconfig.json;ARTIFACT:packages/search/tsconfig.json;ARTIFACT:tests/utils/test-helpers.ts;ARTIFACT:artifacts/reports/code-analysis/knip-report-latest.json;ARTIFACT:tests/**,VALIDATE:pnpm lint,30/60/120,2025-12-16,2025-12-16,100,ENV-001-AI:FS,
ENV-003-AI,Foundation Setup,Docker Environment with Optimized Configuration,DevOps + Claude Code (STOA-Automation),ENV-001-AI,FILE:.specify/memory/Framework.md;FILE:audit-matrix.yml;ENV:Docker Desktop;ENV:Claude Code hooks active;FILE:turbo.json,"Docker Compose AI-generated, resource optimization applied, auto-scaling configured; targets: <2 min",Completed,"Environment up <2 minutes, AI-optimized resource usage, self-healing enabled",0,ARTIFACT:docker-compose.yml;ARTIFACT:infra/monitoring/health-check.yaml;EVIDENCE:.specify/sprints/sprint-0/attestations/ENV-003-AI/attestation.json;ARTIFACT:apps/workers/events-worker/Dockerfile;ARTIFACT:apps/workers/ingestion-worker/Dockerfile;ARTIFACT:apps/workers/notifications-worker/Dockerfile;ARTIFACT:docs/setup/docker-compose-overlays.md,VALIDATE:pnpm typecheck,45/90/180,2025-12-16,2025-12-17,100,ENV-001-AI:FS,
ENV-004-AI,Foundation Setup,Supabase Integration with Automated Schema Design,Backend Dev + AI Agents (STOA-Intelligence),ENV-003-AI,FILE:.specify/memory/Framework.md;FILE:audit-matrix.yml;ENV:Supabase account;ENV:AI schema generation ready;FILE:docs/architecture/adr/ADR-001-modern-stack.md;FILE:packages/db/prisma/schema.prisma;FILE:docs/design/token-mapping.md;FILE:docs/company/brand/visual-identity.md;FILE:docker-compose.yml,"Connection established, pgvector optimized by AI, schema AI-validated for performance; targets: >=100%, <30ms",Completed,"Connection <30ms, AI-optimized indexes, 100% type safety verified",0,ARTIFACT:infra/supabase/config.toml;ARTIFACT:packages/db/prisma/migrations/**;ARTIFACT:packages/db/scripts/**;EVIDENCE:.specify/sprints/sprint-0/attestations/ENV-004-AI/attestation.json;ARTIFACT:packages/db/.env.example;ARTIFACT:scripts/reset-test-db.ps1;ARTIFACT:scripts/reset-test-db.sh,VALIDATE:pnpm typecheck,60/120/240,2025-12-17,2025-12-18,100,ENV-003-AI:FS,
ENV-005-AI,Foundation Setup,CI/CD Pipeline with Predictive Optimization,DevOps + Claude Code (STOA-Automation),ENV-002-AI,FILE:.specify/memory/Framework.md;FILE:audit-matrix.yml;ENV:GitHub Actions;ENV:AI automation hooks;FILE:docs/shared/review-checklist.md;FILE:docs/operations/quality-gates.md;FILE:docs/operations/pr-checklist.md;FILE:eslint.config.mjs,"Pipeline AI-generated, predictive caching, self-optimizing workflows, security gates automated; artifacts: ci.yml, cd.yml, context_ack.json; targets: >=95%, <5 min",Completed,"Pipeline <5 minutes, 95% cache hit rate, AI-predicted optimization applied",0,ARTIFACT:.github/workflows/ci.yml;ARTIFACT:.github/workflows/cd.yml;ARTIFACT:artifacts/reports/env-validation-results.json;EVIDENCE:.specify/sprints/sprint-0/attestations/ENV-005-AI/attestation.json,AUDIT:security-review;VALIDATE:pnpm typecheck,60/120/240,2025-12-16,2025-12-17,100,ENV-002-AI:FS,
ENV-006-AI,Foundation Setup,Prisma Schema with Generated Optimizations,Backend Dev + Copilot (STOA-Automation),ENV-004-AI,FILE:.specify/memory/Framework.md;FILE:audit-matrix.yml;ENV:Database ready;POLICY:AI schema analysis complete;FILE:packages/db/prisma/schema.prisma;FILE:docs/shared/review-checklist.md;FILE:docs/operations/pr-checklist.md;FILE:infra/supabase/config.toml,"Schema AI-optimized, migrations AI-tested, seed data AI-generated, performance validated; targets: >=100%, <15s",Completed,"Migration time <15s, AI-verified indexes, 100% query optimization",0,ARTIFACT:packages/db/**;EVIDENCE:.specify/sprints/sprint-0/attestations/ENV-006-AI/attestation.json,VALIDATE:pnpm test,60/120/240,2025-12-18,2025-12-19,100,ENV-004-AI:FS,
ENV-007-AI,Foundation Setup,tRPC Setup with Automated Type Generation,Tech Lead + Claude Code (STOA-Automation),ENV-006-AI,FILE:.specify/memory/Framework.md;FILE:audit-matrix.yml;ENV:Prisma ready;ENV:AI type generation active;FILE:docs/architecture/adr/ADR-001-modern-stack.md;FILE:packages/db/prisma/schema.prisma,"tRPC AI-configured, routers auto-generated, type safety AI-verified, error handling automated; targets: <30s, zero errors",Completed,"Type generation <30s, zero type errors, AI-validated contracts",0,ARTIFACT:apps/api/src/router.ts;ARTIFACT:apps/web/src/lib/trpc.ts;EVIDENCE:.specify/sprints/sprint-0/attestations/ENV-007-AI/attestation.json,VALIDATE:pnpm typecheck,45/90/180,2025-12-19,2025-12-20,100,ENV-006-AI:FS,
ENV-008-AI,Foundation Setup,Automated Observability with Predictive Monitoring,Backend Dev + AI Specialist (STOA-Intelligence),ENV-005-AI,FILE:.specify/memory/Framework.md;FILE:audit-matrix.yml;POLICY:Monitoring tools selected;ENV:AI analysis ready;FILE:docs/shared/review-checklist.md;FILE:docs/operations/pr-checklist.md;FILE:.github/workflows/ci.yml,"OpenTelemetry AI-configured, predictive alerts set, anomaly detection active, self-healing enabled; targets: >=100%",Completed,100% services emit traces/metrics/logs; alerting configured; SLOs defined; dashboards live,0,ARTIFACT:infra/monitoring/otel-config.yaml;ARTIFACT:infra/monitoring/anomaly-detection.json;ARTIFACT:infra/monitoring/self-healing-rules.yaml;ARTIFACT:docs/architecture/observability/correlation-patterns.md;ARTIFACT:docs/architecture/observability/implementation-guide.md;ARTIFACT:docs/architecture/observability/instrumentation-checklist.md;EVIDENCE:.specify/sprints/sprint-0/attestations/ENV-008-AI/attestation.json,VALIDATE:pnpm typecheck,90/180/360,2025-12-17,2025-12-19,100,ENV-005-AI:FS,
ENV-009-AI,Foundation Setup,Frontend with Generated Components and Optimization,Frontend Dev + Claude Code (STOA-Automation),ENV-001-AI,FILE:.specify/memory/Framework.md;FILE:audit-matrix.yml;ENV:Design system;ENV:AI component generation;FILE:docs/company/brand/visual-identity.md;FILE:turbo.json,"Next.js 16.0.10 App Router baseline, Turbopack FS caching enabled, Cache Components used where appropriate, proxy replaces middleware where required; shadcn components AI-selected, performance AI-tuned, accessibility verified; targets: <1s; gates: lighthouse-gte-90",Completed,"Lighthouse >95, AI-generated components, load time <1s",0,EVIDENCE:.specify/sprints/sprint-0/attestations/ENV-009-AI/attestation.json;ARTIFACT:docs/setup/sonarqube-setup.md,GATE:lighthouse-gte-90,60/120/240,2025-12-16,2025-12-18,100,ENV-001-AI:FS,
ENV-010-AI,Foundation Setup,Automated Test Generation and Automation,QA Lead + AI Testing Suite (STOA-Quality),"ENV-007-AI,ENV-009-AI",FILE:.specify/memory/Framework.md;FILE:audit-matrix.yml;ENV:AI test generation tools;ENV:coverage targets;FILE:docs/architecture/adr/ADR-005-workflow-engine.md;FILE:docs/development/tdd-guidelines.md;FILE:apps/api/src/router.ts,"Tests AI-generated, coverage AI-optimized, E2E scenarios AI-created, continuous validation; artifacts: index.html, context_ack.json; targets: >=90%, <1 min; gates: coverage-gte-90",Completed,"Coverage >90%, test generation <1 minute, AI-verified scenarios",0,ARTIFACT:vitest.config.ts;EVIDENCE:.specify/sprints/sprint-0/attestations/ENV-010-AI/attestation.json,VALIDATE:pnpm test;GATE:coverage-gte-90,60/120/240,2025-12-20,2025-12-21,100,"ENV-007-AI:FS,ENV-009-AI:FS",
ENV-011-AI,Foundation Setup,LangChain Integration with Optimized Chains,AI Specialist + Claude Code (STOA-Intelligence),ENV-007-AI,FILE:.specify/memory/Framework.md;FILE:audit-matrix.yml;ENV:OpenAI access;ENV:AI chain optimization;FILE:apps/api/src/router.ts,"LangChain AI-configured, chains AI-optimized, rate limiting AI-managed, cost prediction active",Completed,Workflow runtime P95 < 300ms per step (baseline); cost logging enabled; deterministic replays supported,0,EVIDENCE:.specify/sprints/sprint-0/attestations/ENV-011-AI/attestation.json,VALIDATE:pnpm typecheck,90/180/360,2025-12-20,2025-12-22,100,ENV-007-AI:FS,
ENV-012-AI,Foundation Setup,Documentation with Auto-Generation,Tech Writer + AI Agents (STOA-Intelligence),ENV-001-AI,FILE:.specify/memory/Framework.md;FILE:audit-matrix.yml;ENV:Docusaurus setup;ENV:AI content generation;FILE:turbo.json,"Docs AI-generated, LLM-optimized structure, auto-updating enabled, multi-language support; artifacts: docusaurus.config.js, context_ack.json; targets: >=100%, <30s; gates: coverage-gte-90",Completed,"Doc generation <30s, 100% coverage, AI readability score >90",0,ARTIFACT:docs/docusaurus.config.js;ARTIFACT:tools/scripts/docusaurus.config.js;EVIDENCE:.specify/sprints/sprint-0/attestations/ENV-012-AI/attestation.json,GATE:coverage-gte-90,45/90/180,2025-12-16,2025-12-17,100,ENV-001-AI:FS,
ENV-013-AI,Foundation Setup,Automated Security Implementation,Security Eng + AI Security Tools (STOA-Security),"ENV-005-AI,ENV-007-AI,ENV-009-AI",FILE:.specify/memory/Framework.md;FILE:audit-matrix.yml;ENV:Security AI tools;ENV:threat models;FILE:docs/security/zero-trust-design.md;FILE:docs/operations/engineering-playbook.md;FILE:.github/workflows/ci.yml;FILE:apps/api/src/router.ts,"Security AI-audited, vulnerabilities AI-detected, patches AI-applied, compliance verified; artifacts: security-scan-results.json, compliance-report.md, patch-log.csv; targets: >=100%, zero errors",Completed,"Zero high vulnerabilities, AI security score A+, compliance 100%",0,ARTIFACT:artifacts/reports/security-scan-results.json;ARTIFACT:docs/compliance-and-governance/compliance/compliance-report.md;ARTIFACT:infra/monitoring/security-baseline.json;ARTIFACT:artifacts/reports/security/audit-latest.json;EVIDENCE:.specify/sprints/sprint-0/attestations/ENV-013-AI/attestation.json;ARTIFACT:docs/architecture/adr/ADR-015-security-validation.md,AUDIT:security-review;VALIDATE:pnpm typecheck,120/240/480,2025-12-20,2025-12-23,100,"ENV-005-AI:FS,ENV-007-AI:FS,ENV-009-AI:FS",
ENV-014-AI,Foundation Setup,Performance Optimization with AI Profiling,Performance Eng + AI Tools (STOA-Quality),ENV-009-AI,FILE:.specify/memory/Framework.md;FILE:audit-matrix.yml;ENV:Performance AI tools;POLICY:metrics defined;FILE:docs/shared/review-checklist.md;FILE:docs/operations/pr-checklist.md,"Performance AI-profiled, optimizations AI-applied, predictive scaling configured; targets: >=40%",Completed,"Performance gain >40%, AI-optimized bundles, predictive caching active",0,ARTIFACT:artifacts/reports/profiling-results.json;ARTIFACT:infra/monitoring/cache-config.yaml;ARTIFACT:infra/monitoring/security-baseline.json;EVIDENCE:.specify/sprints/sprint-0/attestations/ENV-014-AI/attestation.json,VALIDATE:pnpm typecheck,60/120/240,2025-12-18,2025-12-20,100,ENV-009-AI:FS,
ENV-015-AI,Foundation Setup,AI-Managed Feature Flags with Predictive Rollout,Backend Dev + AI Agents (STOA-Intelligence),ENV-007-AI,FILE:.specify/memory/Framework.md;FILE:audit-matrix.yml;ENV:Feature flag system;ENV:AI rollout engine;FILE:docs/shared/review-checklist.md;FILE:docs/operations/pr-checklist.md;FILE:apps/api/src/router.ts,"Flags AI-managed, rollout AI-optimized, A/B tests AI-designed, results AI-analyzed; artifacts: rollout-config.json, ab-test-results.csv, prediction-accuracy.json; targets: >=90%, <30s",Completed,"Flag deployment <30s, AI-optimized rollout, prediction accuracy >90%",0,ARTIFACT:infra/monitoring/rollout-config.json;ARTIFACT:artifacts/reports/ab-test-results.csv;ARTIFACT:artifacts/metrics/prediction-accuracy.json;EVIDENCE:.specify/sprints/sprint-0/attestations/ENV-015-AI/attestation.json,VALIDATE:pnpm test,60/120/240,2025-12-20,2025-12-22,100,ENV-007-AI:FS,
ENV-016-AI,Foundation Setup,Privacy-First Analytics with AI Insights,Frontend Dev + AI Analytics (STOA-Intelligence),"ENV-009-AI,ANALYTICS-001",FILE:.specify/memory/Framework.md;FILE:audit-matrix.yml;POLICY:Analytics strategy;ENV:AI insight engine;FILE:docs/shared/review-checklist.md;FILE:docs/operations/pr-checklist.md;FILE:docs/analytics/rfm-abc-spec.md,"Analytics AI-configured, insights AI-generated, privacy AI-verified, predictions active",Completed,Feature flag framework live; audit log events captured; privacy baseline reviewed (DPIA draft),0,ARTIFACT:infra/monitoring/privacy-config.json;ARTIFACT:artifacts/metrics/insights-accuracy.csv;ARTIFACT:docs/compliance-and-governance/compliance/gdpr-compliance.md;ARTIFACT:docs/api/schemas/analytics-event-schema.json;ARTIFACT:docs/analytics/analytics-README.md;EVIDENCE:.specify/sprints/sprint-0/attestations/ENV-016-AI/attestation.json,VALIDATE:pnpm typecheck,60/120/240,2025-12-22,2025-12-24,100,"ENV-009-AI:FS,ANALYTICS-001:FS",
ENV-017-AI,Foundation Setup,Automated Integration Testing,All Teams + AI Orchestrator (STOA-Intelligence),"ENV-001-AI,ENV-003-AI,ENV-005-AI,ENV-010-AI,IFC-001",FILE:.specify/memory/Framework.md;FILE:audit-matrix.yml;ENV:All components ready;ENV:AI orchestration active;FILE:docs/development/tdd-guidelines.md;FILE:turbo.json;FILE:docker-compose.yml;FILE:.github/workflows/ci.yml;FILE:docs/architecture/adr/ADR-001-modern-stack.md,"System AI-tested, issues AI-detected and fixed, demo AI-prepared, metrics AI-verified; artifacts: test-orchestration.json, bug-fixes.log, confidence-metrics.csv; targets: zero errors",Completed,Smoke + integration suite green; zero P0/P1 defects; test execution time <= 15 min in CI,1,ARTIFACT:infra/monitoring/test-orchestration.json;ARTIFACT:artifacts/metrics/confidence-metrics.csv;EVIDENCE:.specify/sprints/sprint-1/attestations/ENV-017-AI/attestation.json,VALIDATE:pnpm test,90/180/360,2025-12-28,2026-01-02,100,"ENV-001-AI:FS,ENV-003-AI:FS,ENV-005-AI:FS,ENV-010-AI:FS,IFC-001:FS",
ENV-018-AI,Foundation Setup,Sprint Planning and Velocity Prediction,PM + AI Planning Tools (STOA-Intelligence),ENV-017-AI,FILE:.specify/memory/Framework.md;FILE:audit-matrix.yml;POLICY:Sprint 0 complete;ENV:AI analytics ready;FILE:docs/shared/review-checklist.md;FILE:docs/operations/quality-gates.md;FILE:docs/operations/pr-checklist.md;FILE:docs/operations/project-playbook.md;FILE:infra/monitoring/test-orchestration.json,"Backlog AI-prioritized, velocity AI-predicted, capacity AI-optimized, risks AI-identified; artifacts: velocity-prediction.json, capacity-model.csv, risk-matrix.md; targets: >=20%",Completed,"Delivery metrics dashboard live (lead time, deploy frequency, change failure rate, MTTR); forecast error <= +/-20%",1,ARTIFACT:packages/test-fixtures/velocity-prediction.json;ARTIFACT:docs/planning/capacity-model.csv;ARTIFACT:docs/compliance-and-governance/governance/risk-matrix.md;ARTIFACT:docs/planning/sprint-planning-README.md;EVIDENCE:.specify/sprints/sprint-1/attestations/ENV-018-AI/attestation.json,VALIDATE:pnpm typecheck,60/120/240,2026-01-02,2026-01-05,100,ENV-017-AI:FS,
EP-001-AI,Foundation Setup,EasyPanel Internal Tools Deployment (Push-based OTLP Pipeline),DevOps + Claude Code (STOA-Automation),"ENV-003-AI,ENV-008-AI",FILE:.specify/memory/Framework.md;FILE:audit-matrix.yml;ENV:Server provisioned;ENV:Tailscale or Cloudflare Access configured;ENV:EasyPanel installed;FILE:docs/architecture/adr/ADR-006-agent-tools.md;FILE:docs/operations/quality-gates.md;FILE:docs/operations/release-rollback.md;FILE:docker-compose.yml;FILE:infra/monitoring/otel-config.yaml,"Week 1: OTel Collector + Prometheus + Grafana deployed behind access control; Week 2: Loki + Tempo deployed with trace-to-log correlation; Week 3: SonarQube deployed with GitHub Actions integration; All configs git-versioned and shared between local Docker and EasyPanel; targets: >=100%, <30 min, zero errors",Completed,"Setup <30 min, zero manual SSL config, 100% services behind access control, 30-day metrics/logs retention, 7-day traces retention, OTLP push working from Railway",0,ARTIFACT:infra/monitoring/otel-collector.yaml;ARTIFACT:infra/monitoring/tempo-config.yml;ARTIFACT:infra/monitoring/docker-compose.monitoring.yml;ARTIFACT:infra/monitoring/prometheus.yml;ARTIFACT:infra/monitoring/loki-config.yml;ARTIFACT:artifacts/monitoring-config-hashes.txt;ARTIFACT:docs/operations/runbooks/monitoring-runbook.md;EVIDENCE:.specify/sprints/sprint-0/attestations/EP-001-AI/attestation.json;ARTIFACT:docs/operations/runbooks/easypanel-runbook.md,VALIDATE:pnpm typecheck,180/360/720,2025-12-19,2025-12-26,100,"ENV-003-AI:FS,ENV-008-AI:FS",
AUTOMATION-001,AI Foundation,Continuous AI Agent Coordination System,AI Specialist (STOA-Intelligence),"AI-SETUP-001,AI-SETUP-002,ENV-005-AI,ENV-008-AI,ENV-010-AI",FILE:.specify/memory/Framework.md;FILE:audit-matrix.yml;ENV:All AI tools integrated;FILE:docs/architecture/adr/ADR-006-agent-tools.md;FILE:artifacts/reports/command-test-results.csv;FILE:docs/shared/copilot-instructions.md;FILE:.github/workflows/ci.yml;FILE:infra/monitoring/otel-config.yaml,"Multi-agent orchestration active, task handoffs automated, quality gates AI-enforced; artifacts: orchestration-config.yaml, handoff-metrics.json, quality-gates.log",Completed,Automated task routing/notifications in place; PR/CI status surfaced; incident alerts to on-call channel,0,ARTIFACT:infra/monitoring/orchestration-config.yaml;ARTIFACT:artifacts/metrics/handoff-metrics.json;ARTIFACT:infra/monitoring/quality-gate-config.json;ARTIFACT:scripts/swarm/orchestrator.sh;ARTIFACT:scripts/swarm/swarm-manager.sh;ARTIFACT:docs/architecture/agent-coordination-README.md;ARTIFACT:infra/agent-routing-rules.json;ARTIFACT:tools/scripts/verify-dod.ts;ARTIFACT:tools/scripts/lib/stoa/**;ARTIFACT:tools/scripts/lib/sprint-audit/**;ARTIFACT:tools/scripts/lib/workflow/**;ARTIFACT:tools/scripts/lib/schemas/**;ARTIFACT:tools/scripts/lib/sprint/types.ts;ARTIFACT:tools/scripts/lib/contract-parser.ts;ARTIFACT:scripts/debt-analyzer.js;ARTIFACT:scripts/sonarqube-metrics.js;ARTIFACT:scripts/prioritize-reviews.js;EVIDENCE:.specify/sprints/sprint-0/attestations/AUTOMATION-001/attestation.json;ARTIFACT:tools/**;ARTIFACT:scripts/**;ARTIFACT:tools/audit/policies/QUICK-REFERENCE.md;ARTIFACT:tools/scripts/attest-sprint.ts;ARTIFACT:tools/scripts/detect-phantom-completions.ts;ARTIFACT:tools/scripts/quality-report.ts;ARTIFACT:tools/plan-linter/package.json;ARTIFACT:tools/scripts/lib/stoa/waiver.ts;ARTIFACT:tools/scripts/lib/context-ack-gatekeeper.test.ts;ARTIFACT:tools/scripts/lib/context-pack-builder.test.ts;ARTIFACT:tools/scripts/lib/validation-utils.test.ts;ARTIFACT:docs/planning/plan-change-log.md;ARTIFACT:docs/planning/plan-governance.md,GATE:coverage-gte-90,120/240/480,2025-12-21,2025-12-25,100,"AI-SETUP-001:FS,AI-SETUP-002:FS,ENV-005-AI:FS,ENV-008-AI:FS,ENV-010-AI:FS",
AUTOMATION-002,AI Foundation,AI Performance Dashboard and Optimization Loop,AI Specialist + Backend Dev (STOA-Intelligence),AUTOMATION-001,FILE:.specify/memory/Framework.md;FILE:audit-matrix.yml;ENV:Metrics collection active;ENV:AI analysis ready;FILE:infra/monitoring/orchestration-config.yaml,"Dashboard showing AI impact, optimization suggestions implemented, ROI tracked; artifacts: optimization-loop.yaml, roi-tracking.csv, metrics-realtime.json",Completed,DORA + quality metrics dashboard live; weekly review cadence established; action items tracked to closure,0,ARTIFACT:infra/monitoring/optimization-loop.yaml;ARTIFACT:artifacts/reports/roi-tracking.csv;ARTIFACT:artifacts/metrics/metrics-realtime.json;ARTIFACT:infra/monitoring/dashboard-spec.json;ARTIFACT:docs/architecture/ai-dashboard-README.md;ARTIFACT:docs/architecture/agent-coordination-README.md;ARTIFACT:infra/agent-routing-rules.json;EVIDENCE:.specify/sprints/sprint-0/attestations/AUTOMATION-002/attestation.json,VALIDATE:pnpm typecheck,90/180/360,2025-12-25,2025-12-27,100,AUTOMATION-001:FS,
IFC-000,Planning,IntelliFlow CRM Feasibility Assessment,CEO + CTO + CFO (STOA-Leadership),,FILE:.specify/memory/Framework.md;FILE:audit-matrix.yml;POLICY:Leadership alignment complete;POLICY:vision approved,Go/No-Go decision documented with clear rationale; targets: >=80%,Completed,"Decision confidence >80%, risks documented",0,ARTIFACT:docs/planning/financial/business-case.md;ARTIFACT:docs/planning/swot-analysis.md;ARTIFACT:docs/planning/financial/financial-model.md;ARTIFACT:docs/architecture/adr/ADR-000-feasibility.md;EVIDENCE:.specify/sprints/sprint-0/attestations/IFC-000/attestation.json,AUDIT:code-review,60/120/240,2025-12-14,2025-12-14,100,,
IFC-001,Validation,PHASE-001: Technical Architecture Spike - Modern Stack,CTO + Tech Lead (STOA-Foundation),IFC-000,FILE:.specify/memory/Framework.md;FILE:audit-matrix.yml;ENV:Turborepo setup;POLICY:tRPC evaluated;ENV:Supabase account;FILE:docs/architecture/adr/ADR-001-modern-stack.md;FILE:docs/development/tdd-guidelines.md;FILE:docs/shared/review-checklist.md;FILE:docs/architecture/decision-workflow.md;FILE:docs/planning/financial/business-case.md,"Modern stack feasibility proven, ADRs documented; targets: <50ms",Completed,"All components connectable, type-safety validated, latency <50ms",1,ARTIFACT:.specify/sprints/sprint-1/context/IFC-001/hydrated-context.md;SPEC:.specify/sprints/sprint-1/specifications/IFC-001-spec.md;PLAN:.specify/sprints/sprint-1/planning/IFC-001-plan.md;ARTIFACT:docs/architecture/architecture-spike-README.md;ARTIFACT:tools/scripts/benchmarks/performance-test.ts;ARTIFACT:tools/scripts/benchmarks/type-safety-validation.ts;EVIDENCE:.specify/sprints/sprint-1/attestations/IFC-001/context_pack.md;EVIDENCE:.specify/sprints/sprint-1/attestations/IFC-001/attestation.json;ARTIFACT:docs/architecture/adr/ADR-001-modern-stack.md;ARTIFACT:docs/architecture/adr/ADR-001-modern-stack.md;ARTIFACT:artifacts/benchmarks/performance-benchmark.json;ARTIFACT:apps/project-tracker/docs/metrics/_global/flows/FLOW-001.md;ARTIFACT:apps/project-tracker/docs/metrics/_global/phase-validations/PHASE-001-validation.md;ARTIFACT:apps/web/src/**;ARTIFACT:apps/web/lib/**,VALIDATE:pnpm typecheck,120/240/480,2025-12-28,2026-01-02,100,IFC-000:FS,
IFC-002,Validation,PHASE-001: Domain Model Design (DDD),Tech Lead + DA (STOA-Foundation),IFC-000,FILE:.specify/memory/Framework.md;FILE:audit-matrix.yml;ENV:Prisma installed;POLICY:bounded contexts identified;FILE:docs/architecture/hex-boundaries.md;FILE:docs/planning/DDD-context-map.puml;FILE:packages/db/prisma/schema.prisma;FILE:docs/development/tdd-guidelines.md;FILE:docs/shared/review-checklist.md;FILE:docs/design/token-mapping.md;FILE:docs/company/brand/visual-identity.md;FILE:docs/planning/financial/business-case.md,"DDD model complete, Prisma schema created, Zod validators defined",Completed,"Schema supports all contexts, type-safe models",1,ARTIFACT:packages/db/prisma/schema.prisma;ARTIFACT:docs/planning/DDD-context-map.puml;ARTIFACT:apps/project-tracker/docs/metrics/_global/flows/FLOW-001.md;ARTIFACT:apps/project-tracker/docs/metrics/_global/phase-validations/PHASE-001-validation.md;EVIDENCE:.specify/sprints/sprint-1/attestations/IFC-002/attestation.json,VALIDATE:pnpm typecheck,120/240/480,2025-12-28,2026-01-03,100,IFC-000:FS,
IFC-003,Validation,PHASE-001: tRPC API Foundation,DevOps + Backend Dev (STOA-Automation),IFC-002,FILE:.specify/memory/Framework.md;FILE:audit-matrix.yml;ENV:Node.js 20;ENV:TypeScript strict mode;FILE:docs/architecture/adr/ADR-001-modern-stack.md;FILE:docs/development/tdd-guidelines.md;FILE:docs/shared/review-checklist.md;FILE:packages/db/prisma/schema.prisma,"tRPC router setup, type-safe endpoints, real-time subscriptions tested; targets: <50ms; output: trpc.ts, router.ts validated",Completed,"End-to-end type safety, <50ms response",1,ARTIFACT:apps/api/src/trpc.ts;ARTIFACT:apps/api/src/shared/e2e-type-safety-test.ts;ARTIFACT:apps/api/src/shared/subscription-demo.ts;ARTIFACT:apps/api/README.md;ARTIFACT:apps/project-tracker/docs/metrics/_global/flows/FLOW-001.md;ARTIFACT:apps/project-tracker/docs/metrics/_global/phase-validations/PHASE-001-validation.md;EVIDENCE:.specify/sprints/sprint-1/attestations/IFC-003/attestation.json,VALIDATE:pnpm test,90/180/360,2026-01-03,2026-01-07,100,IFC-002:FS,
IFC-004,Validation,PHASE-002: Next.js 16.0.10 Lead Capture UI,Frontend Dev + UX (STOA-Domain),IFC-003,"FILE:.specify/memory/Framework.md;FILE:audit-matrix.yml;ENV:Next.js 16.0.10 setup;ENV:shadcn/ui configured;FILE:docs/architecture/adr/ADR-001-modern-stack.md;FILE:docs/development/tdd-guidelines.md;FILE:docs/shared/review-checklist.md;FILE:docs/company/brand/visual-identity.md;FILE:apps/api/src/trpc.ts;IMPLEMENTS:FLOW-002,FLOW-003","Lead form with tRPC integration, mobile responsive; Next.js 16.0.10 App Router uses Turbopack FS caching and Cache Components; proxy replaces middleware where required; targets: <1s; verified by: pnpm test; gates: lighthouse-gte-90",Completed,"Lighthouse score >90, form submission <1s",2,ARTIFACT:apps/web/src/app/leads/(list)/new/page.tsx;ARTIFACT:artifacts/lighthouse/lighthouse-report.json;ARTIFACT:apps/project-tracker/docs/metrics/_global/flows/FLOW-002.md;ARTIFACT:apps/project-tracker/docs/metrics/_global/flows/FLOW-003.md;EVIDENCE:.specify/sprints/sprint-2/attestations/IFC-004/attestation.json;ARTIFACT:apps/api/src/**,VALIDATE:pnpm test;GATE:lighthouse-gte-90,90/180/360,2026-01-11,2026-01-15,100,IFC-003:FS,
IFC-005,Validation,"FLOW-002, FLOW-011: LangChain AI Scoring Prototype",AI Specialist + Backend Dev (STOA-Intelligence),IFC-004,FILE:.specify/memory/Framework.md;FILE:audit-matrix.yml;ENV:LangChain setup;ENV:OpenAI API key;ENV:Zod schemas;FILE:docs/development/tdd-guidelines.md;FILE:docs/shared/review-checklist.md;FILE:docs/operations/pr-checklist.md;FILE:apps/web/src/app/leads/(list)/new/page.tsx,"AI scoring pipeline with structured output, confidence scores; targets: <2s; output: scoring.chain.ts, output-schema.zod.ts validated",Completed,"Scoring <2s, structured output validated",2,ARTIFACT:apps/ai-worker/src/chains/scoring.chain.ts;ARTIFACT:apps/ai-worker/src/chains/scoring.chain.test.ts;ARTIFACT:apps/ai-worker/src/config/ai.config.ts;ARTIFACT:apps/ai-worker/src/prompts/index.ts;ARTIFACT:apps/ai-worker/src/prompts/scoring-system.txt;ARTIFACT:apps/ai-worker/src/prompts/scoring-user.txt;ARTIFACT:apps/ai-worker/src/types/index.ts;ARTIFACT:apps/ai-worker/src/utils/cost-tracker.ts;ARTIFACT:apps/ai-worker/src/utils/cost-tracker.test.ts;ARTIFACT:apps/ai-worker/src/utils/logger.ts;ARTIFACT:apps/ai-worker/src/utils/logger.test.ts;ARTIFACT:apps/ai-worker/src/utils/retry.ts;ARTIFACT:apps/ai-worker/src/utils/retry.test.ts;ARTIFACT:apps/ai-worker/src/index.ts;ARTIFACT:apps/ai-worker/src/examples/usage.ts;ARTIFACT:apps/api/src/shared/scoring-output-schema.zod.ts;ARTIFACT:apps/project-tracker/docs/metrics/_global/flows/FLOW-002.md;ARTIFACT:apps/project-tracker/docs/metrics/_global/phase-validations/PHASE-002-validation.md;EVIDENCE:.specify/sprints/sprint-2/attestations/IFC-005/attestation.json,VALIDATE:pnpm --filter @intelliflow/api typecheck;VALIDATE:pnpm --filter @intelliflow/api test --run,120/240/480,2026-01-15,2026-01-20,100,IFC-004:FS,
IFC-006,Validation,PHASE-002: Supabase Integration Test,Backend Dev + DevOps (STOA-Automation),IFC-003,FILE:.specify/memory/Framework.md;FILE:audit-matrix.yml;ENV:Supabase project created;ENV:auth configured;FILE:docs/architecture/adr/ADR-001-modern-stack.md;FILE:docs/development/tdd-guidelines.md;FILE:docs/shared/review-checklist.md;FILE:apps/api/src/trpc.ts;IMPLEMENTS:FLOW-001,"Auth working, real-time subscriptions, pgvector enabled; artifacts: supabase.ts, auth-flow-test.e2e.ts, vector-search-demo.ts; verified by: pnpm test",Completed,"Auth flow complete, vector search working",3,ARTIFACT:apps/api/src/lib/supabase.ts;ARTIFACT:apps/api/src/shared/auth-flow.test.ts;ARTIFACT:apps/api/src/shared/vector-search.test.ts;ARTIFACT:apps/web/proxy.ts;ARTIFACT:apps/web/src/lib/session.ts;ARTIFACT:apps/api/src/middleware/auth.ts;ARTIFACT:apps/project-tracker/docs/metrics/_global/flows/FLOW-001.md;EVIDENCE:.specify/sprints/sprint-3/attestations/IFC-006/attestation.json,VALIDATE:pnpm test,90/180/360,2026-01-25,2026-01-30,100,IFC-003:FS,
IFC-007,Validation,PHASE-003: Performance Benchmarks - Modern Stack,Performance Eng + DevOps (STOA-Quality),"IFC-004,IFC-005",FILE:.specify/memory/Framework.md;FILE:audit-matrix.yml;ENV:k6/Vitest setup;POLICY:metrics defined;FILE:docs/architecture/adr/ADR-001-modern-stack.md;FILE:docs/development/tdd-guidelines.md;FILE:docs/shared/review-checklist.md;FILE:apps/web/src/app/leads/(list)/new/page.tsx;FILE:apps/ai-worker/src/chains/scoring.chain.ts,"Baseline with tRPC, Vercel Edge, Railway documented; targets: <100ms; verified by: pnpm test; gates: p99-latency-check",Completed,"1000 concurrent users, p99 <100ms",3,ARTIFACT:tools/scripts/k6/load-test.js;ARTIFACT:artifacts/benchmarks/performance-report.html;ARTIFACT:infra/monitoring/grafana-dashboard.json;ARTIFACT:artifacts/metrics/baseline-metrics.csv;ARTIFACT:apps/ai-worker/src/scripts/benchmark.ts;ARTIFACT:apps/project-tracker/docs/metrics/_global/flows/FLOW-003.md;ARTIFACT:apps/project-tracker/docs/metrics/_global/phase-validations/PHASE-003-validation.md;EVIDENCE:.specify/sprints/sprint-3/attestations/IFC-007/attestation.json,VALIDATE:pnpm test;GATE:p99-latency-check,90/180/360,2026-01-25,2026-02-01,100,"IFC-004:FS,IFC-005:FS",
IFC-008,Validation,PHASE-003: Security Assessment - OWASP + ISO 42001 Prep,Security Eng + CTO (STOA-Security),IFC-001,FILE:.specify/memory/Framework.md;FILE:audit-matrix.yml;POLICY:OWASP checklist;POLICY:ISO 42001 requirements mapped;FILE:docs/security/zero-trust-design.md;FILE:docs/security/owasp-checklist.md;FILE:docs/development/tdd-guidelines.md;FILE:docs/shared/review-checklist.md;FILE:docs/operations/pr-checklist.md;FILE:docs/architecture/adr/ADR-001-modern-stack.md,"Security review with AI governance considerations; artifacts: compliance-report.md, owasp-checklist.md, iso42001-gap-analysis.md; gates: security-scan-pass; 0 critical vulnerabilities, all controls verified",Completed,"0 critical vulnerabilities, AI compliance roadmap",2,ARTIFACT:docs/compliance-and-governance/compliance/compliance-report.md;ARTIFACT:docs/security/owasp-checklist.md;ARTIFACT:docs/planning/iso42001-gap-analysis.md;ARTIFACT:artifacts/reports/zap-scan-report.json;ARTIFACT:apps/project-tracker/docs/metrics/_global/flows/FLOW-003.md;ARTIFACT:apps/project-tracker/docs/metrics/_global/phase-validations/PHASE-003-validation.md;ARTIFACT:docs/architecture/architecture-spike-README.md;ARTIFACT:tools/scripts/benchmarks/performance-test.ts;ARTIFACT:tools/scripts/benchmarks/type-safety-validation.ts;EVIDENCE:.specify/sprints/sprint-2/attestations/IFC-008/attestation.json,GATE:security-scan-pass,120/240/480,2026-01-11,2026-01-18,100,IFC-001:FS,
IFC-009,Validation,"PHASE-002: Team Capability Assessment - Modern Stack (Next.js 16.0.10 App Router, Turbopack FS caching, Cache Components, proxy replacing middleware)",PM + Tech Lead (STOA-Foundation),"IFC-001,IFC-005",FILE:.specify/memory/Framework.md;FILE:audit-matrix.yml;ENV:Skills matrix for tRPC/Next.js/LangChain;FILE:docs/architecture/adr/ADR-001-modern-stack.md;FILE:docs/development/tdd-guidelines.md;FILE:docs/shared/review-checklist.md;FILE:docs/operations/quality-gates.md;FILE:docs/operations/pr-checklist.md;FILE:apps/ai-worker/src/chains/scoring.chain.ts,"Team readiness evaluated, training plan created; artifacts: team-skills-matrix.csv, training-plan.md, competency-test-results.csv; targets: >=80%",Completed,80% team confident with new stack,4,ARTIFACT:docs/training/team-skills-matrix.csv;ARTIFACT:docs/planning/training-plan.md;ARTIFACT:artifacts/reports/competency-test-results.csv;ARTIFACT:artifacts/reports/confidence-survey.md;ARTIFACT:apps/project-tracker/docs/metrics/_global/flows/FLOW-002.md;ARTIFACT:apps/project-tracker/docs/metrics/_global/phase-validations/PHASE-002-validation.md;EVIDENCE:.specify/sprints/sprint-4/attestations/IFC-009/attestation.json,VALIDATE:pnpm typecheck,60/120/240,2026-02-08,2026-02-12,100,"IFC-001:FS,IFC-005:FS",
IFC-010,Decision Gate,PHASE-001: Phase 1 Go/No-Go Decision,CEO + Leadership (STOA-Leadership),"IFC-001,IFC-002,IFC-003,IFC-004,IFC-005,IFC-006,IFC-007,IFC-008,IFC-009,IFC-089,IFC-098,IFC-112",FILE:.specify/memory/Framework.md;FILE:audit-matrix.yml;POLICY:All validation tasks complete;ENV:risks assessed;FILE:docs/operations/quality-gates.md;FILE:docs/architecture/decision-workflow.md;FILE:docs/architecture/adr/ADR-001-modern-stack.md;FILE:packages/db/prisma/schema.prisma;FILE:apps/api/src/trpc.ts;FILE:apps/web/src/app/leads/(list)/new/page.tsx;FILE:apps/ai-worker/src/chains/scoring.chain.ts;FILE:apps/api/src/lib/supabase.ts;FILE:tools/scripts/k6/load-test.js;FILE:docs/compliance-and-governance/compliance/compliance-report.md;FILE:docs/training/team-skills-matrix.csv;FILE:apps/api/src/modules/contact/contact.router.ts;FILE:packages/db/prisma/schema-audit.prisma;FILE:artifacts/metrics/blue-green-metrics.csv,"Decision made: proceed with modern stack or pivot; artifacts: decision-gate-1.md, risk-assessment.csv, go-decision-minutes.md",Completed,"Clear decision, modern stack validated",6,ARTIFACT:docs/planning/decision-gate-1.md;ARTIFACT:docs/compliance-and-governance/governance/risk-assessment.csv;ARTIFACT:docs/planning/gate-2/go-decision-minutes.md;ARTIFACT:docs/planning/financial/budget-approval.md;EVIDENCE:.specify/sprints/sprint-6/attestations/IFC-010/attestation.json,VALIDATE:pnpm lint,60/120/180,2026-03-08,2026-03-10,100,"IFC-001:FS,IFC-002:FS,IFC-003:FS,IFC-004:FS,IFC-005:FS,IFC-006:FS,IFC-007:FS,IFC-008:FS,IFC-009:FS,IFC-089:FS,IFC-098:FS,IFC-112:FS",
IFC-011,Parallel Track,PHASE-002: Supabase Free Tier Optimization,DevOps + PM (STOA-Automation),IFC-000,FILE:.specify/memory/Framework.md;FILE:audit-matrix.yml;ENV:Supabase account;ENV:usage limits understood;FILE:docs/architecture/adr/ADR-001-modern-stack.md;FILE:docs/planning/financial/business-case.md,"Free tier maximized, upgrade path documented",Completed,"All free features utilized, costs projected",3,ARTIFACT:docs/planning/financial/supabase-usage-report.json;ARTIFACT:docs/planning/financial/cost-projection.json;ARTIFACT:docs/shared/optimization-guide.md;ARTIFACT:infra/monitoring/upgrade-triggers.yaml;ARTIFACT:apps/project-tracker/docs/metrics/_global/flows/FLOW-002.md;ARTIFACT:apps/project-tracker/docs/metrics/_global/phase-validations/PHASE-002-validation.md;EVIDENCE:.specify/sprints/sprint-3/attestations/IFC-011/attestation.json,VALIDATE:pnpm typecheck,45/90/180,2026-01-25,2026-01-28,100,IFC-000:FS,
IFC-012,MVP Week 1,PHASE-002: Turborepo Monorepo Setup,Tech Lead + Backend Dev (STOA-Domain),IFC-010,FILE:.specify/memory/Framework.md;FILE:audit-matrix.yml;ENV:Node.js 20;ENV:pnpm installed;FILE:docs/architecture/adr/ADR-001-modern-stack.md;FILE:docs/architecture/repo-layout.md;FILE:docs/planning/decision-gate-1.md,"Monorepo with apps/, packages/, shared configs; targets: <3min; verified by: pnpm build",Completed,"Build caching working, <3min builds",6,ARTIFACT:turbo.json;ARTIFACT:.github/workflows/ci.yml;ARTIFACT:infra/monitoring/pnpm-workspace.yaml;EVIDENCE:.specify/sprints/sprint-6/attestations/IFC-012/attestation.json,VALIDATE:pnpm build,60/120/240,2026-03-08,2026-03-11,100,IFC-010:FS,
IFC-013,MVP Week 1,PHASE-002: tRPC Router Implementation,Backend Dev + Tech Lead (STOA-Domain),IFC-012,FILE:.specify/memory/Framework.md;FILE:audit-matrix.yml;ENV:Turborepo ready;ENV:TypeScript configured;FILE:docs/architecture/adr/ADR-001-modern-stack.md;FILE:docs/operations/engineering-playbook.md;FILE:turbo.json,"Lead CRUD with tRPC, Zod validation, type-safe client; artifacts: leads.router.ts, context_ack.json; targets: >=100%, <50ms",Completed,"100% type coverage, API response <50ms",6,ARTIFACT:apps/api/src/modules/lead/lead.router.ts;ARTIFACT:apps/project-tracker/docs/metrics/_global/flows/FLOW-002.md;ARTIFACT:apps/project-tracker/docs/metrics/_global/phase-validations/PHASE-002-validation.md;EVIDENCE:.specify/sprints/sprint-6/attestations/IFC-013/attestation.json,VALIDATE:pnpm --filter @intelliflow/api typecheck;VALIDATE:pnpm --filter @intelliflow/api test --run,90/180/360,2026-03-11,2026-03-15,100,IFC-012:FS,
IFC-014,MVP Week 1,PHASE-002: Next.js 16.0.10 App Router UI,Frontend Dev + UX (STOA-Domain),IFC-013,FILE:docs/design/page-registry.md;FILE:.specify/memory/Framework.md;FILE:audit-matrix.yml;ENV:shadcn/ui setup;ENV:Tailwind configured;FILE:docs/architecture/adr/ADR-001-modern-stack.md;FILE:docs/company/brand/visual-identity.md;FILE:docs/company/brand/style-guide.md;FILE:docs/company/brand/dos-and-donts.md;FILE:docs/company/brand/accessibility-patterns.md;FILE:apps/api/src/modules/lead/lead.router.ts,"Lead management UI with RSC, optimistic updates; Next.js 16.0.10 App Router uses Turbopack FS caching and Cache Components; proxy replaces middleware where required; targets: >=100%",Completed,"Core Web Vitals green, accessibility 100%",6,ARTIFACT:artifacts/benchmarks/web-vitals-report.json;ARTIFACT:artifacts/reports/axe-audit-results.json;ARTIFACT:apps/project-tracker/docs/metrics/_global/flows/FLOW-002.md;ARTIFACT:apps/project-tracker/docs/metrics/_global/phase-validations/PHASE-002-validation.md;EVIDENCE:.specify/sprints/sprint-6/attestations/IFC-014/attestation.json,VALIDATE:pnpm --filter @intelliflow/web typecheck;VALIDATE:pnpm --filter @intelliflow/web test --run,90/180/360,2026-03-22,2026-03-27,100,IFC-013:FS,
IFC-015,MVP Week 1,PHASE-002: BullMQ Job Queue Setup,Backend Dev + DevOps (STOA-Automation),IFC-013,FILE:.specify/memory/Framework.md;FILE:audit-matrix.yml;ENV:Redis configured;ENV:BullMQ installed;FILE:apps/api/src/modules/lead/lead.router.ts,"Async job processing for AI scoring, retry logic; artifacts: bull-board-screenshot.png, job-metrics.json, context_ack.json; verified by: pnpm test",Completed,"Jobs processing reliably, dashboard active",6,ARTIFACT:artifacts/metrics/job-metrics.json;ARTIFACT:packages/platform/src/**;ARTIFACT:packages/platform/src/queues/retry-strategy.ts;EVIDENCE:.specify/sprints/sprint-6/attestations/IFC-015/attestation.json,VALIDATE:pnpm test,90/180/360,2026-03-22,2026-03-28,100,IFC-013:FS,
IFC-016,MVP Week 1,PHASE-002: Real-time Subscriptions,Frontend Dev + Backend Dev (STOA-Domain),IFC-014,FILE:.specify/memory/Framework.md;FILE:audit-matrix.yml;ENV:tRPC subscriptions;ENV:Supabase realtime;FILE:artifacts/benchmarks/web-vitals-report.json,"Live updates for lead scores and activities; P95 latency 60ms; 27 tests passing; artifacts: use-subscription.ts, websocket-test-results.json; verified by: pnpm test; gates: latency-check PASSED",Completed,"<100ms latency (60ms actual), connection stable",6,ARTIFACT:apps/web/src/hooks/use-trpc-subscriptions.ts;ARTIFACT:apps/web/src/hooks/__tests__/use-trpc-subscriptions.test.ts;ARTIFACT:artifacts/reports/websocket-test-results.json;EVIDENCE:.specify/sprints/sprint-6/attestations/IFC-016/attestation.json,VALIDATE:pnpm test;GATE:latency-check,60/120/240,2026-03-27,2026-03-30,100,IFC-014:FS,
IFC-017,MVP Week 1,PHASE-002: Prisma + Supabase Data Layer,Backend Dev + DA (STOA-Domain),"IFC-012,IFC-013",FILE:.specify/memory/Framework.md;FILE:audit-matrix.yml;POLICY:Prisma schema defined;ENV:migrations ready;FILE:docs/architecture/adr/ADR-001-modern-stack.md;FILE:docs/architecture/adr/ADR-007-data-governance.md;FILE:packages/db/prisma/schema.prisma;FILE:docs/shared/review-checklist.md;FILE:docs/operations/pr-checklist.md;FILE:turbo.json;FILE:apps/api/src/modules/lead/lead.router.ts,"Type-safe database queries, pgvector configured; targets: <20ms, zero errors",Completed,"Zero data loss, queries <20ms",6,ARTIFACT:packages/db/src/client.ts;ARTIFACT:tools/scripts/pgvector-test.sql;ARTIFACT:apps/project-tracker/docs/metrics/_global/flows/FLOW-002.md;ARTIFACT:apps/project-tracker/docs/metrics/_global/phase-validations/PHASE-002-validation.md;EVIDENCE:.specify/sprints/sprint-6/attestations/IFC-017/attestation.json,VALIDATE:pnpm --filter @intelliflow/api typecheck;VALIDATE:pnpm --filter @intelliflow/api test --run,90/180/360,2026-03-11,2026-03-17,100,"IFC-012:FS,IFC-013:FS",
IFC-018,MVP Week 1,PHASE-002: Vitest Testing Suite,QA + Whole Team (STOA-Quality),"IFC-014,IFC-015,IFC-016",FILE:.specify/memory/Framework.md;FILE:audit-matrix.yml;ENV:Vitest configured;ENV:coverage tools ready;FILE:docs/development/tdd-guidelines.md;FILE:docs/company/brand/visual-identity.md;FILE:artifacts/benchmarks/web-vitals-report.json;FILE:artifacts/misc/bull-board-screenshot.png;FILE:apps/web/src/hooks/use-trpc-subscriptions.ts,"157 test files, 4711 tests passing; coverage thresholds: 90% statements, 80% branches; gates: coverage-gte-80 PASSED, coverage-gte-90 PASSED",Completed,"All critical paths tested (4711 tests), CI green",6,ARTIFACT:vitest.config.ts;ARTIFACT:artifacts/test-results/test-report.html;ARTIFACT:artifacts/reports/ci-test-results.xml;EVIDENCE:.specify/sprints/sprint-6/attestations/IFC-018/attestation.json,VALIDATE:pnpm test;GATE:coverage-gte-80;GATE:coverage-gte-90,90/180/360,2026-03-30,2026-04-04,100,"IFC-014:FS,IFC-015:FS,IFC-016:FS",
IFC-019,Investment Gate,PHASE-001: Gate 1 Review - £500 Investment,CFO + CEO (STOA-Leadership),IFC-018,FILE:.specify/memory/Framework.md;FILE:audit-matrix.yml;ENV:Week 1 metrics collected;ENV:POC results analyzed;FILE:docs/shared/review-checklist.md;FILE:docs/operations/quality-gates.md;FILE:apps/api/vitest.config.ts,"Continue/pivot decision based on MVP success; artifacts: investment-gate-1-deck.md, week-1-metrics.csv, roi-projection.md, cfo-approval.md",Completed,"ROI projection validated, budget approved",6,SPEC:.specify/sprints/sprint-6/specifications/IFC-019-spec.md;PLAN:.specify/sprints/sprint-6/planning/IFC-019-plan.md;ARTIFACT:docs/planning/investment-gate-1-deck.md;ARTIFACT:docs/planning/financial/roi-projection.md;ARTIFACT:docs/planning/cfo-approval.md;EVIDENCE:.specify/sprints/sprint-6/attestations/IFC-019/attestation.json,VALIDATE:pnpm lint,60/120/180,2026-04-05,2026-04-07,100,IFC-018:FS,
IFC-020,Intelligence,PHASE-011: LangChain Pipeline Design,AI Specialist + Data Scientist (STOA-Intelligence),IFC-019,FILE:.specify/memory/Framework.md;FILE:audit-matrix.yml;ENV:LangChain patterns researched;ENV:prompts tested;FILE:docs/operations/quality-gates.md;FILE:docs/design/token-mapping.md;FILE:docs/company/brand/visual-identity.md;FILE:docs/planning/investment-gate-1-deck.md,"Modular AI pipeline with memory (Zep), tools defined; artifacts: ai-architecture.md, langchain-flow-diagram.mermaid, context_ack.json; RetrievalService must return actual pgvector search results, not null fallback to FTS",Completed,"Pipeline architecture documented, extensible",6,ARTIFACT:docs/architecture/ai-architecture.md;ARTIFACT:docs/architecture/diagrams/langchain-flow-diagram.mermaid;EVIDENCE:.specify/sprints/sprint-6/attestations/IFC-020/attestation.json,GATE:no-null-fallback;VALIDATE:pnpm typecheck,120/240/480,2026-05-31,2026-06-06,100,IFC-019:FS,
IFC-021,Intelligence,PHASE-011: CrewAI Agent Framework,Backend Dev + AI Specialist (STOA-Intelligence),IFC-020,FILE:.specify/memory/Framework.md;FILE:audit-matrix.yml;ENV:CrewAI setup;POLICY:agent roles defined;FILE:docs/architecture/adr/ADR-006-agent-tools.md;FILE:docs/architecture/ai-architecture.md,"Lead qualifier, email writer, follow-up agents; artifacts: crew-config.yaml, agent-interaction-logs.json, orchestration.test.ts; verified by: pnpm test",Completed,"Agents cooperating, tasks orchestrated",6,ARTIFACT:infra/monitoring/crew-config.yaml;ARTIFACT:apps/api/src/agent/orchestration.test.ts;EVIDENCE:.specify/sprints/sprint-6/attestations/IFC-021/attestation.json,VALIDATE:pnpm test,90/180/360,2026-06-14,2026-06-20,100,IFC-020:FS,
IFC-022,Intelligence,PHASE-011: Structured AI Output Implementation,AI Specialist + Backend Dev (STOA-Intelligence),IFC-021,FILE:.specify/memory/Framework.md;FILE:audit-matrix.yml;ENV:Zod schemas for AI outputs;ENV:validation ready;FILE:docs/architecture/repo-layout.md;FILE:docs/operations/engineering-playbook.md;FILE:infra/monitoring/crew-config.yaml,"AI responses validated, confidence scores included; artifacts: output-validation.test.ts, confidence-calibration.json, context_ack.json; targets: >=100%",Completed,"100% structured outputs, type-safe",6,ARTIFACT:apps/api/src/shared/output-validation.test.ts;ARTIFACT:artifacts/reports/confidence-calibration.json;EVIDENCE:.specify/sprints/sprint-13/attestations/IFC-022/context_ack.json,VALIDATE:pnpm --filter @intelliflow/api typecheck;VALIDATE:pnpm --filter @intelliflow/api test --run,60/120/240,2026-06-17,2026-06-21,100,IFC-021:FS,
IFC-023,Intelligence,PHASE-011: AI Explainability UI,Frontend Dev + UX (STOA-Domain),IFC-022,FILE:.specify/memory/Framework.md;FILE:audit-matrix.yml;POLICY:Scoring factors defined;ENV:UI patterns researched;FILE:docs/company/brand/visual-identity.md;FILE:apps/api/src/shared/output-validation.test.ts,"Score explanations visible, factors breakdown shown; artifacts: user-test-results.pdf, context_ack.json",Completed,"Users understand AI decisions, trust >4/5",6,ARTIFACT:packages/ui/src/components/score/ScoreCard.tsx;ARTIFACT:packages/ui/src/components/score/ScoreFactorList.tsx;ARTIFACT:packages/ui/src/components/score/ScoreFactor.tsx;ARTIFACT:packages/ui/src/components/score/ConfidenceIndicator.tsx;ARTIFACT:packages/ui/src/components/score/ModelInfo.tsx;ARTIFACT:packages/ui/src/components/score/ScoreBadge.tsx;ARTIFACT:packages/ui/__tests__/score-card.test.tsx;EVIDENCE:.specify/sprints/sprint-13/attestations/IFC-023/context_ack.json,VALIDATE:pnpm --filter @intelliflow/web typecheck;VALIDATE:pnpm --filter @intelliflow/web test --run,90/180/360,2026-06-20,2026-06-25,100,IFC-022:FS,
IFC-024,Intelligence,PHASE-011: Human-in-the-Loop Feedback,Full Stack Dev (STOA-Foundation),IFC-023,FILE:.specify/memory/Framework.md;FILE:audit-matrix.yml;ENV:Feedback UI designed;ENV:learning pipeline ready;FILE:artifacts/reports/user-test-results.md,"Score adjustments tracked, model improvement loop; artifacts: feedback-analytics.json, context_ack.json",Completed,"All feedback captured, model updating",14,ARTIFACT:artifacts/reports/feedback-analytics.json;EVIDENCE:.specify/sprints/sprint-14/attestations/IFC-024/attestation.json,VALIDATE:pnpm typecheck,60/120/240,2026-06-28,2026-07-02,100,IFC-023:FS,
IFC-025,Intelligence,PHASE-011: A/B Testing Framework,Data Scientist + Backend Dev (STOA-Intelligence),IFC-022,FILE:.specify/memory/Framework.md;FILE:audit-matrix.yml;ENV:Feature flags setup;POLICY:metrics defined;FILE:docs/development/tdd-guidelines.md;FILE:apps/api/src/shared/output-validation.test.ts,"AI vs manual scoring comparison, statistical analysis; artifacts: ab-test-config.json, statistical-analysis.ipynb, experiment-dashboard.png",Completed,"Experiments trackable, significance calculable",6,ARTIFACT:packages/validators/src/experiment.ts;ARTIFACT:apps/ai-worker/src/analytics/statistical-analysis.ts;ARTIFACT:packages/application/src/services/ExperimentService.ts;ARTIFACT:apps/api/src/modules/experiment/experiment.router.ts;ARTIFACT:packages/ui/src/components/experiment/ExperimentDashboard.tsx;ARTIFACT:infra/monitoring/ab-test-config.json;EVIDENCE:.specify/sprints/sprint-6/attestations/IFC-025/attestation.json,VALIDATE:pnpm --filter @intelliflow/api typecheck;VALIDATE:pnpm --filter @intelliflow/api test --run,120/240/480,2026-06-28,2026-07-05,100,IFC-022:FS,
IFC-026,Intelligence,PHASE-011: Playwright E2E Testing,QA + AI Specialist (STOA-Quality),"IFC-022,IFC-024",FILE:.specify/memory/Framework.md;FILE:audit-matrix.yml;ENV:Playwright setup;POLICY:test scenarios defined;FILE:docs/development/tdd-guidelines.md;FILE:apps/api/src/shared/output-validation.test.ts;FILE:artifacts/reports/feedback-analytics.json,"E2E tests for AI features, visual regression; artifacts: index.html, context_ack.json",Completed,"Critical flows covered, screenshots validated",15,ARTIFACT:artifacts/test-results/playwright-report.html;EVIDENCE:.specify/sprints/sprint-15/attestations/IFC-026/attestation.json,VALIDATE:pnpm --filter @intelliflow/web typecheck,90/180/360,2026-07-12,2026-07-18,100,"IFC-022:FS,IFC-024:FS",
IFC-027,Investment Gate,PHASE-001: Gate 2 Review - £2000 Investment,CFO + CEO (STOA-Leadership),IFC-026,FILE:.specify/memory/Framework.md;FILE:audit-matrix.yml;ENV:AI value demonstrated;ENV:metrics collected;FILE:docs/shared/review-checklist.md;FILE:docs/operations/quality-gates.md;FILE:artifacts/test-results/playwright-report.html,"Expand/maintain decision on AI features; artifacts: investment-gate-2-analysis.md, ai-roi-report.md, customer-feedback.md",Completed,"AI adds measurable value, ROI positive",15,ARTIFACT:docs/planning/gate-2/investment-gate-2-analysis.md;ARTIFACT:docs/planning/customer-feedback.md;ARTIFACT:docs/planning/board-presentation.md;EVIDENCE:.specify/sprints/sprint-15/attestations/IFC-027/attestation.json,VALIDATE:pnpm lint,60/120/180,2026-07-19,2026-07-23,100,IFC-026:FS,
IFC-028,Automation,PHASE-005: Workflow Engine with LangGraph,Backend Dev + Architect (STOA-Domain),IFC-027,FILE:.specify/memory/Framework.md;FILE:audit-matrix.yml;POLICY:LangGraph evaluated;ENV:state machines designed;FILE:docs/architecture/adr/ADR-005-workflow-engine.md;FILE:docs/planning/gate-2/investment-gate-2-analysis.md,"Visual workflow engine with conditional logic; artifacts: state-machine-tests.ts, IFC-028-delivery.md, context_ack.json",Completed,"Complex workflows supported, state persistent",16,ARTIFACT:apps/api/src/workflow/__tests__/state-machine.test.ts;ARTIFACT:.specify/sprints/sprint-16/execution/IFC-028/IFC-028-delivery.md;EVIDENCE:.specify/sprints/sprint-16/attestations/IFC-028/attestation.json,VALIDATE:pnpm --filter @intelliflow/api typecheck;VALIDATE:pnpm --filter @intelliflow/api test --run,120/240/480,2026-07-26,2026-08-02,100,IFC-027:FS,
IFC-029,Automation,PHASE-005: Auto-Response with Approval Gate,Backend Dev + AI Specialist (STOA-Intelligence),IFC-028,FILE:.specify/memory/Framework.md;FILE:audit-matrix.yml;ENV:Response templates created;ENV:approval UI ready;FILE:docs/shared/review-checklist.md;FILE:docs/operations/quality-gates.md;FILE:docs/operations/pr-checklist.md;FILE:apps/api/src/workflow/__tests__/state-machine.test.ts,"AI-generated responses with human approval workflow; artifacts: approval-workflow.bpmn, response-quality-metrics.json, context_ack.json; targets: <1s; All phases completed: Domain(1)+AI Chain(4)+Infrastructure(2)+Application(3)+Integration(5)",Completed,"Response generation <1s, approval tracking",16,ARTIFACT:docs/architecture/approval-workflow.bpmn;ARTIFACT:artifacts/metrics/response-quality-metrics.json;ARTIFACT:apps/project-tracker/docs/metrics/sprint-16/IFC-029-attestation.json;EVIDENCE:.specify/sprints/sprint-16/attestations/IFC-029/attestation.json;SPEC:.specify/sprints/sprint-16/specifications/IFC-029-spec.md;PLAN:.specify/sprints/sprint-16/planning/IFC-029-plan.md;ARTIFACT:docs/architecture/adr/ADR-017-workflow-reliability.md,GATE:real-llm-generation;VALIDATE:pnpm test,90/180/360,2026-01-31,2026-08-05,100,IFC-028:FS,
IFC-030,Automation,PHASE-005: Smart Lead Routing,Backend Dev + Sales Ops (STOA-Domain),IFC-029,FILE:.specify/memory/Framework.md;FILE:audit-matrix.yml;POLICY:Routing rules defined;ENV:assignment logic clear;FILE:docs/architecture/approval-workflow.bpmn,"Score-based routing with load balancing; artifacts: routing-rules-config.yaml, routing-simulation-results.csv, sla-compliance.pdf; targets: >=100%; routing-simulation-results.csv must contain real lead routing data from test database, not generated fake data",Completed,"100% leads routed optimally, SLA defined",17,ARTIFACT:infra/monitoring/routing-rules-config.yaml;ARTIFACT:artifacts/reports/routing-simulation-results.csv;ARTIFACT:docs/compliance-and-governance/governance/sla-compliance.md;EVIDENCE:.specify/sprints/sprint-17/attestations/IFC-030/attestation.json;ARTIFACT:docs/architecture/adr/ADR-017-workflow-reliability.md;SPEC:.specify/sprints/sprint-17/specifications/IFC-030-spec.md;PLAN:.specify/sprints/sprint-17/planning/IFC-030-plan.md,GATE:real-routing-data;VALIDATE:pnpm test:integration,90/180/360,2026-08-09,2026-08-15,100,IFC-029:FS,
IFC-031,Automation,PHASE-005: Workflow Builder UI (React Flow),Frontend Dev + UX (STOA-Domain),IFC-028,FILE:.specify/memory/Framework.md;FILE:audit-matrix.yml;ENV:React Flow integrated;ENV:drag-drop ready;FILE:docs/architecture/adr/ADR-005-workflow-engine.md;FILE:docs/company/brand/visual-identity.md;FILE:apps/api/src/workflow/__tests__/state-machine.test.ts,"Visual workflow creation, node-based editor; artifacts: usability-test-video.mp4, context_ack.json; verified by: pnpm build",Completed,Non-technical users building workflows,17,EVIDENCE:.specify/sprints/sprint-17/attestations/IFC-031/attestation.json;SPEC:.specify/sprints/sprint-17/specifications/IFC-031-spec.md;PLAN:.specify/sprints/sprint-17/planning/IFC-031-plan.md,VALIDATE:pnpm build,120/240/480,2026-04-12,2026-08-30,100,IFC-028:FS,
IFC-032,Automation,PHASE-005: OpenTelemetry Monitoring,DevOps + SRE (STOA-Automation),IFC-030,FILE:.specify/memory/Framework.md;FILE:audit-matrix.yml;ENV:OTel setup;ENV:Grafana configured;FILE:infra/monitoring/routing-rules-config.yaml,"Distributed tracing, metrics, logs unified; artifacts: otel-collector-config.yaml, trace-examples.json, context_ack.json; trace-examples.json must contain real trace IDs from actual service calls, not fabricated examples",Backlog,"Full observability, alerts configured",18,ARTIFACT:artifacts/misc/otel-collector-config.yaml;ARTIFACT:artifacts/misc/trace-examples.json;EVIDENCE:.specify/sprints/sprint-18/attestations/IFC-032/context_ack.json;ARTIFACT:docs/architecture/adr/ADR-017-workflow-reliability.md,GATE:real-trace-data;GATE:integration-wired;VALIDATE:pnpm typecheck,90/180/360,2026-08-23,2026-08-29,0,IFC-030:FS,
IFC-033,Automation,PHASE-005: Load Testing with k6,Performance Eng + DevOps (STOA-Quality),"IFC-030,IFC-032",FILE:.specify/memory/Framework.md;FILE:audit-matrix.yml;ENV:k6 scripts written;POLICY:load scenarios defined;FILE:docs/development/tdd-guidelines.md;FILE:infra/monitoring/routing-rules-config.yaml;FILE:artifacts/misc/otel-collector-config.yaml,"System handles 5000 leads/hour with automation; artifacts: load-test-report.html, bottleneck-analysis.md, grafana-load-test.png; load-test-report.html must show actual k6 execution output with real timestamps, not template report",Backlog,"Performance validated, bottlenecks identified",19,ARTIFACT:artifacts/reports/load-test-report.html;ARTIFACT:docs/shared/bottleneck-analysis.md;ARTIFACT:artifacts/misc/grafana-load-test.png;EVIDENCE:.specify/sprints/sprint-19/attestations/IFC-033/context_ack.json;ARTIFACT:docs/architecture/adr/ADR-017-workflow-reliability.md,GATE:real-benchmark-data;VALIDATE:pnpm test:load,120/240/480,2026-09-06,2026-09-13,0,"IFC-030:FS,IFC-032:FS",
IFC-034,Investment Gate,PHASE-001: Gate 3 Review - £3000 Investment,CFO + CEO (STOA-Leadership),IFC-033,FILE:.specify/memory/Framework.md;FILE:audit-matrix.yml;ENV:Automation ROI calculated;ENV:stability proven;FILE:docs/shared/review-checklist.md;FILE:docs/operations/quality-gates.md;FILE:artifacts/reports/load-test-report.html,"Scale decision with modern stack validated; artifacts: automation-roi-analysis.xlsx, stability-report.pdf, scale-plan.pptx",Backlog,"Clear path forward, investment justified",19,ARTIFACT:artifacts/reports/automation-roi-analysis.xlsx;ARTIFACT:artifacts/reports/stability-report.pdf;ARTIFACT:artifacts/misc/scale-plan.pptx;ARTIFACT:artifacts/misc/investment-recommendation.docx;EVIDENCE:.specify/sprints/sprint-19/attestations/IFC-034/context_ack.json,VALIDATE:pnpm lint,60/120/180,2026-09-14,2026-09-17,0,IFC-033:FS,
IFC-035,Enhancement,PHASE-006: WhatsApp Business API Research,Integration Eng + PM (STOA-Foundation),IFC-034,FILE:.specify/memory/Framework.md;FILE:audit-matrix.yml;ENV:WhatsApp API access requested;ENV:costs analyzed;FILE:artifacts/reports/automation-roi-analysis.xlsx,"Integration approach with Supabase webhooks validated; artifacts: whatsapp-api-research.md, integration-design.puml, cost-analysis.xlsx",Backlog,"Technical feasibility confirmed, costs clear",20,ARTIFACT:docs/shared/whatsapp-api-research.md;ARTIFACT:docs/shared/integration-design.puml;ARTIFACT:artifacts/reports/cost-analysis.xlsx;ARTIFACT:artifacts/misc/poc-results.json;EVIDENCE:.specify/sprints/sprint-20/attestations/IFC-035/context_ack.json,VALIDATE:pnpm typecheck,60/120/240,2026-09-20,2026-09-25,0,IFC-034:FS,
IFC-036,Enhancement,PHASE-006: WhatsApp + tRPC Integration,Backend Dev + Integration Eng (STOA-Domain),"IFC-035,IFC-106",FILE:.specify/memory/Framework.md;FILE:audit-matrix.yml;ENV:API credentials obtained;ENV:webhook endpoint ready;FILE:docs/architecture/adr/ADR-001-modern-stack.md;FILE:docs/shared/whatsapp-api-research.md;FILE:docs/architecture/hex-boundaries.md,"WhatsApp messages captured via tRPC mutations; artifacts: webhook-test-results.json, message-flow-diagram.svg, context_ack.json; targets: >=9%, <1s; verified by: pnpm test; gates: latency-check; webhook-test-results.json must contain real WhatsApp API responses, adapter must be wired to API router",Backlog,"Messages processed <1s, 99.9% reliability",21,ARTIFACT:artifacts/misc/webhook-test-results.json;ARTIFACT:docs/shared/message-flow-diagram.svg;EVIDENCE:.specify/sprints/sprint-21/attestations/IFC-036/context_ack.json,VALIDATE:pnpm test;GATE:latency-check;GATE:integration-wired;GATE:provider-test-exists,120/240/480,2026-10-04,2026-10-11,0,"IFC-035:FS,IFC-106:FS",
IFC-037,Enhancement,PHASE-005: Analytics Dashboard Design,Data Analyst + UX (STOA-Foundation),"IFC-032,ANALYTICS-001,IFC-190",FILE:.specify/memory/Framework.md;FILE:audit-matrix.yml;POLICY:KPIs defined;POLICY:Tremor UI evaluated;FILE:docs/design/token-mapping.md;FILE:docs/company/brand/visual-identity.md;FILE:artifacts/misc/otel-collector-config.yaml;FILE:docs/analytics/rfm-abc-spec.md;FILE:apps/api/src/modules/analytics/analytics.router.ts,"Real-time analytics with shadcn/ui charts; artifacts: figma-dashboard-designs.url, kpi-definitions.yaml, user-feedback-notes.md",Backlog,All stakeholders approve mockups,21,ARTIFACT:artifacts/misc/figma-dashboard-designs.url;ARTIFACT:artifacts/misc/kpi-definitions.yaml;ARTIFACT:docs/dashboard/user-feedback-notes.md;ARTIFACT:artifacts/misc/design-tokens.json;EVIDENCE:.specify/sprints/sprint-21/attestations/IFC-037/context_ack.json;ARTIFACT:docs/architecture/adr/ADR-016-analytics-integrity.md;ARTIFACT:docs/planning/prd-analytics-reporting.md,VALIDATE:pnpm typecheck,60/120/240,2026-10-04,2026-10-08,0,"IFC-032:FS,ANALYTICS-001:FS,IFC-190:FS",
IFC-038,Enhancement,Analytics Implementation,Frontend Dev + Data Eng (STOA-Domain),"IFC-037,ANALYTICS-001,IFC-190",FILE:.specify/memory/Framework.md;FILE:audit-matrix.yml;ENV:Chart components ready;ENV:data pipeline designed;FILE:docs/operations/engineering-playbook.md;FILE:artifacts/misc/figma-dashboard-designs.url;FILE:docs/analytics/rfm-abc-spec.md;FILE:apps/api/src/modules/analytics/analytics.router.ts,"Interactive dashboard with Supabase real-time; artifacts: real-time-test-video.mp4, context_ack.json; targets: <1s; Dashboard must display real database data, not hardcoded chart values",Backlog,"Real-time updates <1s, insights actionable",22,ARTIFACT:artifacts/misc/real-time-test-video.mp4;EVIDENCE:.specify/sprints/sprint-22/attestations/IFC-038/context_ack.json;ARTIFACT:docs/architecture/adr/ADR-016-analytics-integrity.md;ARTIFACT:docs/planning/prd-analytics-reporting.md,GATE:real-data-check;VALIDATE:pnpm test,120/240/480,2026-10-18,2026-10-25,0,"IFC-037:FS,ANALYTICS-001:FS,IFC-190:FS",
IFC-039,Enhancement,Advanced AI Features (RAG),AI Specialist + Full Team (STOA-Intelligence),IFC-025,FILE:.specify/memory/Framework.md;FILE:audit-matrix.yml;ENV:Supabase pgvector ready;ENV:embeddings tested;FILE:infra/monitoring/ab-test-config.json,"RAG for context, sentiment analysis, next best action; artifacts: embeddings-quality-test.json, sentiment-accuracy.csv, nba-demo.md",Completed,AI features demonstrating clear value,6,PLAN:.specify/sprints/sprint-6/planning/IFC-039-plan.md;CONTEXT:.specify/sprints/sprint-6/context/IFC-039/hydrated-context.md;SPEC:.specify/sprints/sprint-6/specifications/IFC-039-spec.md;ARTIFACT:artifacts/reports/embeddings-quality-test.json;ARTIFACT:artifacts/metrics/sentiment-accuracy.csv;ARTIFACT:docs/planning/nba-demo.md;EVIDENCE:.specify/sprints/sprint-6/attestations/IFC-039/attestation.json;ARTIFACT:docs/architecture/adr/ADR-022-ai-features-quality.md;ARTIFACT:docs/planning/prd-ai-output-quality.md,VALIDATE:pnpm typecheck,180/360/720,2026-11-01,2026-11-10,100,IFC-025:FS,
IFC-040,Enhancement,Production hardening incl. HttpOnly auth sessions and release security gates,DevOps + Security (STOA-Security),"IFC-046,IFC-111,IFC-112,IFC-113,IFC-115,IFC-122,IFC-127,IFC-043,IFC-033,IFC-130,IFC-132,IFC-133,IFC-134,IFC-169",FILE:.specify/memory/Framework.md;FILE:audit-matrix.yml;POLICY:Security review complete;ENV:performance optimized;FILE:docs/shared/review-checklist.md;FILE:docs/operations/pr-checklist.md;FILE:.github/workflows/security.yml;FILE:infra/monitoring/sonar-project.properties;FILE:artifacts/metrics/blue-green-metrics.csv;FILE:artifacts/misc/vault-config.yml;FILE:artifacts/misc/backup-scripts.sh;FILE:packages/platform/src/resilience/circuit-breaker.ts;FILE:infra/supabase/migrations/20250124000000_rls_policies.sql;FILE:docs/operations/incident-response-flowchart.svg;FILE:artifacts/reports/load-test-report.html;FILE:docs/release/promotion-policy.md;FILE:.github/workflows/security-sbom.yml;FILE:docs/security/signing.md;FILE:docs/security/image-scanning.md;FILE:docs/architecture/adr/ADR-020-public-site-auth.md;FILE:docs/planning/prd-public-site-auth.md;FILE:apps/web/src/lib/auth/AuthContext.tsx;FILE:apps/web/src/lib/shared/session-cleanup.ts;FILE:apps/web/src/lib/session.ts;FILE:apps/web/proxy.ts,"Railway production config, Vercel optimized, monitoring active, and browser auth migrated from localStorage/JS-readable bearer cookies to HttpOnly secure cookies or a server-managed Supabase session; artifacts: production-checklist.md, security-scan-final.pdf, AuthContext.tsx, session-cleanup.ts, session.ts, proxy.ts; targets: 99.9% uptime, zero JS-readable bearer tokens in production, zero critical vulnerabilities; verified by: pnpm typecheck, pnpm test, pnpm lint, pnpm build, security review",Backlog,"99.9% uptime achievable, zero JS-readable bearer tokens in production, zero critical vulnerabilities",25,ARTIFACT:docs/shared/production-checklist.md;ARTIFACT:artifacts/reports/security-scan-final.pdf;ARTIFACT:artifacts/benchmarks/performance-baseline.json;ARTIFACT:docs/shared/monitoring-runbook.md;ARTIFACT:apps/web/src/lib/auth/AuthContext.tsx;ARTIFACT:apps/web/src/lib/shared/session-cleanup.ts;ARTIFACT:apps/web/src/lib/session.ts;ARTIFACT:apps/web/proxy.ts;EVIDENCE:.specify/sprints/sprint-25/attestations/IFC-040/context_ack.json;ARTIFACT:docs/architecture/adr/ADR-015-security-validation.md;ARTIFACT:docs/architecture/adr/ADR-020-public-site-auth.md,VALIDATE:pnpm typecheck;VALIDATE:pnpm test;VALIDATE:pnpm lint;VALIDATE:pnpm build;AUDIT:security-review;GATE:no-js-readable-bearer-token,180/360/720,2026-11-29,2026-12-08,0,"IFC-046:FS,IFC-111:FS,IFC-112:FS,IFC-113:FS,IFC-115:FS,IFC-122:FS,IFC-127:FS,IFC-043:FS,IFC-033:FS,IFC-130:FS,IFC-132:FS,IFC-133:FS,IFC-134:FS,IFC-169:FS",
IFC-041,Documentation,User Manual with Interactive Examples,Tech Writer + PM (STOA-Foundation),"IFC-018,IFC-026,IFC-033",FILE:.specify/memory/Framework.md;FILE:audit-matrix.yml;POLICY:All features complete;ENV:screenshots ready;FILE:apps/api/vitest.config.ts;FILE:artifacts/test-results/playwright-report.html;FILE:artifacts/reports/load-test-report.html,Comprehensive guide with CodeSandbox examples; targets: >=100%; gates: coverage-gte-90,Backlog,"100% features documented, interactive demos",22,ARTIFACT:artifacts/misc/codesandbox-examples.json;ARTIFACT:artifacts/coverage/feature-coverage-matrix.xlsx;EVIDENCE:.specify/sprints/sprint-22/attestations/IFC-041/context_ack.json,GATE:coverage-gte-90,90/180/360,2026-10-18,2026-10-24,0,"IFC-018:FS,IFC-026:FS,IFC-033:FS",
IFC-042,Documentation,tRPC API Client SDK Docs,Backend Dev + Tech Writer (STOA-Domain),IFC-013,FILE:.specify/memory/Framework.md;FILE:audit-matrix.yml;ENV:tRPC client generated;ENV:types exported;FILE:docs/architecture/adr/ADR-001-modern-stack.md;FILE:apps/api/src/modules/lead/lead.router.ts,"NPM package docs, TypeScript examples; artifacts: README.md, npm-publish-log.txt, autocomplete-demo.gif",Completed,"SDK published, autocomplete working",12,ARTIFACT:packages/sdk/README.md;ARTIFACT:apps/project-tracker/docs/metrics/_global/flows/FLOW-002.md;ARTIFACT:apps/project-tracker/docs/metrics/_global/phase-validations/PHASE-002-validation.md;EVIDENCE:.specify/sprints/sprint-12/attestations/IFC-042/attestation.json,VALIDATE:pnpm --filter @intelliflow/api typecheck;VALIDATE:pnpm --filter @intelliflow/api test --run,60/120/240,2026-05-31,2026-06-04,100,IFC-013:FS,
IFC-043,Documentation,"Operational runbooks (deploy, rollback, incident response, backup/restore, access requests)",DevOps + Tech Lead (STOA-Automation),"ENV-008-AI,IFC-112,IFC-113,IFC-115,IFC-130",FILE:.specify/memory/Framework.md;FILE:audit-matrix.yml;ENV:Infrastructure stable;POLICY:procedures defined;FILE:docs/operations/quality-gates.md;FILE:docs/operations/release-rollback.md;FILE:infra/monitoring/otel-config.yaml;FILE:artifacts/metrics/blue-green-metrics.csv;FILE:artifacts/misc/vault-config.yml;FILE:artifacts/misc/backup-scripts.sh;FILE:docs/release/promotion-policy.md,"Incident response, deployment, rollback procedures; artifacts: incident-response-flowchart.svg, deployment-checklist.md, rollback-test.log; targets: <30min; verified by: pnpm test",Backlog,"All procedures tested, <30min MTTR",25,ARTIFACT:docs/operations/incident-response-flowchart.svg;ARTIFACT:docs/operations/deployment-checklist.md;ARTIFACT:artifacts/logs/rollback-test.log;EVIDENCE:.specify/sprints/sprint-25/attestations/IFC-043/context_ack.json,VALIDATE:pnpm test,120/240/480,2026-11-29,2026-12-06,0,"ENV-008-AI:FS,IFC-112:FS,IFC-113:FS,IFC-115:FS,IFC-130:FS",
IFC-044,Testing,Unit Tests (Vitest + TDD),All Developers (STOA-Foundation),ENV-010-AI,FILE:.specify/memory/Framework.md;FILE:audit-matrix.yml;ENV:Vitest configured;ENV:TDD workflow adopted;FILE:docs/development/tdd-guidelines.md;FILE:docs/shared/review-checklist.md,"90%+ coverage, all business logic tested; artifacts: lcov.info, test-execution-time.log, tdd-compliance.csv; gates: coverage-gte-90",Completed,"Coverage >90%, tests fast (<30s)",0,ARTIFACT:vitest.config.ts;ARTIFACT:artifacts/metrics/tdd-compliance.csv;EVIDENCE:.specify/sprints/sprint-0/attestations/IFC-044/attestation.json,VALIDATE:pnpm test;GATE:coverage-gte-90,90/180/360,2025-12-20,2025-12-25,100,ENV-010-AI:FS,
IFC-045,Testing,Integration Tests (Vitest + MSW),QA + Backend Dev (STOA-Quality),IFC-044,FILE:.specify/memory/Framework.md;FILE:audit-matrix.yml;ENV:MSW configured;ENV:test data factories ready;FILE:docs/development/tdd-guidelines.md;FILE:docs/shared/review-checklist.md,"API integrations tested with mocks; artifacts: integration-coverage.json, context_ack.json",Completed,"All external calls mocked, reliable tests",14,ARTIFACT:apps/web/src/lib/test-runner/index.ts;ARTIFACT:apps/web/src/test/mocks/handlers.ts;ARTIFACT:apps/web/src/test/mocks/server.ts;ARTIFACT:apps/web/src/app/governance/quality-reports/__tests__/integration.test.tsx;EVIDENCE:.specify/sprints/sprint-14/attestations/IFC-045/attestation.json;ARTIFACT:tests/integration/api.test.ts;ARTIFACT:tests/integration/README.md,VALIDATE:pnpm test,90/180/360,2026-06-28,2026-07-04,100,IFC-044:FS,
IFC-046,Testing,Security Tests (OWASP ZAP + Snyk),Security Eng + QA (STOA-Security),IFC-008,FILE:.specify/memory/Framework.md;FILE:audit-matrix.yml;ENV:ZAP configured;ENV:Snyk integrated;FILE:docs/security/zero-trust-design.md;FILE:docs/security/owasp-checklist.md;FILE:docs/development/tdd-guidelines.md;FILE:docs/shared/review-checklist.md;FILE:docs/compliance-and-governance/compliance/compliance-report.md,Automated security scanning in CI/CD,Backlog,"0 high vulnerabilities, OWASP compliant",23,ARTIFACT:.github/workflows/security.yml;ARTIFACT:artifacts/misc/zap-report.xml;ARTIFACT:artifacts/reports/snyk-report.json;ARTIFACT:docs/security/security-baseline.md;EVIDENCE:.specify/sprints/sprint-23/attestations/IFC-046/context_ack.json;ARTIFACT:docs/architecture/adr/ADR-015-security-validation.md,AUDIT:security-review;VALIDATE:pnpm typecheck;VALIDATE:pnpm test,120/240/480,2026-11-01,2026-11-08,0,IFC-008:FS,
IFC-047,Testing,Performance Tests (k6 + Lighthouse),Performance Eng (STOA-Quality),IFC-007,FILE:.specify/memory/Framework.md;FILE:audit-matrix.yml;ENV:k6 scripts ready;ENV:Lighthouse CI configured;FILE:docs/development/tdd-guidelines.md;FILE:docs/shared/review-checklist.md;FILE:tools/scripts/k6/load-test.js,"Automated performance regression prevention; artifacts: .lighthouserc.js, performance-budgets.json, regression-alerts.yaml; targets: <100ms; gates: p99-latency-check",Backlog,"p99 <100ms maintained, Core Web Vitals green",22,ARTIFACT:lighthouserc.js;ARTIFACT:artifacts/benchmarks/performance-budgets.json;ARTIFACT:artifacts/misc/regression-alerts.yaml;EVIDENCE:.specify/sprints/sprint-22/attestations/IFC-047/context_ack.json;ARTIFACT:docs/architecture/adr/ADR-018-performance-load-testing.md,GATE:p99-latency-check,90/180/360,2026-10-18,2026-10-24,0,IFC-007:FS,
IFC-048,Testing,User Acceptance Testing,PM + Sales Team (STOA-Foundation),IFC-039,FILE:.specify/memory/Framework.md;FILE:audit-matrix.yml;POLICY:All features complete;POLICY:test scenarios defined;FILE:docs/development/tdd-guidelines.md;FILE:docs/shared/review-checklist.md;FILE:artifacts/reports/embeddings-quality-test.json,"Real users validate workflows and AI accuracy; artifacts: uat-test-scenarios.xlsx, uat-results.csv, feedback-action-items.md; targets: >=90%",Backlog,"90% satisfaction, feedback incorporated",25,ARTIFACT:artifacts/reports/uat-test-scenarios.xlsx;ARTIFACT:artifacts/misc/uat-results.csv;ARTIFACT:docs/shared/feedback-action-items.md;EVIDENCE:.specify/sprints/sprint-25/attestations/IFC-048/context_ack.json,VALIDATE:pnpm typecheck,90/180/360,2026-11-29,2026-12-05,0,IFC-039:FS,
IFC-049,Investment Gate,Gate 4 Review - £5000 Investment,CEO + Board (STOA-Leadership),IFC-048,FILE:.specify/memory/Framework.md;FILE:audit-matrix.yml;POLICY:All features complete;ENV:metrics positive;FILE:docs/shared/review-checklist.md;FILE:docs/operations/quality-gates.md;FILE:artifacts/reports/uat-test-scenarios.xlsx,"Decision on productization and scale; artifacts: final-investment-review.pptx, market-validation.pdf, product-roadmap-2025.xlsx",Backlog,"Product strategy clear, market validated",26,ARTIFACT:artifacts/misc/final-investment-review.pptx;ARTIFACT:artifacts/reports/market-validation.pdf;ARTIFACT:artifacts/reports/product-roadmap-2025.xlsx;ARTIFACT:artifacts/reports/board-resolution.pdf;EVIDENCE:.specify/sprints/sprint-26/attestations/IFC-049/context_ack.json,VALIDATE:pnpm lint,60/120/180,2026-12-13,2026-12-16,0,IFC-048:FS,
IFC-050,Launch,Internal Launch Preparation,PM + Marketing (STOA-Foundation),IFC-048,FILE:.specify/memory/Framework.md;FILE:audit-matrix.yml;ENV:Training materials ready;ENV:team briefed;FILE:docs/shared/review-checklist.md;FILE:docs/operations/pr-checklist.md;FILE:artifacts/reports/uat-test-scenarios.xlsx,"Team onboarded to modern stack and features; artifacts: team-quiz-results.csv, onboarding-checklist.md, launch-readiness.pdf; targets: >=100%",Backlog,"100% team trained, documentation complete",26,ARTIFACT:docs/shared/onboarding-checklist.md;ARTIFACT:artifacts/reports/launch-readiness.pdf;EVIDENCE:.specify/sprints/sprint-26/attestations/IFC-050/context_ack.json,VALIDATE:pnpm typecheck,90/180/360,2026-12-13,2026-12-19,0,IFC-048:FS,
IFC-051,Launch,Pilot Customer Selection,Sales + CEO (STOA-Leadership),IFC-049,FILE:.specify/memory/Framework.md;FILE:audit-matrix.yml;POLICY:Customer criteria defined;ENV:NDA templates ready;FILE:artifacts/misc/final-investment-review.pptx,"2-3 pilot customers for beta testing; artifacts: pilot-customer-criteria.md, expectations-matrix.xlsx, context_ack.json",Backlog,"Pilots confirmed, expectations documented",27,ARTIFACT:docs/shared/pilot-customer-criteria.md;ARTIFACT:artifacts/reports/expectations-matrix.xlsx;EVIDENCE:.specify/sprints/sprint-27/attestations/IFC-051/context_ack.json,VALIDATE:pnpm test,60/120/240,2026-12-27,2026-12-31,0,IFC-049:FS,
IFC-052,Launch,Production Deployment,DevOps + Whole Team (STOA-Automation),"IFC-040,IFC-050",FILE:.specify/memory/Framework.md;FILE:audit-matrix.yml;ENV:Vercel + Railway production ready;ENV:rollback plan;FILE:docs/shared/review-checklist.md;FILE:docs/operations/pr-checklist.md;FILE:docs/operations/release-rollback.md;FILE:docs/shared/production-checklist.md;FILE:artifacts/misc/team-quiz-results.csv,"Zero-downtime deployment with feature flags; artifacts: deployment-log.txt, feature-flags-config.json, monitoring-dashboard.url; verified by: pnpm test",Backlog,"Deployed successfully, monitoring active",27,ARTIFACT:artifacts/misc/deployment-log.txt;ARTIFACT:artifacts/misc/feature-flags-config.json;ARTIFACT:artifacts/misc/monitoring-dashboard.url;ARTIFACT:artifacts/logs/rollback-test.log;EVIDENCE:.specify/sprints/sprint-27/attestations/IFC-052/context_ack.json,VALIDATE:pnpm test,120/240/480,2026-12-27,2027-01-03,0,"IFC-040:FS,IFC-050:FS",
IFC-053,Launch,Hypercare Period,Support Team + DevOps (STOA-Automation),IFC-052,FILE:.specify/memory/Framework.md;FILE:audit-matrix.yml;POLICY:Support procedures defined;ENV:on-call scheduled;FILE:artifacts/misc/deployment-log.txt,"24/7 support for 2 weeks, then business hours; artifacts: hypercare-schedule.xlsx, incident-log.csv, response-time-report.pdf; gates: response-time-check",Backlog,"<15min response time, 99% uptime",28,ARTIFACT:artifacts/reports/hypercare-schedule.xlsx;ARTIFACT:artifacts/logs/incident-log.csv;ARTIFACT:artifacts/reports/response-time-report.pdf;ARTIFACT:artifacts/misc/uptime-dashboard.png;EVIDENCE:.specify/sprints/sprint-28/attestations/IFC-053/context_ack.json,GATE:response-time-check,240/480/960,2027-01-10,2027-01-22,0,IFC-052:FS,
IFC-054,Risk Mgmt,Technical Complexity Monitoring,CTO + Tech Lead (STOA-Foundation),,FILE:.specify/memory/Framework.md;FILE:audit-matrix.yml;POLICY:Complexity metrics for tRPC/LangChain defined,"Weekly assessment of technical debt and complexity; artifacts: sonarqube-debt-report.html, complexity-metrics.json, refactoring-backlog.md; targets: >=10%",Completed,"Tech debt <10%, complexity manageable",7,ARTIFACT:artifacts/metrics/complexity-metrics.json;ARTIFACT:docs/shared/refactoring-backlog.md;ARTIFACT:artifacts/reports/team-velocity.csv;EVIDENCE:.specify/sprints/sprint-7/attestations/IFC-054/attestation.json,VALIDATE:pnpm typecheck,60/120/240,2026-03-22,2026-03-26,100,,
IFC-055,Risk Mgmt,Budget Tracking with FinOps,CFO + PM (STOA-Leadership),,FILE:.specify/memory/Framework.md;FILE:audit-matrix.yml;ENV:Cost monitoring for Vercel/Railway/OpenAI setup,"Weekly spend review with projections and alerts; artifacts: weekly-cost-report.csv, usage-alerts-config.yaml, cost-optimization-actions.md, invoice-tracker.csv; variance -66.3%",Completed,"Budget variance <10%, no surprise costs",8,SPEC:.specify/sprints/sprint-8/specifications/IFC-055-spec.md;PLAN:.specify/sprints/sprint-8/planning/IFC-055-plan.md;EVIDENCE:.specify/sprints/sprint-8/attestations/IFC-055/context_pack.md;EVIDENCE:.specify/sprints/sprint-8/attestations/IFC-055/attestation.json;ARTIFACT:docs/planning/financial/weekly-cost-report.csv;ARTIFACT:infra/monitoring/usage-alerts-config.yaml;ARTIFACT:docs/shared/cost-optimization-actions.md,VALIDATE:pnpm lint,60/120/240,2026-04-05,2026-04-09,100,,
IFC-056,Risk Mgmt,Team Upskilling Program,HR + Tech Lead (STOA-Foundation),IFC-009,FILE:.specify/memory/Framework.md;FILE:audit-matrix.yml;ENV:Training paths for modern stack created;FILE:docs/shared/review-checklist.md;FILE:docs/operations/pr-checklist.md;FILE:docs/training/team-skills-matrix.csv,"Continuous learning: tRPC, Next.js 16.0.10 (Turbopack FS caching, Cache Components, proxy replacing middleware), LangChain",Completed,"Team velocity increasing, confidence >4/5 (actual: 3.7/5)",9,ARTIFACT:artifacts/reports/skill-assessment-results.csv;ARTIFACT:docs/training/training-completion.csv;ARTIFACT:artifacts/reports/confidence-survey.md;EVIDENCE:.specify/sprints/sprint-9/attestations/IFC-056/attestation.json,VALIDATE:pnpm typecheck,120/240/480,2026-04-19,2026-04-26,100,IFC-009:FS,
IFC-057,Risk Mgmt,Vendor Lock-in Mitigation,PM + Tech Lead (STOA-Foundation),IFC-011,FILE:.specify/memory/Framework.md;FILE:audit-matrix.yml;POLICY:Abstraction layers identified;ENV:portability tested;FILE:docs/planning/financial/supabase-usage-report.json,"Can migrate from Supabase/Vercel if needed; artifacts: vendor-abstraction-layers.md, migration-test-plan.yaml, portability-test.log",Completed,"Migration tested, <1 week effort (actual: 3-5 days)",9,ARTIFACT:docs/shared/vendor-abstraction-layers.md;ARTIFACT:infra/monitoring/migration-test-plan.yaml;ARTIFACT:docs/planning/financial/alternatives.csv;EVIDENCE:.specify/sprints/sprint-9/attestations/IFC-057/attestation.json,VALIDATE:pnpm typecheck,90/180/360,2026-04-19,2026-04-25,100,IFC-011:FS,
IFC-058,Compliance,"GDPR baseline controls: Supabase RLS policies, data minimisation, retention hooks",DPO + Legal (STOA-Foundation),"IFC-017,IFC-127,IFC-008",FILE:.specify/memory/Framework.md;FILE:audit-matrix.yml;POLICY:RLS policies defined;POLICY:data flows mapped;FILE:docs/architecture/adr/ADR-001-modern-stack.md;FILE:docs/architecture/adr/ADR-007-data-governance.md;FILE:docs/security/zero-trust-design.md;FILE:docs/shared/review-checklist.md;FILE:docs/operations/quality-gates.md;FILE:docs/operations/pr-checklist.md;FILE:packages/db/src/client.ts;FILE:infra/supabase/migrations/20250124000000_rls_policies.sql;FILE:docs/compliance-and-governance/compliance/compliance-report.md,"Row Level Security implemented, privacy by design; artifacts: gdpr-compliance-checklist.xlsx, audit-trail-test.json, context_ack.json",Completed,"0 compliance gaps, audit trail complete",11,ARTIFACT:docs/compliance-and-governance/compliance/gdpr-compliance-checklist.csv;ARTIFACT:artifacts/reports/audit-trail-test.json;EVIDENCE:.specify/sprints/sprint-11/attestations/IFC-058/attestation.json,AUDIT:security-review;VALIDATE:pnpm typecheck,120/240/480,2026-05-17,2026-05-24,100,"IFC-017:FS,IFC-127:FS,IFC-008:FS",
IFC-059,Compliance,ISO 42001 Readiness Assessment,External Auditor + CTO (STOA-Foundation),IFC-040,FILE:.specify/memory/Framework.md;FILE:audit-matrix.yml;ENV:AI governance framework drafted;FILE:docs/shared/production-checklist.md,"AI system compliance evaluated, roadmap created; artifacts: iso42001-assessment.pdf, ai-governance-framework.md, certification-roadmap.gantt; targets: >=70%",Backlog,"Readiness >70%, roadmap to certification",25,ARTIFACT:artifacts/reports/iso42001-assessment.pdf;ARTIFACT:docs/shared/ai-governance-framework.md;ARTIFACT:artifacts/misc/certification-roadmap.gantt;ARTIFACT:artifacts/reports/gap-remediation.xlsx;EVIDENCE:.specify/sprints/sprint-25/attestations/IFC-059/context_ack.json,VALIDATE:pnpm typecheck,120/240/480,2026-11-29,2026-12-06,0,IFC-040:FS,
IFC-060,Success,Success Metrics Review,CEO + All Leads (STOA-Leadership),IFC-052,FILE:.specify/memory/Framework.md;FILE:audit-matrix.yml;ENV:All KPIs tracked;ENV:data collected;FILE:docs/shared/review-checklist.md;FILE:artifacts/misc/deployment-log.txt,"Modern stack ROI validated, future roadmap; artifacts: success-metrics-dashboard.pdf, roi-calculation.xlsx, phase-2-proposal.pptx",Backlog,"All targets met, Phase 2 planned",28,ARTIFACT:artifacts/metrics/success-metrics-dashboard.pdf;ARTIFACT:artifacts/reports/roi-calculation.xlsx;ARTIFACT:artifacts/misc/phase-2-proposal.pptx;ARTIFACT:docs/shared/lessons-learned.md;EVIDENCE:.specify/sprints/sprint-28/attestations/IFC-060/context_ack.json,VALIDATE:pnpm lint,60/120/180,2027-01-10,2027-01-14,0,IFC-052:FS,
IFC-061,Core CRM,FLOW-006: Lead to Contact Conversion Logic,Backend Dev + Domain Expert (STOA-Domain),"IFC-089,IFC-101,IFC-102",IMPLEMENTS:FLOW-006;FILE:packages/domain/src/crm/lead/Lead.ts;FILE:packages/domain/src/crm/contact/Contact.ts;FILE:apps/api/src/modules/contact/contact.router.ts,"Lead converts to Contact with all data preserved, audit trail created; artifacts: conversion-service.ts, conversion.test.ts; targets: <200ms, 100% data integrity",Completed,"Conversion <200ms, 100% data preserved",14,ARTIFACT:packages/application/src/usecases/leads/ConvertLeadToContactUseCase.ts;ARTIFACT:packages/application/src/usecases/leads/__tests__/ConvertLeadToContactUseCase.test.ts;EVIDENCE:.specify/sprints/sprint-14/attestations/IFC-061/attestation.json;ARTIFACT:docs/architecture/adr/ADR-019-core-crm-foundation.md;ARTIFACT:docs/planning/prd-core-crm.md,VALIDATE:pnpm test,60/120/240,2026-06-28,2026-07-02,100,"IFC-089:FS,IFC-101:FS,IFC-102:FS",
IFC-062,Core CRM,FLOW-006: Lead to Deal Conversion Logic,Backend Dev + Domain Expert (STOA-Domain),"IFC-061,IFC-104",IMPLEMENTS:FLOW-006;FILE:packages/domain/src/crm/lead/Lead.ts;FILE:packages/domain/src/crm/opportunity/Opportunity.ts;FILE:apps/api/src/modules/opportunity/opportunity.router.ts,Lead converts to Deal/Opportunity with pipeline assignment; artifacts: deal-conversion-service.ts; targets: <200ms,Completed,"Conversion <200ms, automatic pipeline stage",14,ARTIFACT:packages/application/src/usecases/leads/ConvertLeadToDealUseCase.ts;ARTIFACT:packages/application/src/usecases/leads/__tests__/ConvertLeadToDealUseCase.test.ts;ARTIFACT:apps/api/src/modules/lead/__tests__/lead.convertToDeal.router.test.ts;EVIDENCE:.specify/sprints/sprint-14/attestations/IFC-062/attestation.json,VALIDATE:pnpm test,60/120/240,2026-02-20,2026-02-20,100,"IFC-061:FS,IFC-104:FS",
IFC-063,Core CRM,FLOW-007: Pipeline Stage Customization,Frontend Dev + Backend Dev (STOA-Domain),"IFC-091,IFC-104",IMPLEMENTS:FLOW-007;FILE:apps/api/src/modules/opportunity/opportunity.router.ts;FILE:packages/domain/src/crm/opportunity/Opportunity.ts,"Users can customize pipeline stages, colors, and order; artifacts: pipeline-config.ts; targets: <100ms save",Completed,"Stage customization functional, persists <100ms",14,ARTIFACT:apps/api/src/modules/opportunity/pipeline-config.router.ts;ARTIFACT:apps/web/src/app/settings/pipeline/page.tsx;EVIDENCE:.specify/sprints/sprint-14/attestations/IFC-063/attestation.json;ARTIFACT:docs/architecture/adr/ADR-019-core-crm-foundation.md;ARTIFACT:docs/planning/prd-core-crm.md,VALIDATE:pnpm test,60/120/240,2026-06-28,2026-07-02,100,"IFC-091:FS,IFC-104:FS",
IFC-064,Core CRM,FLOW-007: Kanban Drag-Drop Persistence,Frontend Dev + Backend Dev (STOA-Domain),"IFC-091,IFC-063",IMPLEMENTS:FLOW-007;FILE:apps/api/src/modules/opportunity/opportunity.router.ts;FILE:apps/web/src/app/deals/(list)/page.tsx,"Drag-drop stage changes persist immediately with optimistic updates; targets: <300ms persist, instant UI",Completed,"Instant UI update, <300ms server persist",14,ARTIFACT:apps/web/src/components/deals/PipelineBoard.tsx;ARTIFACT:apps/web/src/components/deals/LossReasonModal.tsx;EVIDENCE:.specify/sprints/sprint-14/attestations/IFC-064/attestation.json,VALIDATE:pnpm test,60/120/240,2026-07-03,2026-02-21,100,"IFC-091:FS,IFC-063:FS",
IFC-065,Core CRM,FLOW-009: Deal Won Closure Workflow,Backend Dev + Domain Expert (STOA-Domain),"IFC-091,IFC-092",IMPLEMENTS:FLOW-009;FILE:apps/api/src/modules/opportunity/opportunity.router.ts;FILE:packages/domain/src/crm/opportunity/Opportunity.ts,"Deal marked as Won triggers: revenue recognition, notifications, success metrics; targets: <500ms workflow",Completed,"Won workflow completes <500ms, all triggers fire",14,ARTIFACT:packages/application/src/usecases/deals/CloseDealWonUseCase.ts;ARTIFACT:packages/domain/src/crm/opportunity/OpportunityEvents.ts;EVIDENCE:.specify/sprints/sprint-14/attestations/IFC-065/attestation.json,VALIDATE:pnpm test,60/120/240,2026-02-21,2026-02-21,100,"IFC-091:FS,IFC-092:FS",
IFC-066,Core CRM,FLOW-009: Deal Lost Closure Workflow,Backend Dev + Domain Expert (STOA-Domain),"IFC-091,IFC-092",IMPLEMENTS:FLOW-009;FILE:apps/api/src/modules/opportunity/opportunity.router.ts;FILE:packages/domain/src/crm/opportunity/Opportunity.ts,"Deal marked as Lost triggers: loss reason capture, analytics update, follow-up scheduling; targets: <500ms",Completed,"Lost workflow completes <500ms, reason captured",14,ARTIFACT:packages/application/src/usecases/deals/CloseDealLostUseCase.ts;ARTIFACT:apps/web/src/components/deals/LossReasonModal.tsx;EVIDENCE:.specify/sprints/sprint-14/attestations/IFC-066/attestation.json,VALIDATE:pnpm test,60/120/240,2026-02-22,2026-02-22,100,"IFC-091:FS,IFC-092:FS",
IFC-067,Support,FLOW-012: Automatic Ticket Routing Engine,Backend Dev + AI Specialist (STOA-Intelligence),"IFC-093,IFC-095",IMPLEMENTS:FLOW-012;FILE:apps/api/src/modules/ticket/ticket.router.ts;FILE:apps/ai-worker/src/chains/scoring.chain.ts,"AI-powered ticket routing based on content, urgency, and agent skills; targets: <1s routing, >85% accuracy",Completed,"Routing <1s, >85% accuracy",14,ARTIFACT:apps/ai-worker/src/chains/ticket-routing.chain.ts;ARTIFACT:apps/api/src/modules/ticket/__tests__/routing.test.ts;EVIDENCE:.specify/sprints/sprint-14/attestations/IFC-067/attestation.json,VALIDATE:pnpm test,120/240/480,2026-02-21,2026-02-22,100,"IFC-093:FS,IFC-095:FS",
IFC-068,Analytics,FLOW-015: Feedback Analytics Dashboard,Frontend Dev + Data Eng (STOA-Domain),"IFC-090,IFC-096",IMPLEMENTS:FLOW-015;FILE:apps/web/lib/tickets/sla-service.ts;FILE:apps/api/src/modules/opportunity/opportunity.router.ts,"Dashboard showing NPS, CSAT, feedback trends, sentiment analysis; targets: <2s load",Completed,"Dashboard loads <2s, real-time updates",14,ARTIFACT:apps/web/src/app/analytics/(list)/feedback/page.tsx;ARTIFACT:apps/api/src/modules/feedback/feedbackSurvey.router.ts;EVIDENCE:.specify/sprints/sprint-14/attestations/IFC-068/attestation.json,VALIDATE:pnpm test,90/180/360,2026-02-21,2026-02-21,100,"IFC-090:FS,IFC-096:FS",
IFC-069,Core CRM,FLOW-020: Unified Activity Feed Service,Backend Dev + Frontend Dev (STOA-Domain),"IFC-089,IFC-091,IFC-093,IFC-109",IMPLEMENTS:FLOW-020;FILE:packages/domain/src/crm/contact/ContactEvents.ts;FILE:apps/api/src/modules/contact/contact.router.ts,"Unified timeline showing all entity activities (leads, contacts, deals, tickets); targets: <500ms load, real-time",Completed,"Feed loads <500ms, real-time updates via WebSocket",14,ARTIFACT:apps/api/src/modules/misc/activity-feed.router.ts;ARTIFACT:apps/web/src/components/shared/activity-feed/ActivityFeed.tsx;ARTIFACT:packages/application/src/services/ActivityFeedService.ts;EVIDENCE:.specify/sprints/sprint-14/attestations/IFC-069/attestation.json,VALIDATE:pnpm test,120/240/480,2026-06-28,2026-07-05,100,"IFC-089:FS,IFC-091:FS,IFC-093:FS,IFC-109:FS",
IFC-070,Migration,Data Migration from Legacy,DA + DevOps (STOA-Automation),IFC-017,FILE:.specify/memory/Framework.md;FILE:audit-matrix.yml;POLICY:Prisma introspection complete;ENV:ETL designed;FILE:docs/architecture/adr/ADR-007-data-governance.md;FILE:packages/db/src/client.ts,"Legacy data migrated with zero loss; artifacts: data-validation-report.csv, migration-log.txt, rollback-procedure.md",Completed,"100% data migrated, validation passed",18,SPEC:.specify/sprints/sprint-18/specifications/IFC-070-spec.md;PLAN:.specify/sprints/sprint-18/planning/IFC-070-plan.md;ARTIFACT:artifacts/reports/data-validation-report.csv;ARTIFACT:artifacts/reports/migration-log.txt;ARTIFACT:docs/shared/rollback-procedure.md;EVIDENCE:.specify/sprints/sprint-18/attestations/IFC-070/attestation.json;EVIDENCE:.specify/sprints/sprint-18/attestations/IFC-070/attestation.json;EVIDENCE:.specify/sprints/sprint-18/execution/IFC-070/run-20260219T233157Z/IFC-070-delivery.md,VALIDATE:pnpm typecheck,180/360/720,2026-08-23,2026-09-01,100,IFC-017:FS,
IFC-071,Resilience,Multi-Region Setup,DevOps + DBA (STOA-Automation),IFC-040,FILE:.specify/memory/Framework.md;FILE:audit-matrix.yml;POLICY:Supabase regions evaluated;ENV:costs analyzed;FILE:docs/shared/production-checklist.md,"Multi-region database replication active; artifacts: multi-region-architecture.puml, replication-lag-metrics.json, cost-comparison.xlsx; targets: <5min, <30min; verified by: pnpm test",Backlog,"RPO <5min, RTO <30min, tested monthly",25,ARTIFACT:docs/shared/multi-region-architecture.puml;ARTIFACT:artifacts/metrics/replication-lag-metrics.json;ARTIFACT:artifacts/reports/cost-comparison.xlsx;EVIDENCE:.specify/sprints/sprint-25/attestations/IFC-071/context_ack.json,VALIDATE:pnpm test,180/360/720,2026-11-29,2026-12-08,0,IFC-040:FS,
IFC-072,Security,PHASE-040: Zero Trust Security Model,Security Eng + CTO (STOA-Security),"IFC-001,IFC-008",FILE:.specify/memory/Framework.md;FILE:audit-matrix.yml;ENV:Architecture reviewed;ENV:Supabase RLS studied;FILE:packages/db/prisma/schema.prisma;FILE:docs/security/zero-trust-design.md;FILE:docs/security/owasp-checklist.md;FILE:docs/architecture/adr/ADR-001-modern-stack.md;FILE:docs/compliance-and-governance/compliance/compliance-report.md,"Zero trust with RLS, API authentication, mTLS; artifacts: zero-trust-design.md, pentest-summary.md, context_ack.json; verified by: pnpm test",Completed,"All endpoints secured, penetration tested",2,ARTIFACT:docs/security/zero-trust-design.md;ARTIFACT:docs/security/pentest-summary.md;EVIDENCE:.specify/sprints/sprint-2/attestations/IFC-072/attestation.json,VALIDATE:pnpm test,120/240/480,2026-01-11,2026-01-18,100,"IFC-001:FS,IFC-008:FS",
IFC-073,Compliance,PHASE-040: Privacy Impact Assessment,DPO + Legal (STOA-Foundation),IFC-072,FILE:.specify/memory/Framework.md;FILE:audit-matrix.yml;POLICY:Data flows mapped;ENV:Supabase features reviewed;FILE:docs/shared/review-checklist.md;FILE:docs/operations/pr-checklist.md;FILE:docs/security/zero-trust-design.md,"DPIA complete for AI processing and data storage; output: dpia.md, risk-matrix.md; all risks documented, verified and mitigated",Completed,"All risks mitigated, controls documented",2,ARTIFACT:docs/compliance-and-governance/compliance/gdpr-compliance.md;ARTIFACT:docs/compliance-and-governance/governance/risk-matrix.md;EVIDENCE:.specify/sprints/sprint-2/attestations/IFC-073/attestation.json;ARTIFACT:docs/planning/compliance-calendar.json,VALIDATE:pnpm typecheck,60/120/240,2026-01-15,2026-01-19,100,IFC-072:FS,
IFC-074,Observability,PHASE-040: Full Stack Observability,SRE Lead + DevOps (STOA-Automation),IFC-003,FILE:.specify/memory/Framework.md;FILE:audit-matrix.yml;ENV:OpenTelemetry SDK integrated;ENV:Sentry configured;FILE:docs/architecture/adr/ADR-001-modern-stack.md;FILE:apps/api/src/trpc.ts,"Traces, metrics, logs unified with context; artifacts: sentry-project-config.json, correlation-test.csv, mttr-baseline.json; targets: <2min",Completed,"MTTD <2min, root cause identifiable",1,ARTIFACT:infra/monitoring/sentry-project-config.json;ARTIFACT:artifacts/reports/correlation-test.csv;ARTIFACT:artifacts/reports/mttr-baseline.json;ARTIFACT:packages/observability/package.json;ARTIFACT:packages/observability/tsconfig.json;ARTIFACT:packages/observability/src/index.ts;ARTIFACT:packages/observability/src/tracing.ts;ARTIFACT:packages/observability/src/metrics.ts;ARTIFACT:packages/observability/src/logging.ts;ARTIFACT:packages/observability/src/tracer.ts;EVIDENCE:.specify/sprints/sprint-1/attestations/IFC-074/attestation.json;ARTIFACT:apps/api/src/tracing/example.ts,VALIDATE:pnpm typecheck,90/180/360,2025-12-30,2026-01-05,100,IFC-003:FS,
IFC-075,Infrastructure,IaC with Terraform,DevOps (STOA-Automation),IFC-001,FILE:.specify/memory/Framework.md;FILE:audit-matrix.yml;ENV:Terraform installed;ENV:provider credentials ready;FILE:docs/architecture/adr/ADR-001-modern-stack.md,"Supabase + Vercel + Railway provisioned via code; artifacts: main.tf, drift-detection-config.yaml, destroy-rebuild-test.log; targets: >=100%",Completed,"100% reproducible, drift detection active",1,ARTIFACT:infra/terraform/modules/supabase/main.tf;ARTIFACT:infra/monitoring/drift-detection-config.yaml;ARTIFACT:docs/architecture/architecture-spike-README.md;ARTIFACT:tools/scripts/benchmarks/performance-test.ts;ARTIFACT:tools/scripts/benchmarks/type-safety-validation.ts;ARTIFACT:artifacts/reports/IFC-075-implementation-summary.md;EVIDENCE:.specify/sprints/sprint-1/attestations/IFC-075/attestation.json,VALIDATE:pnpm typecheck,120/240/480,2025-12-28,2026-01-04,100,IFC-001:FS,
IFC-076,Quality,Component Library (shadcn/ui),Frontend Dev + UX (STOA-Domain),"IFC-014,BRAND-002",FILE:.specify/memory/Framework.md;FILE:audit-matrix.yml;ENV:shadcn/ui installed;POLICY:design system defined;FILE:docs/design/token-mapping.md;FILE:docs/company/brand/visual-identity.md;FILE:artifacts/benchmarks/web-vitals-report.json,"Reusable components with Storybook docs; artifacts: accessibility-audit.json, component-usage.csv, context_ack.json; targets: >=100%",Completed,"20+ components, 100% accessible",10,SPEC:.specify/sprints/sprint-10/specifications/IFC-076-spec.md;PLAN:.specify/sprints/sprint-10/planning/IFC-076-plan.md;EVIDENCE:.specify/sprints/sprint-10/attestations/IFC-076/context_pack.md;EVIDENCE:.specify/sprints/sprint-10/attestations/IFC-076/attestation.json;ARTIFACT:artifacts/reports/accessibility-audit.json;ARTIFACT:artifacts/reports/component-usage.csv;ARTIFACT:packages/ui/src/components/*;ARTIFACT:packages/ui/src/lib/*;ARTIFACT:packages/ui/__tests__/*;ARTIFACT:packages/ui/.storybook/*;ARTIFACT:packages/ui/src/**;ARTIFACT:apps/web/src/components/billing/checkout-form.stories.tsx;ARTIFACT:apps/web/src/components/shared/email-verification.stories.tsx;ARTIFACT:apps/web/src/components/shared/mfa-qr-generator.stories.tsx;ARTIFACT:apps/web/src/components/shared/mfa-verification.stories.tsx,VALIDATE:pnpm --filter @intelliflow/web typecheck;VALIDATE:pnpm --filter @intelliflow/web test --run,120/240/480,2026-05-03,2026-05-10,100,"IFC-014:FS,BRAND-002:FS",
IFC-077,Security,PHASE-035: API Rate Limiting (tRPC + Upstash),Backend Dev + Security Eng (STOA-Security),IFC-013,FILE:.specify/memory/Framework.md;FILE:audit-matrix.yml;ENV:Upstash Redis ready;POLICY:rate limit strategy defined;FILE:docs/architecture/adr/ADR-001-modern-stack.md;FILE:docs/security/zero-trust-design.md;FILE:docs/security/owasp-checklist.md;FILE:apps/api/src/modules/lead/lead.router.ts,"Rate limiting on all public endpoints; artifacts: rate-limit.ts, rate-limit-config.yaml, load-test-with-limits.json",Completed,"DDoS protection active, legit traffic unaffected",8,ARTIFACT:apps/api/src/middleware/rate-limit.ts;ARTIFACT:infra/monitoring/rate-limit-config.yaml;ARTIFACT:artifacts/reports/load-test-with-limits.json;ARTIFACT:artifacts/reports/false-positive.csv;ARTIFACT:apps/project-tracker/docs/metrics/_global/flows/FLOW-035.md;ARTIFACT:apps/project-tracker/docs/metrics/_global/phase-validations/PHASE-035-validation.md;EVIDENCE:.specify/sprints/sprint-8/attestations/IFC-077/attestation.json,VALIDATE:pnpm typecheck;VALIDATE:pnpm test,60/120/240,2026-04-05,2026-04-09,100,IFC-013:FS,
IFC-078,Platform,Platform Engineering Foundation,DevOps + Tech Lead (STOA-Automation),IFC-012,FILE:.specify/memory/Framework.md;FILE:audit-matrix.yml;ENV:Turborepo mature;ENV:team needs assessed;FILE:docs/architecture/adr/ADR-005-workflow-engine.md;FILE:docs/operations/engineering-playbook.md;FILE:turbo.json,"Internal Developer Platform basics, golden paths; artifacts: self-service-metrics.json, satisfaction-survey.md, context_ack.json",Completed,"Self-service deploys, standardized workflows",18,ARTIFACT:artifacts/metrics/self-service-metrics.json;ARTIFACT:artifacts/reports/satisfaction-survey.md;EVIDENCE:.specify/sprints/sprint-18/attestations/IFC-078/attestation.json,VALIDATE:pnpm typecheck,120/240/480,2026-08-23,2026-08-30,100,IFC-012:FS,
IFC-079,Documentation,PHASE-041: Docusaurus Setup,Tech Writer + DevOps (STOA-Automation),IFC-012,FILE:.specify/memory/Framework.md;FILE:audit-matrix.yml;ENV:Turborepo ready;ENV:markdown templates created;FILE:turbo.json,"Docusaurus site with LLM-friendly structure; output: docusaurus.config.js, sidebars.js; site deployed and functional",Completed,"Site deployed, search working",7,ARTIFACT:docs/docusaurus.config.js;ARTIFACT:docs/sidebars.js;ARTIFACT:.github/workflows/ci.yml;ARTIFACT:docs/search-index.json;ARTIFACT:apps/project-tracker/docs/metrics/_global/phase-validations/PHASE-041-validation.md;EVIDENCE:.specify/sprints/sprint-7/attestations/IFC-079/attestation.json,VALIDATE:pnpm lint,60/120/240,2026-03-22,2026-03-26,100,IFC-012:FS,
IFC-080,Documentation,PHASE-041: LLM-Friendly Documentation Templates,Tech Writer + AI Specialist (STOA-Intelligence),IFC-079,FILE:.specify/memory/Framework.md;FILE:audit-matrix.yml;ENV:Docusaurus ready;POLICY:chunking strategy defined;FILE:docs/docusaurus.config.js,"Templates with metadata, semantic structure, glossary; targets: >=100%",Completed,"100% docs follow template, chunks optimized",7,ARTIFACT:docs/shared/glossary.md;ARTIFACT:docs/templates/chunking-strategy.md;ARTIFACT:apps/project-tracker/docs/metrics/_global/phase-validations/PHASE-041-validation.md;EVIDENCE:.specify/sprints/sprint-7/attestations/IFC-080/attestation.json,VALIDATE:pnpm lint,45/90/180,2026-03-24,2026-03-28,100,IFC-079:FS,
IFC-081,Documentation,API Documentation (tRPC + OpenAPI),Backend Dev + Tech Writer (STOA-Domain),IFC-013,FILE:.specify/memory/Framework.md;FILE:audit-matrix.yml;POLICY:tRPC routes complete;ENV:trpc-openapi setup;FILE:docs/architecture/adr/ADR-001-modern-stack.md;FILE:apps/api/src/modules/lead/lead.router.ts,"Auto-generated API docs, Postman collection; artifacts: openapi.json, postman-collection.json, context_ack.json; verified by: pnpm test",Completed,"All endpoints documented, examples included",12,ARTIFACT:apps/api/openapi.json;ARTIFACT:packages/test-fixtures/postman-collection.json;ARTIFACT:apps/project-tracker/docs/metrics/_global/flows/FLOW-002.md;ARTIFACT:apps/project-tracker/docs/metrics/_global/phase-validations/PHASE-002-validation.md;EVIDENCE:.specify/sprints/sprint-12/attestations/IFC-081/attestation.json,VALIDATE:pnpm test,60/120/240,2026-05-31,2026-06-04,100,IFC-013:FS,
IFC-082,Documentation,Domain Knowledge Base,Tech Lead + Team (STOA-Foundation),IFC-080,FILE:.specify/memory/Framework.md;FILE:audit-matrix.yml;POLICY:DDD models documented;ENV:glossary created;FILE:docs/architecture/hex-boundaries.md;FILE:docs/planning/DDD-context-map.puml;FILE:docs/shared/glossary.md,"Bounded contexts, aggregates, workflows documented",Completed,"Knowledge graph complete, searchable",7,ARTIFACT:packages/test-fixtures/knowledge-graph.json;ARTIFACT:docs/shared/context-map.puml;EVIDENCE:.specify/sprints/sprint-7/attestations/IFC-082/attestation.json,VALIDATE:pnpm lint,90/180/360,2026-03-26,2026-04-01,100,IFC-080:FS,
IFC-083,Documentation,RAG Integration for Docs,AI Specialist + Tech Writer (STOA-Intelligence),"IFC-039,IFC-082",FILE:.specify/memory/Framework.md;FILE:audit-matrix.yml;ENV:pgvector ready;ENV:documentation indexed;FILE:artifacts/reports/embeddings-quality-test.json;FILE:packages/test-fixtures/knowledge-graph.json,"LLM can answer questions from documentation; targets: >=90%, <2s; gates: response-time-check",Backlog,"RAG accuracy >90%, responses <2s",23,ARTIFACT:artifacts/misc/rag-test-questions.json;ARTIFACT:artifacts/metrics/accuracy-evaluation.csv;ARTIFACT:artifacts/misc/response-time.png;EVIDENCE:.specify/sprints/sprint-23/attestations/IFC-083/context_ack.json,GATE:response-time-check,120/240/480,2026-11-01,2026-11-08,0,"IFC-039:FS,IFC-082:FS",
IFC-084,Documentation,Video Tutorials & Demos,Tech Writer + Marketing (STOA-Foundation),"IFC-050,SALES-002",FILE:.specify/memory/Framework.md;FILE:audit-matrix.yml;ENV:Features stable;ENV:scripts written;FILE:artifacts/misc/team-quiz-results.csv;FILE:docs/sales/sales-motion-playbook.md,"Loom videos for key features, embedded in docs; artifacts: video-links.json, viewer-analytics.csv, feedback-summary.md; targets: >=80%",Backlog,"10+ videos created, >80% satisfaction",27,ARTIFACT:artifacts/misc/video-links.json;ARTIFACT:artifacts/misc/viewer-analytics.csv;ARTIFACT:docs/shared/feedback-summary.md;EVIDENCE:.specify/sprints/sprint-27/attestations/IFC-084/context_ack.json,VALIDATE:pnpm typecheck,180/360/720,2026-12-27,2027-01-05,0,"IFC-050:FS,SALES-002:FS",
IFC-085,AI/ML,PHASE-040: Ollama Local Development,AI Specialist + DevOps (STOA-Intelligence),IFC-005,FILE:.specify/memory/Framework.md;FILE:audit-matrix.yml;ENV:Docker setup;ENV:Llama 3.1 downloaded;FILE:docs/operations/engineering-playbook.md;FILE:apps/ai-worker/src/chains/scoring.chain.ts,"Local LLM for dev/test, cost savings; artifacts: ollama-setup.sh, model-comparison.csv, cost-savings-report.json; targets: >=90%; accuracy-benchmarks.json must contain real Ollama execution timestamps and non-mock model versions",Completed,"Dev costs reduced 90%, same accuracy",2,ARTIFACT:tools/scripts/ollama-setup.sh;ARTIFACT:artifacts/reports/model-comparison.csv;ARTIFACT:artifacts/reports/cost-savings-report.json;ARTIFACT:artifacts/benchmarks/accuracy-benchmarks.json;ARTIFACT:scripts/setup-ollama.sh;EVIDENCE:.specify/sprints/sprint-2/attestations/IFC-085/attestation.json;ARTIFACT:docs/architecture/adr/ADR-022-ai-features-quality.md;ARTIFACT:docs/planning/prd-ai-output-quality.md,VALIDATE:pnpm test;GATE:real-data-check,60/120/240,2026-01-11,2026-01-15,100,IFC-005:FS,
IFC-086,AI/ML,Model Versioning with Zep,AI Specialist + Backend Dev (STOA-Intelligence),IFC-020,FILE:.specify/memory/Framework.md;FILE:audit-matrix.yml;ENV:Zep configured;POLICY:versioning strategy defined;FILE:packages/db/prisma/schema.prisma;FILE:docs/architecture/ai-architecture.md,"All prompts and chains versioned, A/B testable; artifacts: prompt-versions.json, rollback-test.log, ab-test-config.yaml; targets: >=100%; Ollama provider must be fully implemented without throwing 'not yet implemented' errors",Completed,"100% reproducible results, rollback capable",14,ARTIFACT:packages/domain/src/ai/ChainVersionConstants.ts;ARTIFACT:packages/validators/src/chain-version.ts;ARTIFACT:packages/application/src/services/ChainVersionService.ts;ARTIFACT:apps/ai-worker/src/versioning/version-loader.ts;ARTIFACT:apps/api/src/modules/chain-version/chain-version.router.ts;ARTIFACT:artifacts/prompts/prompt-versions-latest.json;ARTIFACT:infra/monitoring/ab-test-config.yaml;EVIDENCE:.specify/sprints/sprint-14/attestations/IFC-086/attestation.json;ARTIFACT:docs/architecture/adr/ADR-022-ai-features-quality.md;ARTIFACT:docs/planning/prd-ai-output-quality.md,VALIDATE:pnpm test;GATE:no-throw-not-implemented,120/240/480,2026-06-28,2026-07-05,100,IFC-020:FS,
IFC-087,Performance,Edge Functions Optimization,Frontend Dev + DevOps (STOA-Automation),IFC-014,FILE:.specify/memory/Framework.md;FILE:audit-matrix.yml;ENV:Vercel Edge Runtime studied;POLICY:use cases identified;FILE:artifacts/benchmarks/web-vitals-report.json,"Critical paths on edge, <50ms response globally; artifacts: edge-performance-map.json, cost-analysis-edge.xlsx, global-latency.csv",Backlog,"TTFB <50ms worldwide, costs optimized",20,ARTIFACT:artifacts/benchmarks/edge-performance-map.json;ARTIFACT:artifacts/reports/cost-analysis-edge.xlsx;ARTIFACT:artifacts/misc/global-latency.csv;EVIDENCE:.specify/sprints/sprint-20/attestations/IFC-087/context_ack.json,VALIDATE:pnpm --filter @intelliflow/web typecheck;VALIDATE:pnpm --filter @intelliflow/web test --run,90/180/360,2026-09-20,2026-09-26,0,IFC-014:FS,
IFC-088,Quality,Continuous Quality Metrics,QA Lead + PM (STOA-Quality),IFC-044,FILE:.specify/memory/Framework.md;FILE:audit-matrix.yml;ENV:SonarQube integrated;ENV:dashboards created;FILE:docs/operations/quality-gates.md,"Quality gates enforced, technical debt tracked; artifacts: sonarqube-project.properties, quality-gate-config.json, debt-trending.pdf; targets: >=3%",Completed,"Code quality A rating, debt ratio <3%",14,ARTIFACT:infra/monitoring/sonar-project.properties;ARTIFACT:infra/monitoring/quality-gate-config.json;ARTIFACT:artifacts/reports/code-analysis/debt-analysis.json;ARTIFACT:docs/shared/refactoring-backlog.md;ARTIFACT:scripts/sonar-iterative.js;ARTIFACT:scripts/sonar-new-issues.js;ARTIFACT:scripts/sonar-report-generator.js;ARTIFACT:scripts/sonar-scan.js;ARTIFACT:scripts/sonar-set-new-code-baseline.js;ARTIFACT:scripts/sonar-status.js;ARTIFACT:scripts/sonar-tracker.js;ARTIFACT:scripts/sonarqube-helper.js;ARTIFACT:scripts/setup-quality-tools.sh;ARTIFACT:scripts/pnpm-audit-report.js;EVIDENCE:.specify/sprints/sprint-14/attestations/IFC-088/attestation.json,VALIDATE:pnpm typecheck,120/240/480,2026-06-28,2026-07-05,100,IFC-044:FS,
IFC-089,Core CRM,"FLOW-005-A, FLOW-006, FLOW-014, FLOW-010-A: Contacts Module - Create/Edit/Search",Frontend Dev + Backend Dev (STOA-Domain),"IFC-002,IFC-004,IFC-102",IMPLEMENTS:FLOW-005;IMPLEMENTS:FLOW-006;IMPLEMENTS:FLOW-014;IMPLEMENTS:FLOW-010;FILE:.specify/memory/Framework.md;FILE:audit-matrix.yml;ENV:DDD model extended with ContactAggregate;ENV:UI for CRUD;FILE:packages/db/prisma/schema.prisma;FILE:apps/web/src/app/leads/(list)/new/page.tsx,"Contacts CRUD working, search <200ms",Completed,"Contacts CRUD working, search <200ms",5,ARTIFACT:apps/api/src/modules/contact/contact.router.ts;EVIDENCE:.specify/sprints/sprint-5/attestations/IFC-089/attestation.json;ARTIFACT:docs/architecture/adr/ADR-019-core-crm-foundation.md;ARTIFACT:docs/planning/prd-core-crm.md;ARTIFACT:packages/adapters/src/calendar/__tests__/IdempotencyManager.test.ts;ARTIFACT:packages/adapters/src/calendar/__tests__/RetryHandler.test.ts,VALIDATE:pnpm --filter @intelliflow/web typecheck;VALIDATE:pnpm --filter @intelliflow/web test --run,90/180/360,2026-02-22,2026-02-28,100,"IFC-002:FS,IFC-004:FS,IFC-102:FS",
IFC-090,Core CRM,Contact 360 Page - Full Detail View,Frontend Dev + UX Designer (STOA-Domain),IFC-089,"FILE:docs/design/page-registry.md;DESIGN:docs/design/mockups/contact-360-view.png;FILE:docs/company/brand/visual-identity.md;FILE:docs/company/brand/style-guide.md;FILE:docs/company/brand/dos-and-donts.md;FILE:docs/company/brand/accessibility-patterns.md;FILE:.specify/memory/Framework.md;FILE:audit-matrix.yml;ENV:Header with contact photo+name+company+metrics;ENV:tabs (Overview,Activity Timeline,Deals,Tickets,Documents,AI Insights);ENV:Right sidebar with Tasks+AI Insights+Notes;FILE:apps/api/src/modules/contact/contact.router.ts","360 page functional with >90 Lighthouse score matching design mockup; artifacts: lighthouse-360-report.html, context_ack.json; gates: lighthouse-gte-90",Completed,360 page functional with >90 Lighthouse score,6,ARTIFACT:artifacts/lighthouse/lighthouse-report.html;EVIDENCE:.specify/sprints/sprint-6/attestations/IFC-090/attestation.json;ARTIFACT:docs/architecture/adr/ADR-019-core-crm-foundation.md;ARTIFACT:docs/planning/prd-core-crm.md,GATE:lighthouse-gte-90,90/180/360,2026-03-08,2026-03-14,100,IFC-089:FS,
IFC-091,Core CRM,Deals Pipeline - Kanban Board,Frontend Dev + Backend Dev (STOA-Domain),"IFC-002,IFC-004,IFC-104","FILE:docs/design/page-registry.md;DESIGN:docs/design/mockups/dashboard-overview.png;FILE:docs/company/brand/visual-identity.md;FILE:docs/company/brand/style-guide.md;FILE:docs/company/brand/dos-and-donts.md;FILE:docs/company/brand/accessibility-patterns.md;IMPLEMENTS:FLOW-007;IMPLEMENTS:FLOW-008;FILE:.specify/memory/Framework.md;FILE:audit-matrix.yml;ENV:Pipeline stages (Qualification,Needs Analysis,Proposal,Negotiation,Closed);ENV:Drag-and-drop Kanban;ENV:Deals by Stage pie chart;ENV:Revenue bar chart;FILE:docs/operations/quality-gates.md;FILE:packages/db/prisma/schema.prisma","Kanban board working matching design mockup, stage changes persist <300ms; artifacts: deals.router.ts, context_ack.json",Completed,"Kanban board working, stage changes persist <300ms",6,ARTIFACT:apps/api/src/modules/opportunity/opportunity.router.ts;EVIDENCE:.specify/sprints/sprint-6/attestations/IFC-091/attestation.json;ARTIFACT:docs/architecture/adr/ADR-019-core-crm-foundation.md;ARTIFACT:docs/planning/prd-core-crm.md,VALIDATE:pnpm --filter @intelliflow/web typecheck;VALIDATE:pnpm --filter @intelliflow/web test --run,90/180/360,2026-03-10,2026-03-16,100,"IFC-002:FS,IFC-004:FS,IFC-104:FS",
IFC-092,Core CRM,Deal Forecasting & Reporting,Data Eng + Backend Dev (STOA-Domain),IFC-091,FILE:.specify/memory/Framework.md;FILE:audit-matrix.yml;ENV:Forecast algorithms;ENV:KPIs: win rate;ENV:total pipeline value;FILE:apps/api/src/modules/opportunity/opportunity.router.ts,"Forecast accuracy ≥85%; artifacts: forecast-algorithm.test.ts, accuracy-backtest.csv, context_ack.json",Completed,Forecast accuracy ≥85% (actual: 96.2%),7,ARTIFACT:apps/api/src/shared/forecast-algorithm.test.ts;ARTIFACT:artifacts/metrics/accuracy-backtest.csv;EVIDENCE:.specify/sprints/sprint-7/attestations/IFC-092/attestation.json;ARTIFACT:docs/architecture/adr/ADR-019-core-crm-foundation.md;ARTIFACT:docs/planning/prd-core-crm.md,VALIDATE:pnpm --filter @intelliflow/api typecheck;VALIDATE:pnpm --filter @intelliflow/api test --run,90/180/360,2026-03-22,2026-03-28,100,IFC-091:FS,
IFC-093,Core CRM,Tickets Module - SLA Tracking,Backend Dev + Frontend Dev (STOA-Domain),"IFC-002,IFC-004,IFC-188",IMPLEMENTS:FLOW-011;IMPLEMENTS:FLOW-013;FILE:.specify/memory/Framework.md;FILE:audit-matrix.yml;ENV:Ticket entity;ENV:SLA badge colors;ENV:notifications;FILE:packages/db/prisma/schema.prisma;FILE:apps/web/src/app/leads/(list)/new/page.tsx,"Tickets visible, SLA breach alerts in <1m; artifacts: sla-notification.test.ts, context_ack.json",Completed,"Tickets visible, SLA breach alerts in <1m (actual: 30s)",7,ARTIFACT:apps/web/lib/tickets/sla-service.ts;ARTIFACT:apps/web/lib/tickets/sla-notifications.ts;ARTIFACT:apps/web/lib/tickets/sla-notifications.test.ts;EVIDENCE:.specify/sprints/sprint-7/attestations/IFC-093/attestation.json;ARTIFACT:docs/architecture/adr/ADR-019-core-crm-foundation.md;ARTIFACT:docs/planning/prd-core-crm.md,VALIDATE:pnpm --filter @intelliflow/web typecheck;VALIDATE:pnpm --filter @intelliflow/web test --run,90/180/360,2026-03-24,2026-03-30,100,"IFC-002:FS,IFC-004:FS,IFC-188:FS",
IFC-094,Core CRM,Documents Management - Upload & Sign,Backend Dev + Integrations Eng (STOA-Domain),"IFC-090,IFC-106",FILE:.specify/memory/Framework.md;FILE:audit-matrix.yml;ENV:Integration with DocuSign/Adobe Sign;ENV:version history;ENV:inline previews;FILE:artifacts/lighthouse/lighthouse-report.html;FILE:docs/architecture/hex-boundaries.md,"Contracts signed electronically, preview inline; artifacts: e-signature-test.pdf, context_ack.json",Completed,,8,SPEC:.specify/sprints/sprint-8/specifications/IFC-094-spec.md;PLAN:.specify/sprints/sprint-8/planning/IFC-094-plan.md;EVIDENCE:.specify/sprints/sprint-8/attestations/IFC-094/context_pack.md;EVIDENCE:.specify/sprints/sprint-8/attestations/IFC-094/attestation.json;ARTIFACT:artifacts/reports/e-signature-test.pdf;ARTIFACT:docs/architecture/adr/ADR-019-core-crm-foundation.md;ARTIFACT:docs/planning/prd-core-crm.md,AUDIT:code-review,90/180/360,2026-02-19,2026-02-19,100,"IFC-090:FS,IFC-106:FS",
IFC-095,AI Insights,Churn Risk & Next Best Action,AI Specialist + Backend Dev (STOA-Intelligence),"IFC-005,IFC-090,IFC-108",FILE:.specify/memory/Framework.md;FILE:audit-matrix.yml;ENV:ML pipeline for churn risk;ENV:recommendations in Contact 360;FILE:apps/ai-worker/src/chains/scoring.chain.ts;FILE:artifacts/lighthouse/lighthouse-report.html,"AI predictions <2s, accuracy >80%; artifacts: model-evaluation.ipynb, context_ack.json; processChurnRisk/processNextBestAction/processQualification must call real AI chains, not return hardcoded mock values",Completed,"AI predictions <2s (actual: 1.2s), accuracy >80% (actual: 85.2%), full-stack integration complete (API router, UI components, 360 views)",6,SPEC:.specify/sprints/sprint-6/specifications/IFC-095-spec.md;PLAN:.specify/sprints/sprint-6/planning/IFC-095-plan.md;ARTIFACT:tools/scripts/model-evaluation.ipynb;ARTIFACT:apps/api/src/modules/intelligence/intelligence.router.ts;ARTIFACT:packages/ui/src/components/intelligence/ChurnRiskCard.tsx;ARTIFACT:packages/ui/src/components/intelligence/NextBestActionCard.tsx;EVIDENCE:.specify/sprints/sprint-6/attestations/IFC-095/attestation.json;ARTIFACT:docs/architecture/adr/ADR-022-ai-features-quality.md;ARTIFACT:docs/planning/prd-ai-output-quality.md,GATE:no-hardcoded-predictions;VALIDATE:pnpm --filter @intelliflow/api typecheck;VALIDATE:pnpm --filter @intelliflow/api test --run,120/240/480,2026-04-07,2026-04-14,100,"IFC-005:FS,IFC-090:FS,IFC-108:FS",
IFC-096,Reports,Custom Reports & Dashboards,Frontend Dev + Data Eng (STOA-Domain),"IFC-091,IFC-092,IFC-108",FILE:docs/design/page-registry.md;FILE:docs/company/brand/visual-identity.md;FILE:docs/company/brand/style-guide.md;FILE:docs/company/brand/dos-and-donts.md;FILE:docs/company/brand/accessibility-patterns.md;FILE:.specify/memory/Framework.md;FILE:audit-matrix.yml;ENV:Drag-and-drop widget builder;ENV:export CSV/PDF;FILE:docs/architecture/hex-boundaries.md;FILE:apps/api/src/modules/opportunity/opportunity.router.ts;FILE:apps/api/src/shared/forecast-algorithm.test.ts,"Custom dashboards created, export functional; artifacts: context_ack.json; verified by: pnpm build",Completed,"Custom dashboards created, export functional",9,EVIDENCE:.specify/sprints/sprint-9/attestations/IFC-096/attestation.json;ARTIFACT:docs/planning/prd-analytics-reporting.md,VALIDATE:pnpm build,90/180/360,2026-04-19,2026-04-25,100,"IFC-091:FS,IFC-092:FS,IFC-108:FS",
IFC-097,Ops & Observability,Distributed Tracing & Logging,DevOps + SRE (STOA-Automation),IFC-007,FILE:.specify/memory/Framework.md;FILE:audit-matrix.yml;ENV:OpenTelemetry;ENV:Prometheus metrics;ENV:Loki logs;ENV:Grafana dashboards;FILE:docs/architecture/adr/ADR-008-audit-logging.md;FILE:docs/operations/quality-gates.md;FILE:tools/scripts/k6/load-test.js,"99% of requests traced, dashboards available; artifacts: dashboard-catalog.md, context_ack.json; gates: coverage-gte-90",Completed,"99% of requests traced (actual: 99.0%), dashboards available (20 documented)",9,ARTIFACT:docs/shared/dashboard-catalog.md;EVIDENCE:.specify/sprints/sprint-9/attestations/IFC-097/attestation.json,GATE:coverage-gte-90,90/180/360,2026-04-21,2026-04-27,100,IFC-007:FS,
IFC-098,Security,RBAC/ABAC & Audit Trail,Security Eng + Backend Dev (STOA-Security),IFC-008,FILE:.specify/memory/Framework.md;FILE:audit-matrix.yml;ENV:Role/attribute-based permissions;ENV:audit logs for all actions;FILE:docs/architecture/adr/ADR-008-audit-logging.md;FILE:docs/security/zero-trust-design.md;FILE:docs/security/owasp-checklist.md;FILE:docs/compliance-and-governance/compliance/compliance-report.md,"100% actions logged, RBAC functional; artifacts: schema-audit.prisma, audit-coverage.test.ts, context_ack.json; verified by: pnpm test",Completed,"100% actions logged, RBAC functional",5,ARTIFACT:packages/db/prisma/schema-audit.prisma;ARTIFACT:apps/api/src/security/index.ts;ARTIFACT:apps/api/src/security/audit-coverage-test.ts;EVIDENCE:.specify/sprints/sprint-5/attestations/IFC-098/attestation.json,VALIDATE:pnpm test,120/240/480,2026-02-24,2026-03-02,100,IFC-008:FS,
IFC-099,Integrations,ERP/Payment/Email Connectors,Integrations Eng + Backend Dev (STOA-Domain),"IFC-006,IFC-106",FILE:.specify/memory/Framework.md;FILE:audit-matrix.yml;ENV:Adapters for ERP (SAP);ENV:Stripe/PayPal;ENV:Gmail/Outlook;ENV:Slack/Teams;FILE:apps/api/src/lib/supabase.ts;FILE:docs/architecture/hex-boundaries.md,"ERP sync functional, payments processed, emails sent; artifacts: connector-status-dashboard.json, context_ack.json; verified by: pnpm test; Each adapter must have integration test AND be wired to an API router",Completed,"ERP sync functional, payments processed, emails sent",10,ARTIFACT:artifacts/reports/connector-status-dashboard.json;ARTIFACT:packages/adapters/src/erp/sap/client.ts;ARTIFACT:packages/adapters/src/payments/stripe/client.ts;ARTIFACT:packages/adapters/src/payments/paypal/client.ts;ARTIFACT:packages/adapters/src/email/gmail/client.ts;ARTIFACT:packages/adapters/src/email/outlook/client.ts;ARTIFACT:packages/adapters/src/messaging/slack/client.ts;ARTIFACT:packages/adapters/src/messaging/teams/client.ts;ARTIFACT:packages/adapters/src/messaging/WebhookServiceAdapter.ts;ARTIFACT:packages/webhooks/package.json;ARTIFACT:packages/webhooks/src/*;EVIDENCE:.specify/sprints/sprint-10/attestations/IFC-099/attestation.json;ARTIFACT:docs/planning/prd-erp-connectors.md;ARTIFACT:tests/integration/connectors/email.test.ts;ARTIFACT:tests/integration/connectors/erp.test.ts;ARTIFACT:tests/integration/connectors/messaging.test.ts;ARTIFACT:tests/integration/connectors/payments.test.ts,VALIDATE:pnpm test;GATE:integration-wired;GATE:provider-test-exists,180/360/720,2026-05-03,2026-05-12,100,"IFC-006:FS,IFC-106:FS",
IFC-100,Governance,ADR Registry & Compliance Reporting,PM + CTO (STOA-Foundation),"IFC-008,GOV-001",FILE:.specify/memory/Framework.md;FILE:audit-matrix.yml;ENV:ADR templates;ENV:ISO 27001/42001/14001 compliance docs;FILE:docs/architecture/adr/ADR-008-audit-logging.md;FILE:docs/architecture/adr/template.md;FILE:docs/compliance-and-governance/compliance/compliance-report.md,"ADR repo active, compliance docs ready; artifacts: adr-index.md, compliance-dashboard-mockup.md, context_ack.json",Completed,"ADR repo active, compliance docs ready",6,ARTIFACT:docs/shared/adr-index.md;ARTIFACT:docs/planning/compliance-dashboard-mockup.md;EVIDENCE:.specify/sprints/sprint-6/attestations/IFC-100/attestation.json,VALIDATE:pnpm typecheck,60/120/240,2026-05-07,2026-05-11,100,"IFC-008:FS,GOV-001:FS",
PG-001,Public Pages,Home Page (Public),Growth FE (STOA-Foundation),"IFC-076,GTM-002,BRAND-001",FILE:docs/design/page-registry.md;FILE:.specify/memory/Framework.md;FILE:audit-matrix.yml;POLICY:Design approved;ENV:content ready;FILE:artifacts/reports/accessibility-audit.json;FILE:docs/company/messaging/positioning.md;FILE:docs/company/brand/visual-identity.md;FILE:docs/company/brand/style-guide.md;FILE:docs/company/brand/dos-and-donts.md;FILE:docs/company/brand/accessibility-patterns.md;FILE:docs/planning/prd-home-page.md;FILE:docs/specs/HOME-PAGE-SPEC.md,"Response <200ms, Lighthouse ≥90, SEO optimized; artifacts: page.tsx, PublicHomePage.tsx, loading.tsx, error.tsx; gates: lighthouse-gte-90",Completed,"Page live, performance met, SEO indexed",11,SPEC:.specify/sprints/sprint-11/specifications/PG-001-spec.md;PLAN:.specify/sprints/sprint-11/planning/PG-001-plan.md;EVIDENCE:.specify/sprints/sprint-11/attestations/PG-001/context_pack.md;EVIDENCE:.specify/sprints/sprint-11/attestations/PG-001/attestation.json;ARTIFACT:apps/web/src/app/(public)/(home)/page.tsx;ARTIFACT:apps/web/src/components/home/PublicHomePage.tsx;ARTIFACT:apps/web/src/app/(public)/loading.tsx;ARTIFACT:apps/web/src/app/(public)/error.tsx;ARTIFACT:docs/planning/seo-meta.json;ARTIFACT:docs/architecture/adr/ADR-020-public-site-auth.md;ARTIFACT:docs/planning/prd-public-site-auth.md;ARTIFACT:docs/planning/prd-home-page.md;SPEC:docs/specs/HOME-PAGE-SPEC.md,GATE:lighthouse-gte-90,60/120/240,2026-05-17,2026-05-21,100,"IFC-076:FS,GTM-002:FS,BRAND-001:FS",
PG-002,Public Pages,Features Page,Growth FE (STOA-Foundation),"PG-001,GTM-002,BRAND-001",FILE:docs/design/page-registry.md;FILE:.specify/memory/Framework.md;FILE:audit-matrix.yml;POLICY:Feature list defined;ENV:benefits clear;FILE:docs/company/messaging/positioning.md;FILE:docs/company/brand/visual-identity.md;FILE:docs/company/brand/style-guide.md;FILE:docs/company/brand/dos-and-donts.md;FILE:docs/company/brand/accessibility-patterns.md,"Response <200ms, Lighthouse ≥90, conversion optimized; artifacts: page.tsx, features-content.json, conversion-tracking.js",Completed,"Page live, features showcased, CTA working",11,ARTIFACT:apps/web/src/app/(public)/features/page.tsx;ARTIFACT:docs/planning/features-content.json;ARTIFACT:tools/scripts/conversion-tracking.js;EVIDENCE:.specify/sprints/sprint-11/attestations/PG-002/attestation.json;ARTIFACT:docs/architecture/adr/ADR-020-public-site-auth.md;ARTIFACT:docs/planning/prd-public-site-auth.md,GATE:lighthouse-gte-90;VALIDATE:pnpm --filter @intelliflow/web typecheck;VALIDATE:pnpm --filter @intelliflow/web test --run,60/120/240,2026-05-19,2026-05-23,100,"PG-001:FS,GTM-002:FS,BRAND-001:FS",
PG-003,Public Pages,Pricing Page,Growth FE (STOA-Foundation),"PG-001,GTM-002,BRAND-001",FILE:docs/design/page-registry.md;FILE:.specify/memory/Framework.md;FILE:audit-matrix.yml;POLICY:Pricing tiers defined;ENV:calculator ready;FILE:docs/shared/review-checklist.md;FILE:docs/operations/quality-gates.md;FILE:docs/operations/pr-checklist.md;FILE:docs/company/messaging/positioning.md;FILE:docs/company/brand/visual-identity.md;FILE:docs/company/brand/style-guide.md;FILE:docs/company/brand/dos-and-donts.md;FILE:docs/company/brand/accessibility-patterns.md,"Response <200ms, Lighthouse ≥90, calculator functional; artifacts: page.tsx, pricing-calculator.tsx, stripe-integration.ts",Completed,"Pricing clear, calculator working, Stripe ready",11,ARTIFACT:apps/web/src/app/(public)/pricing/page.tsx;ARTIFACT:apps/web/src/components/pricing/pricing-calculator.tsx;ARTIFACT:apps/web/src/lib/pricing/stripe-integration.ts;EVIDENCE:.specify/sprints/sprint-11/attestations/PG-003/attestation.json;ARTIFACT:docs/architecture/adr/ADR-020-public-site-auth.md;ARTIFACT:docs/planning/prd-public-site-auth.md,GATE:lighthouse-gte-90;VALIDATE:pnpm --filter @intelliflow/web typecheck;VALIDATE:pnpm --filter @intelliflow/web test --run,60/120/240,2026-05-21,2026-05-25,100,"PG-001:FS,GTM-002:FS,BRAND-001:FS",
PG-004,Public Pages,About Page,Growth FE (STOA-Foundation),"PG-001,GTM-002,BRAND-001",FILE:docs/design/page-registry.md;FILE:.specify/memory/Framework.md;FILE:audit-matrix.yml;ENV:Company story written;ENV:team photos ready;FILE:docs/company/messaging/positioning.md;FILE:docs/company/brand/visual-identity.md;FILE:docs/company/brand/style-guide.md;FILE:docs/company/brand/dos-and-donts.md;FILE:docs/company/brand/accessibility-patterns.md,"Response <200ms, Lighthouse ≥90, team displayed; artifacts: page.tsx, team-data.json, about-content.md",Completed,"Story told, team showcased, culture visible",11,ARTIFACT:apps/web/src/app/(public)/about/page.tsx;ARTIFACT:apps/web/src/data/team-data.json;ARTIFACT:docs/about/about-content.md;EVIDENCE:.specify/sprints/sprint-11/attestations/PG-004/attestation.json;ARTIFACT:docs/architecture/adr/ADR-020-public-site-auth.md;ARTIFACT:docs/planning/prd-public-site-auth.md,GATE:lighthouse-gte-90;VALIDATE:pnpm --filter @intelliflow/web typecheck;VALIDATE:pnpm --filter @intelliflow/web test --run,60/120/240,2026-05-23,2026-05-27,100,"PG-001:FS,GTM-002:FS,BRAND-001:FS",
PG-005,Public Pages,Contact Page,Growth FE (STOA-Foundation),"PG-001,GTM-002,BRAND-001",FILE:docs/design/page-registry.md;FILE:.specify/memory/Framework.md;FILE:audit-matrix.yml;ENV:Contact form designed;ENV:validation rules;FILE:docs/company/messaging/positioning.md;FILE:docs/company/brand/visual-identity.md;FILE:docs/company/brand/style-guide.md;FILE:docs/company/brand/dos-and-donts.md;FILE:docs/company/brand/accessibility-patterns.md,"Response <200ms, Lighthouse ≥90, form working; artifacts: page.tsx, contact-form.tsx, email-handler.ts",Completed,"Form submitting, validation working, emails sent",11,ARTIFACT:apps/web/src/app/(public)/contact/page.tsx;ARTIFACT:apps/web/src/components/shared/contact-form.tsx;ARTIFACT:apps/web/src/lib/shared/email-handler.ts;EVIDENCE:.specify/sprints/sprint-11/attestations/PG-005/attestation.json;ARTIFACT:docs/architecture/adr/ADR-020-public-site-auth.md;ARTIFACT:docs/planning/prd-public-site-auth.md,GATE:lighthouse-gte-90;VALIDATE:pnpm --filter @intelliflow/web typecheck;VALIDATE:pnpm --filter @intelliflow/web test --run,60/120/240,2026-05-25,2026-05-29,100,"PG-001:FS,GTM-002:FS,BRAND-001:FS",
PG-006,Public Pages,Partners Page,Growth FE (STOA-Foundation),"PG-001,GTM-002,BRAND-001",FILE:docs/design/page-registry.md;FILE:.specify/memory/Framework.md;FILE:audit-matrix.yml;ENV:Partner logos;ENV:benefits outlined;FILE:docs/company/messaging/positioning.md;FILE:docs/company/brand/visual-identity.md;FILE:docs/company/brand/style-guide.md;FILE:docs/company/brand/dos-and-donts.md;FILE:docs/company/brand/accessibility-patterns.md,"Response <200ms, Lighthouse ≥90, logos displayed; artifacts: page.tsx, partner-benefits.json, context_ack.json",Completed,"Partners showcased, benefits clear, CTAs working",11,ARTIFACT:apps/web/src/app/(public)/partners/page.tsx;ARTIFACT:docs/planning/partner-benefits.json;EVIDENCE:.specify/sprints/sprint-11/attestations/PG-006/attestation.json;ARTIFACT:docs/architecture/adr/ADR-020-public-site-auth.md;ARTIFACT:docs/planning/prd-public-site-auth.md;ARTIFACT:apps/web/src/data/partner-benefits.json,GATE:lighthouse-gte-90;VALIDATE:pnpm --filter @intelliflow/web typecheck;VALIDATE:pnpm --filter @intelliflow/web test --run,60/120/240,2026-05-27,2026-05-31,100,"PG-001:FS,GTM-002:FS,BRAND-001:FS",
PG-007,Public Pages,Press Page,Growth FE (STOA-Foundation),"PG-001,GTM-002,BRAND-001",FILE:docs/design/page-registry.md;FILE:.specify/memory/Framework.md;FILE:audit-matrix.yml;ENV:Press releases;ENV:media kit ready;FILE:docs/shared/review-checklist.md;FILE:docs/operations/pr-checklist.md;FILE:docs/company/messaging/positioning.md;FILE:docs/company/brand/visual-identity.md;FILE:docs/company/brand/style-guide.md;FILE:docs/company/brand/dos-and-donts.md;FILE:docs/company/brand/accessibility-patterns.md,"Response <200ms, Lighthouse ≥90, downloads working; artifacts: page.tsx, media-kit.zip, context_ack.json",Completed,"Press releases live, media kit downloadable",11,ARTIFACT:apps/web/src/app/(public)/press/page.tsx;ARTIFACT:apps/web/src/data/press-releases.json;EVIDENCE:.specify/sprints/sprint-11/attestations/PG-007/attestation.json;ARTIFACT:docs/architecture/adr/ADR-020-public-site-auth.md;ARTIFACT:docs/planning/prd-public-site-auth.md,GATE:lighthouse-gte-90;VALIDATE:pnpm --filter @intelliflow/web typecheck;VALIDATE:pnpm --filter @intelliflow/web test --run,60/120/240,2026-05-28,2026-06-01,100,"PG-001:FS,GTM-002:FS,BRAND-001:FS",
PG-008,Public Pages,Security Page,Growth FE (STOA-Foundation),"PG-001,GTM-002,BRAND-001",FILE:docs/design/page-registry.md;FILE:.specify/memory/Framework.md;FILE:audit-matrix.yml;POLICY:Security features documented;ENV:badges ready;FILE:docs/security/zero-trust-design.md;FILE:docs/company/messaging/positioning.md;FILE:docs/company/brand/visual-identity.md;FILE:docs/company/brand/style-guide.md;FILE:docs/company/brand/dos-and-donts.md;FILE:docs/company/brand/accessibility-patterns.md,"Response <200ms, Lighthouse ≥90, trust signals; artifacts: page.tsx, security-features.json, context_ack.json",Completed,"Security explained, badges displayed, trust built",11,ARTIFACT:apps/web/src/app/(public)/security/page.tsx;ARTIFACT:apps/web/src/data/security-features.json;EVIDENCE:.specify/sprints/sprint-11/attestations/PG-008/attestation.json;ARTIFACT:docs/architecture/adr/ADR-020-public-site-auth.md;ARTIFACT:docs/planning/prd-public-site-auth.md,GATE:lighthouse-gte-90;VALIDATE:pnpm --filter @intelliflow/web typecheck;VALIDATE:pnpm --filter @intelliflow/web test --run,60/120/240,2026-05-29,2026-06-02,100,"PG-001:FS,GTM-002:FS,BRAND-001:FS",
PG-009,Public Pages,Blog Index,Growth FE (STOA-Foundation),"PG-001,GTM-002,BRAND-001",FILE:docs/design/page-registry.md;FILE:.specify/memory/Framework.md;FILE:audit-matrix.yml;POLICY:Blog structure defined;ENV:categories set;FILE:docs/company/messaging/positioning.md;FILE:docs/company/brand/visual-identity.md;FILE:docs/company/brand/style-guide.md;FILE:docs/company/brand/dos-and-donts.md;FILE:docs/company/brand/accessibility-patterns.md,"Response <200ms, Lighthouse ≥90, pagination working; artifacts: page.tsx, blog-pagination.tsx, blog-categories.json",Completed,"Blog listing live, pagination working, SEO optimized",12,ARTIFACT:apps/web/src/app/(public)/blog/page.tsx;ARTIFACT:apps/web/src/components/blog/blog-pagination.tsx;EVIDENCE:.specify/sprints/sprint-12/attestations/PG-009/attestation.json;ARTIFACT:docs/architecture/adr/ADR-020-public-site-auth.md;ARTIFACT:docs/planning/prd-public-site-auth.md,GATE:lighthouse-gte-90;VALIDATE:pnpm --filter @intelliflow/web typecheck;VALIDATE:pnpm --filter @intelliflow/web test --run,60/120/240,2026-05-31,2026-06-04,100,"PG-001:FS,GTM-002:FS,BRAND-001:FS",
PG-010,Public Pages,Blog Post,Growth FE (STOA-Foundation),"PG-009,GTM-002,BRAND-001",FILE:docs/design/page-registry.md;FILE:.specify/memory/Framework.md;FILE:audit-matrix.yml;ENV:Post template ready;ENV:markdown support;FILE:apps/web/src/app/(public)/blog/page.tsx;FILE:docs/company/messaging/positioning.md;FILE:docs/company/brand/visual-identity.md;FILE:docs/company/brand/style-guide.md;FILE:docs/company/brand/dos-and-donts.md;FILE:docs/company/brand/accessibility-patterns.md,"Response <200ms, Lighthouse ≥90, comments enabled; artifacts: page.tsx, markdown-renderer.tsx, comments-widget.tsx",Completed,"Posts rendering, markdown working, comments live",12,ARTIFACT:apps/web/src/app/(public)/blog/[slug]/page.tsx;ARTIFACT:apps/web/src/components/blog/markdown-renderer.tsx;ARTIFACT:apps/web/src/components/blog/comments-widget.tsx;EVIDENCE:.specify/sprints/sprint-12/attestations/PG-010/attestation.json;ARTIFACT:docs/architecture/adr/ADR-020-public-site-auth.md;ARTIFACT:docs/planning/prd-public-site-auth.md,GATE:lighthouse-gte-90;VALIDATE:pnpm --filter @intelliflow/web typecheck;VALIDATE:pnpm --filter @intelliflow/web test --run,60/120/240,2026-06-02,2026-06-06,100,"PG-009:FS,GTM-002:FS,BRAND-001:FS",
PG-011,Public Pages,Careers Page,Growth FE (STOA-Foundation),"PG-001,GTM-002,BRAND-001",FILE:docs/design/page-registry.md;FILE:.specify/memory/Framework.md;FILE:audit-matrix.yml;ENV:Job listings ready;ENV:application form;FILE:docs/company/messaging/positioning.md;FILE:docs/company/brand/visual-identity.md;FILE:docs/company/brand/style-guide.md;FILE:docs/company/brand/dos-and-donts.md;FILE:docs/company/brand/accessibility-patterns.md,"Response <200ms, Lighthouse ≥90, applications working; artifacts: page.tsx, job-listings.json, application-form.tsx",Completed,"Jobs listed, applications submitting, ATS integrated",12,ARTIFACT:apps/web/src/app/(public)/careers/page.tsx;ARTIFACT:apps/web/src/app/(public)/careers/[id]/page.tsx;ARTIFACT:docs/planning/job-listings.json;ARTIFACT:apps/web/src/components/shared/application-form.tsx;EVIDENCE:.specify/sprints/sprint-12/attestations/PG-011/attestation.json;ARTIFACT:docs/architecture/adr/ADR-020-public-site-auth.md;ARTIFACT:docs/planning/prd-public-site-auth.md,GATE:lighthouse-gte-90;VALIDATE:pnpm --filter @intelliflow/web typecheck;VALIDATE:pnpm --filter @intelliflow/web test --run,60/120/240,2026-06-04,2026-06-08,100,"PG-001:FS,GTM-002:FS,BRAND-001:FS",
PG-012,Public Pages,Career Detail,Growth FE (STOA-Foundation),"PG-011,GTM-002,BRAND-001",FILE:docs/design/page-registry.md;FILE:.specify/memory/Framework.md;FILE:audit-matrix.yml;ENV:Job description template;POLICY:requirements clear;FILE:apps/web/src/app/(public)/careers/page.tsx;FILE:docs/company/messaging/positioning.md;FILE:docs/company/brand/visual-identity.md;FILE:docs/company/brand/style-guide.md;FILE:docs/company/brand/dos-and-donts.md;FILE:docs/company/brand/accessibility-patterns.md,"Response <200ms, Lighthouse ≥90, apply button working; artifacts: page.tsx, job-detail-template.tsx, apply-button.tsx",Completed,"Job details shown, requirements clear, apply working",12,ARTIFACT:apps/web/src/app/(public)/careers/[id]/page.tsx;ARTIFACT:apps/web/src/components/shared/job-detail-template.tsx;ARTIFACT:apps/web/src/components/shared/apply-button.tsx;EVIDENCE:.specify/sprints/sprint-12/attestations/PG-012/attestation.json,GATE:lighthouse-gte-90;VALIDATE:pnpm --filter @intelliflow/web typecheck;VALIDATE:pnpm --filter @intelliflow/web test --run,60/120/240,2026-06-06,2026-06-10,100,"PG-011:FS,GTM-002:FS,BRAND-001:FS",
PG-013,Marketing Pages,Landing Page Template,Growth FE (STOA-Foundation),"PG-001,GTM-002,BRAND-001",FILE:docs/design/page-registry.md;FILE:.specify/memory/Framework.md;FILE:audit-matrix.yml;ENV:Landing page builder;ENV:A/B testing ready;FILE:docs/company/messaging/positioning.md;FILE:docs/company/brand/visual-identity.md;FILE:docs/company/brand/style-guide.md;FILE:docs/company/brand/dos-and-donts.md;FILE:docs/company/brand/accessibility-patterns.md,"Response <200ms, Lighthouse ≥90, conversions tracked; artifacts: page.tsx, landing-builder.tsx, ab-test-framework.ts; verified by: pnpm test",Completed,"Landing pages generating, A/B tests running",12,ARTIFACT:apps/web/src/app/(public)/lp/[slug]/page.tsx;ARTIFACT:apps/web/src/components/shared/landing-builder.tsx;ARTIFACT:apps/web/src/lib/shared/ab-test-framework.ts;ARTIFACT:apps/web/src/data/landing-pages.json;EVIDENCE:.specify/sprints/sprint-12/attestations/PG-013/attestation.json,VALIDATE:pnpm test;GATE:lighthouse-gte-90,90/180/360,2026-06-08,2026-06-14,100,"PG-001:FS,GTM-002:FS,BRAND-001:FS",
PG-014,Public Pages,Status Page,Growth FE (STOA-Foundation),"PG-001,GTM-002,BRAND-001",FILE:.specify/memory/Framework.md;FILE:audit-matrix.yml;ENV:Status monitoring integrated;ENV:incidents tracked;FILE:docs/company/messaging/positioning.md;FILE:docs/company/brand/visual-identity.md,"Response <200ms, Lighthouse ≥90, real-time updates; artifacts: page.tsx, status-monitor.tsx, incident-tracker.ts",Completed,"Status displayed, incidents shown, updates real-time",12,ARTIFACT:apps/web/src/app/(public)/status/page.tsx;ARTIFACT:apps/web/src/components/status/status-monitor.tsx;ARTIFACT:apps/web/lib/status/incident-tracker.ts;EVIDENCE:.specify/sprints/sprint-12/attestations/PG-014/attestation.json,GATE:lighthouse-gte-90;VALIDATE:pnpm --filter @intelliflow/web typecheck;VALIDATE:pnpm --filter @intelliflow/web test --run,60/120/240,2026-06-10,2026-06-14,100,"PG-001:FS,GTM-002:FS,BRAND-001:FS",
PG-015,Auth Pages,Sign In,Platform FE (STOA-Foundation),"IFC-006,IFC-076,IFC-098",IMPLEMENTS:FLOW-001;FILE:.specify/memory/Framework.md;FILE:audit-matrix.yml;FILE:apps/web/src/components/shared/auth-background.tsx;FILE:apps/web/src/components/shared/auth-card.tsx;FILE:apps/web/src/components/shared/password-input.tsx;FILE:apps/web/src/components/shared/trust-indicators.tsx;FILE:apps/web/src/lib/auth/AuthContext.tsx;FILE:packages/validators/src/auth.ts;FILE:apps/api/src/lib/supabase.ts;ENV:Auth flow designed;ENV:SSO configured,"Response <200ms, Lighthouse ≥90, auth working; artifacts: page.tsx, auth-providers.tsx, login-security.ts; verified by: pnpm test",Completed,"Login functional, SSO working, security validated",13,ARTIFACT:apps/web/src/app/(public)/login/page.tsx;ARTIFACT:apps/web/src/components/shared/auth-providers.tsx;ARTIFACT:apps/web/src/lib/shared/login-security.ts;EVIDENCE:.specify/sprints/sprint-13/execution/PG-015/20260125-173318/PG-015-delivery.md;ARTIFACT:docs/architecture/adr/ADR-020-public-site-auth.md;ARTIFACT:docs/planning/prd-public-site-auth.md,VALIDATE:pnpm test;GATE:lighthouse-gte-90,90/180/360,2026-06-14,2026-06-18,100,"IFC-006:FS,IFC-076:FS,IFC-098:FS",
PG-016,Auth Pages,Sign Up,Platform FE (STOA-Foundation),"PG-015,IFC-006",FILE:.specify/memory/Framework.md;FILE:audit-matrix.yml;FILE:apps/web/src/app/(public)/login/page.tsx;FILE:apps/web/src/components/shared/auth-background.tsx;FILE:apps/web/src/components/shared/auth-card.tsx;FILE:apps/web/src/components/shared/password-input.tsx;FILE:apps/web/src/components/shared/trust-indicators.tsx;FILE:apps/web/src/lib/auth/AuthContext.tsx;FILE:packages/validators/src/auth.ts;ENV:Registration flow;ENV:validation rules,"Response <200ms, Lighthouse ≥90, registration working; artifacts: page.tsx, registration-form.tsx, welcome-email.ts",Completed,"Signup working, validation active, welcome email sent, HaveIBeenPwned breach check, rate limiting",13,ARTIFACT:apps/web/src/app/(public)/signup/page.tsx;ARTIFACT:apps/web/src/components/shared/registration-form.tsx;ARTIFACT:apps/web/src/lib/shared/welcome-email.ts;ARTIFACT:apps/web/src/lib/shared/password-breach-check.ts;ARTIFACT:apps/web/src/lib/shared/signup-rate-limiter.ts;EVIDENCE:.specify/sprints/sprint-13/attestations/PG-016/attestation.json;ARTIFACT:docs/architecture/adr/ADR-020-public-site-auth.md;ARTIFACT:docs/planning/prd-public-site-auth.md,GATE:lighthouse-gte-90;VALIDATE:pnpm --filter @intelliflow/web typecheck;VALIDATE:pnpm --filter @intelliflow/web test --run,90/180/360,2026-06-16,2026-06-20,100,"PG-015:FS,IFC-006:FS",
PG-017,Auth Pages,Sign Up Success,Platform FE (STOA-Foundation),PG-016,FILE:.specify/memory/Framework.md;FILE:audit-matrix.yml;FILE:apps/web/src/app/(public)/signup/page.tsx;FILE:apps/web/src/components/shared/auth-background.tsx;FILE:apps/web/src/components/shared/auth-card.tsx;FILE:apps/web/src/components/shared/trust-indicators.tsx;ENV:Success message;POLICY:next steps defined,"Response <200ms, Lighthouse ≥90, onboarding started; artifacts: page.tsx, onboarding-flow.tsx, tracking-pixel.ts",Completed,"Success shown, onboarding initiated, tracking active",13,ARTIFACT:apps/web/src/app/(public)/signup/success/page.tsx;ARTIFACT:apps/web/src/components/shared/onboarding-flow.tsx;ARTIFACT:apps/web/src/lib/shared/tracking-pixel.ts;EVIDENCE:.specify/sprints/sprint-13/attestations/PG-017/attestation.json;EVIDENCE:.specify/sprints/sprint-13/attestations/PG-017/attestation.json,GATE:lighthouse-gte-90;VALIDATE:pnpm --filter @intelliflow/web typecheck;VALIDATE:pnpm --filter @intelliflow/web test --run,60/120/240,2026-06-18,2026-06-20,100,PG-016:FS,
PG-018,Auth Pages,Logout,Platform FE (STOA-Foundation),"PG-015,IFC-006",FILE:.specify/memory/Framework.md;FILE:audit-matrix.yml;FILE:apps/web/src/app/(public)/login/page.tsx;FILE:apps/web/src/components/shared/auth-background.tsx;FILE:apps/web/src/lib/auth/AuthContext.tsx;FILE:apps/web/src/lib/shared/login-security.ts;ENV:Logout flow;ENV:session cleanup,"Response <200ms, Lighthouse ≥90, session cleared; artifacts: page.tsx, session-cleanup.ts, logout-redirect.ts",Completed,"Logout working, session cleared, redirect functional, multi-tab sync, unsaved work modal",13,ARTIFACT:apps/web/src/app/(public)/logout/page.tsx;ARTIFACT:apps/web/src/lib/shared/session-cleanup.ts;ARTIFACT:apps/web/src/lib/shared/logout-redirect.ts;ARTIFACT:apps/web/src/hooks/useLogout.ts;ARTIFACT:apps/web/src/hooks/useUnsavedChanges.tsx;ARTIFACT:apps/web/src/lib/broadcast.ts;ARTIFACT:apps/web/src/components/auth/logout-button.tsx;ARTIFACT:apps/web/src/components/auth/unsaved-work-modal.tsx;EVIDENCE:.specify/sprints/sprint-13/execution/PG-018/20260126-000000/PG-018-delivery.md;ARTIFACT:docs/architecture/adr/ADR-020-public-site-auth.md;ARTIFACT:docs/planning/prd-public-site-auth.md,GATE:lighthouse-gte-90;VALIDATE:pnpm --filter @intelliflow/web typecheck;VALIDATE:pnpm --filter @intelliflow/web test --run,60/120/240,2026-06-17,2026-06-19,100,"PG-015:FS,IFC-006:FS",
PG-019,Auth Pages,Forgot Password,Platform FE (STOA-Foundation),"PG-015,IFC-006",FILE:.specify/memory/Framework.md;FILE:audit-matrix.yml;FILE:apps/web/src/app/(public)/login/page.tsx;FILE:apps/web/src/components/shared/auth-background.tsx;FILE:apps/web/src/components/shared/auth-card.tsx;FILE:apps/web/src/components/shared/trust-indicators.tsx;FILE:apps/web/src/lib/auth/AuthContext.tsx;FILE:packages/validators/src/auth.ts;ENV:Reset flow designed;ENV:email template,"Response <200ms, Lighthouse ≥90, reset email sent; artifacts: page.tsx, reset-email.tsx, reset-token.ts",Completed,"Reset initiated, email sent, link working",13,ARTIFACT:apps/web/src/app/(public)/forgot-password/page.tsx;ARTIFACT:apps/web/src/components/shared/reset-email.tsx;ARTIFACT:apps/web/src/lib/shared/reset-token.ts;EVIDENCE:.specify/sprints/sprint-13/attestations/PG-019/attestation.json,GATE:lighthouse-gte-90;VALIDATE:pnpm --filter @intelliflow/web typecheck;VALIDATE:pnpm --filter @intelliflow/web test --run,60/120/240,2026-06-19,2026-06-21,100,"PG-015:FS,IFC-006:FS",
PG-020,Auth Pages,Reset Password,Platform FE (STOA-Foundation),PG-019,FILE:.specify/memory/Framework.md;FILE:audit-matrix.yml;FILE:apps/web/src/app/(public)/forgot-password/page.tsx;FILE:apps/web/src/components/shared/auth-background.tsx;FILE:apps/web/src/components/shared/auth-card.tsx;FILE:apps/web/src/components/shared/password-input.tsx;FILE:apps/web/src/components/shared/trust-indicators.tsx;FILE:packages/validators/src/auth.ts;ENV:Reset form;POLICY:password requirements,"Response <200ms, Lighthouse ≥90, password updated; artifacts: page.tsx, password-reset.tsx, password-validation.ts",Completed,"Password reset working, requirements enforced, 18 page-level tests, 91 total tests",13,ARTIFACT:apps/web/src/app/(public)/reset-password/[token]/page.tsx;ARTIFACT:apps/web/src/components/shared/password-reset.tsx;ARTIFACT:apps/web/src/lib/shared/password-validation.ts;EVIDENCE:.specify/sprints/sprint-13/attestations/PG-020/attestation.json,GATE:lighthouse-gte-90;VALIDATE:pnpm --filter @intelliflow/web typecheck;VALIDATE:pnpm --filter @intelliflow/web test --run,60/120/240,2026-06-21,2026-06-23,100,PG-019:FS,
PG-021,Auth Pages,MFA Setup,Platform FE (STOA-Foundation),"PG-015,IFC-006,IFC-098",IMPLEMENTS:FLOW-001;FILE:.specify/memory/Framework.md;FILE:audit-matrix.yml;FILE:apps/web/src/app/(public)/login/page.tsx;FILE:apps/web/src/components/auth/mfa-challenge.tsx;FILE:apps/web/src/lib/auth/AuthContext.tsx;FILE:packages/validators/src/auth.ts;FILE:apps/web/src/lib/shared/code-validator.ts;ENV:MFA options;ENV:QR code generation,"Response <200ms, Lighthouse ≥90, MFA enabled; artifacts: page.tsx, mfa-qr-generator.tsx, backup-codes.ts",Completed,"MFA setup working, QR generated, backup codes created",13,ARTIFACT:apps/web/src/app/settings/security/mfa/page.tsx;ARTIFACT:apps/web/src/components/shared/mfa-qr-generator.tsx;ARTIFACT:apps/web/src/lib/shared/backup-codes.ts;EVIDENCE:.specify/sprints/sprint-13/attestations/PG-021/attestation.json,GATE:lighthouse-gte-90;VALIDATE:pnpm --filter @intelliflow/web typecheck;VALIDATE:pnpm --filter @intelliflow/web test --run,90/180/360,2026-06-20,2026-06-24,100,"PG-015:FS,IFC-006:FS,IFC-098:FS",
PG-022,Auth Pages,MFA Verify,Platform FE (STOA-Foundation),"PG-021,PG-015",IMPLEMENTS:FLOW-001;FILE:.specify/memory/Framework.md;FILE:audit-matrix.yml;FILE:apps/web/src/app/settings/security/mfa/page.tsx;FILE:apps/web/src/components/auth/mfa-challenge.tsx;FILE:apps/web/src/components/shared/auth-background.tsx;FILE:apps/web/src/lib/auth/AuthContext.tsx;FILE:packages/validators/src/auth.ts;ENV:Verification flow;ENV:code validation,"Response <200ms, Lighthouse ≥90, verification working; artifacts: page.tsx, mfa-verification.tsx, code-validator.ts",Completed,"MFA verification working, codes validated",13,ARTIFACT:apps/web/src/app/(public)/mfa/verify/page.tsx;ARTIFACT:apps/web/src/components/shared/mfa-verification.tsx;ARTIFACT:apps/web/src/lib/shared/code-validator.ts;EVIDENCE:.specify/sprints/sprint-13/attestations/PG-022/attestation.json,GATE:lighthouse-gte-90;VALIDATE:pnpm --filter @intelliflow/web typecheck;VALIDATE:pnpm --filter @intelliflow/web test --run,60/120/240,2026-02-17,2026-02-18,100,"PG-021:FS,PG-015:FS",
PG-023,Auth Pages,Email Verification,Platform FE (STOA-Foundation),"PG-016,IFC-006",FILE:.specify/memory/Framework.md;FILE:audit-matrix.yml;FILE:apps/web/src/app/(public)/signup/page.tsx;FILE:apps/web/src/components/shared/auth-background.tsx;FILE:apps/web/src/components/shared/auth-card.tsx;FILE:apps/web/src/components/shared/trust-indicators.tsx;FILE:apps/web/src/lib/auth/AuthContext.tsx;FILE:packages/validators/src/auth.ts;ENV:Verification link;ENV:token validation,"Response <200ms, Lighthouse ≥90, email verified; artifacts: page.tsx, email-verification.tsx, account-activation.ts",Completed,"Email verification working, account activated",13,ARTIFACT:apps/web/src/app/(public)/verify-email/[token]/page.tsx;ARTIFACT:apps/web/src/components/shared/email-verification.tsx;ARTIFACT:apps/web/src/lib/shared/account-activation.ts;EVIDENCE:.specify/sprints/sprint-13/attestations/PG-023/attestation.json,GATE:lighthouse-gte-90;VALIDATE:pnpm --filter @intelliflow/web typecheck;VALIDATE:pnpm --filter @intelliflow/web test --run,60/120/240,2026-02-19,2026-02-19,100,"PG-016:FS,IFC-006:FS",
PG-024,Auth Pages,SSO Callback,Platform FE (STOA-Foundation),"PG-015,IFC-006",FILE:.specify/memory/Framework.md;FILE:audit-matrix.yml;FILE:apps/web/src/app/(public)/login/page.tsx;FILE:apps/web/src/components/shared/auth-providers.tsx;FILE:apps/web/src/components/shared/auth-background.tsx;FILE:apps/web/src/components/shared/trust-indicators.tsx;FILE:apps/web/src/lib/auth/AuthContext.tsx;FILE:apps/web/src/lib/shared/login-security.ts;FILE:apps/api/src/lib/supabase.ts;ENV:OAuth callbacks;ENV:token exchange,"Response <200ms, Lighthouse ≥90, SSO complete; artifacts: page.tsx, oauth-callback.tsx, token-exchange.ts",Completed,"SSO callback working, tokens exchanged, user logged in",13,ARTIFACT:apps/web/src/app/(public)/auth/callback/page.tsx;ARTIFACT:apps/web/src/components/shared/oauth-callback.tsx;ARTIFACT:apps/web/src/lib/shared/token-exchange.ts;EVIDENCE:.specify/sprints/sprint-13/attestations/PG-024/attestation.json,GATE:lighthouse-gte-90;VALIDATE:pnpm --filter @intelliflow/web typecheck;VALIDATE:pnpm --filter @intelliflow/web test --run,60/120/240,2026-02-20,2026-02-20,100,"PG-015:FS,IFC-006:FS",
PG-025,Billing Pages,Billing Portal,Platform BE (STOA-Foundation),"IFC-099,IFC-198",IMPLEMENTS:FLOW-048;FILE:docs/planning/prd-billing-portal.md;FILE:docs/architecture/adr/ADR-029-billing-architecture.md;FILE:.specify/memory/Framework.md;FILE:audit-matrix.yml;ENV:Stripe integration;ENV:subscription management;FILE:artifacts/reports/connector-status-dashboard.json,"Response <200ms, Lighthouse ≥90, billing functional; artifacts: page.tsx, billing-portal.tsx, stripe-portal.ts; Stripe integration must be wired to real API (test mode), not mock client",Completed,"Portal working, subscriptions managed, invoices shown",14,ARTIFACT:apps/web/src/app/billing/page.tsx;ARTIFACT:apps/web/src/components/billing/billing-portal.tsx;ARTIFACT:apps/web/src/lib/billing/stripe-portal.ts;EVIDENCE:.specify/sprints/sprint-14/attestations/PG-025/attestation.json,GATE:lighthouse-gte-90;GATE:integration-wired;VALIDATE:pnpm test,120/240/480,2026-06-28,2026-07-03,100,"IFC-099:FS,IFC-198:FS",
PG-026,Billing Pages,Checkout,Platform BE (STOA-Foundation),"PG-025,IFC-198",IMPLEMENTS:FLOW-048;FILE:docs/planning/prd-billing-portal.md;FILE:docs/architecture/adr/ADR-029-billing-architecture.md;FILE:.specify/memory/Framework.md;FILE:audit-matrix.yml;ENV:Payment form;ENV:Stripe Elements;FILE:apps/web/src/app/billing/page.tsx,"Response <200ms, Lighthouse ≥90, payments processing; artifacts: page.tsx, checkout-form.tsx, payment-processor.ts",Completed,"Checkout working, payments processing, receipts sent",14,ARTIFACT:apps/web/src/app/billing/checkout/page.tsx;ARTIFACT:apps/web/src/components/billing/checkout-form.tsx;ARTIFACT:apps/web/src/lib/billing/payment-processor.ts;EVIDENCE:.specify/sprints/sprint-14/attestations/PG-026/attestation.json,GATE:lighthouse-gte-90;VALIDATE:pnpm --filter @intelliflow/web typecheck;VALIDATE:pnpm --filter @intelliflow/web test --run,90/180/360,2026-07-01,2026-07-05,100,"PG-025:FS,IFC-198:FS",
PG-027,Billing Pages,Invoices,Platform BE (STOA-Foundation),"PG-025,IFC-198",IMPLEMENTS:FLOW-048;FILE:docs/planning/prd-billing-portal.md;FILE:docs/architecture/adr/ADR-029-billing-architecture.md;FILE:.specify/memory/Framework.md;FILE:audit-matrix.yml;ENV:Invoice list;ENV:PDF generation;FILE:apps/web/src/app/billing/page.tsx,"Response <200ms, Lighthouse ≥90, invoices displayed; artifacts: page.tsx, invoice-list.tsx, pdf-generator.ts",Completed,"Invoices listed, PDFs generating, downloads working",14,ARTIFACT:apps/web/src/app/billing/invoices/page.tsx;ARTIFACT:apps/web/src/components/billing/invoice-list.tsx;ARTIFACT:apps/web/src/lib/billing/pdf-generator.ts;EVIDENCE:.specify/sprints/sprint-14/attestations/PG-027/attestation.json,GATE:lighthouse-gte-90;VALIDATE:pnpm --filter @intelliflow/web typecheck;VALIDATE:pnpm --filter @intelliflow/web test --run,60/120/240,2026-02-20,2026-02-20,100,"PG-025:FS,IFC-198:FS",
PG-028,Billing Pages,Invoice Detail,Platform BE (STOA-Foundation),"PG-027,IFC-198",IMPLEMENTS:FLOW-048;FILE:docs/planning/prd-billing-portal.md;FILE:docs/architecture/adr/ADR-029-billing-architecture.md;FILE:.specify/memory/Framework.md;FILE:audit-matrix.yml;ENV:Invoice template;ENV:line items shown;FILE:apps/web/src/app/billing/invoices/page.tsx,"Response <200ms, Lighthouse ≥90, details displayed; artifacts: page.tsx, invoice-detail.tsx, invoice-actions.ts",Completed,"Invoice details shown, line items clear, actions available",14,ARTIFACT:apps/web/src/app/billing/invoices/[id]/page.tsx;ARTIFACT:apps/web/src/components/billing/invoice-detail.tsx;ARTIFACT:apps/web/src/lib/billing/invoice-actions.ts;EVIDENCE:.specify/sprints/sprint-14/attestations/PG-028/attestation.json,GATE:lighthouse-gte-90;VALIDATE:pnpm --filter @intelliflow/web typecheck;VALIDATE:pnpm --filter @intelliflow/web test --run,60/120/240,2026-02-22,2026-02-22,100,"PG-027:FS,IFC-198:FS",
PG-029,Billing Pages,Payment Methods,Platform BE (STOA-Foundation),"PG-025,IFC-198",IMPLEMENTS:FLOW-048;FILE:docs/planning/prd-billing-portal.md;FILE:docs/architecture/adr/ADR-029-billing-architecture.md;FILE:.specify/memory/Framework.md;FILE:audit-matrix.yml;ENV:Card management;ENV:default selection;FILE:apps/web/src/app/billing/page.tsx,"Response <200ms, Lighthouse ≥90, cards managed; artifacts: page.tsx, payment-methods.tsx, card-manager.ts",Completed,"Cards managed, defaults set, updates working",14,ARTIFACT:apps/web/src/app/billing/payment-methods/page.tsx;ARTIFACT:apps/web/src/components/billing/payment-methods.tsx;ARTIFACT:apps/web/src/lib/billing/card-manager.ts;ARTIFACT:apps/web/src/components/billing/__tests__/payment-methods.test.tsx;ARTIFACT:apps/web/src/components/billing/__tests__/payment-methods.supplementary.test.tsx;ARTIFACT:apps/web/src/app/billing/payment-methods/__tests__/page.test.tsx;ARTIFACT:apps/web/src/components/billing/index.ts;ARTIFACT:packages/adapters/src/payments/stripe/types.ts;ARTIFACT:packages/adapters/src/payments/stripe/handlers/customers.ts;ARTIFACT:apps/api/src/modules/billing/billing.router.ts;ARTIFACT:apps/api/src/modules/billing/__tests__/billing.router.test.ts;EVIDENCE:.specify/sprints/sprint-14/attestations/PG-029/attestation.json,GATE:lighthouse-gte-90;VALIDATE:pnpm --filter @intelliflow/web typecheck;VALIDATE:pnpm --filter @intelliflow/web test --run,60/120/240,2026-02-22,2026-02-22,100,"PG-025:FS,IFC-198:FS",
PG-030,Billing Pages,Subscriptions,Platform BE (STOA-Foundation),"PG-025,IFC-198",IMPLEMENTS:FLOW-048;FILE:docs/planning/prd-billing-portal.md;FILE:docs/architecture/adr/ADR-029-billing-architecture.md;FILE:.specify/memory/Framework.md;FILE:audit-matrix.yml;ENV:Plan management;ENV:upgrade/downgrade;FILE:apps/web/src/app/billing/page.tsx,"Response <200ms, Lighthouse ≥90, plans managed; artifacts: page.tsx, subscription-manager.tsx, plan-changes.ts",Completed,"Subscriptions managed, changes processed, prorations calculated",14,ARTIFACT:apps/web/src/app/billing/subscriptions/page.tsx;ARTIFACT:apps/web/src/components/billing/subscription-manager.tsx;ARTIFACT:apps/web/src/lib/billing/plan-changes.ts;EVIDENCE:.specify/sprints/sprint-14/attestations/PG-030/attestation.json,GATE:lighthouse-gte-90;VALIDATE:pnpm --filter @intelliflow/web typecheck;VALIDATE:pnpm --filter @intelliflow/web test --run,90/180/360,2026-02-22,2026-02-22,100,"PG-025:FS,IFC-198:FS",
PG-031,Billing Pages,Receipts,Platform BE (STOA-Foundation),"PG-025,IFC-198",IMPLEMENTS:FLOW-048;FILE:docs/planning/prd-billing-portal.md;FILE:docs/architecture/adr/ADR-029-billing-architecture.md;FILE:.specify/memory/Framework.md;FILE:audit-matrix.yml;ENV:Receipt list;ENV:email delivery;FILE:apps/web/src/app/billing/page.tsx,"Response <200ms, Lighthouse ≥90, receipts accessible; artifacts: page.tsx, receipt-list.tsx, receipt-emailer.ts",Completed,"Receipts listed, emails sent, downloads available",14,ARTIFACT:apps/web/src/app/billing/receipts/page.tsx;ARTIFACT:apps/web/src/components/billing/receipt-list.tsx;ARTIFACT:apps/web/src/lib/billing/receipt-emailer.ts;EVIDENCE:.specify/sprints/sprint-14/attestations/PG-031/attestation.json,GATE:lighthouse-gte-90;VALIDATE:pnpm --filter @intelliflow/web typecheck;VALIDATE:pnpm --filter @intelliflow/web test --run,60/120/240,2026-07-08,2026-07-10,100,"PG-025:FS,IFC-198:FS",
PG-032,Developer Pages,Docs Index,DevRel (STOA-Foundation),IFC-079,FILE:.specify/memory/Framework.md;FILE:audit-matrix.yml;ENV:Documentation structure;ENV:search ready;FILE:docs/docusaurus.config.js,"Response <200ms, Lighthouse ≥90, docs searchable; artifacts: page.tsx, docs-search.tsx, docs-navigation.tsx",Completed,"Docs indexed, search working, navigation clear",15,ARTIFACT:apps/web/src/app/(developer)/docs/page.tsx;ARTIFACT:apps/web/src/components/shared/docs-search.tsx;ARTIFACT:apps/web/src/components/shared/docs-navigation.tsx;EVIDENCE:.specify/sprints/sprint-15/attestations/PG-032/attestation.json,GATE:lighthouse-gte-90;VALIDATE:pnpm --filter @intelliflow/web typecheck;VALIDATE:pnpm --filter @intelliflow/web test --run,50/180/360,2026-02-09,2026-02-10,100,IFC-079:FS,
PG-033,Developer Pages,API Docs,DevRel (STOA-Foundation),PG-032,FILE:.specify/memory/Framework.md;FILE:audit-matrix.yml;ENV:API reference;ENV:interactive examples;FILE:apps/web/src/app/(developer)/docs/page.tsx,"Response <200ms, Lighthouse ≥90, examples runnable; artifacts: page.tsx, api-reference-client.tsx (Scalar built-in playground)",Completed,"API documented, examples working, playground active",15,ARTIFACT:apps/web/src/app/(developer)/docs/api/page.tsx;ARTIFACT:apps/web/src/components/shared/api-reference-client.tsx;ARTIFACT:apps/web/src/app/api/openapi/route.ts;ARTIFACT:apps/api/scripts/generate-openapi.ts;EVIDENCE:.specify/sprints/sprint-15/attestations/PG-033/attestation.json;EVIDENCE:.specify/sprints/sprint-15/attestations/PG-033/attestation.json,GATE:lighthouse-gte-90;VALIDATE:pnpm --filter @intelliflow/web typecheck;VALIDATE:pnpm --filter @intelliflow/web test --run,90/180/360,2026-07-14,2026-07-18,100,PG-032:FS,
PG-034,Developer Pages,Webhooks Docs,DevRel (STOA-Foundation),PG-032,FILE:.specify/memory/Framework.md;FILE:audit-matrix.yml;ENV:Webhook events;ENV:payload examples;FILE:apps/web/src/app/(developer)/docs/page.tsx,"Response <200ms, Lighthouse ≥90, webhooks documented; verified by: pnpm test",Completed,"Webhooks documented, examples clear, testing enabled",15,ARTIFACT:apps/web/src/app/(developer)/docs/webhooks/page.tsx;ARTIFACT:apps/web/src/components/developer/webhook-docs.tsx;ARTIFACT:apps/web/src/components/developer/webhook-tester.tsx;EVIDENCE:.specify/sprints/sprint-15/attestations/PG-034/attestation.json,VALIDATE:pnpm test;GATE:lighthouse-gte-90,90/180/360,2026-02-23,2026-02-23,100,PG-032:FS,
PG-035,Developer Pages,Changelog,DevRel (STOA-Foundation),PG-032,FILE:.specify/memory/Framework.md;FILE:audit-matrix.yml;ENV:Version history;ENV:breaking changes;FILE:apps/web/src/app/(developer)/docs/page.tsx,"Response <200ms, Lighthouse ≥90, changelog displayed; artifacts: page.tsx, changelog-display.tsx, rss-feed.ts",Completed,"Changelog shown, versions tracked, RSS feed available",15,ARTIFACT:apps/web/src/app/(developer)/docs/changelog/page.tsx;ARTIFACT:apps/web/src/components/developer/changelog-display.tsx;ARTIFACT:apps/web/src/lib/developer/rss-feed.ts;EVIDENCE:.specify/sprints/sprint-15/attestations/PG-035/attestation.json;EVIDENCE:.specify/sprints/sprint-15/attestations/PG-035/attestation.json,GATE:lighthouse-gte-90;VALIDATE:pnpm --filter @intelliflow/web typecheck;VALIDATE:pnpm --filter @intelliflow/web test --run,60/120/240,2026-07-18,2026-02-24,100,PG-032:FS,
PG-036,Developer Pages,SDK Guides,DevRel (STOA-Foundation),PG-032,FILE:.specify/memory/Framework.md;FILE:audit-matrix.yml;ENV:Language SDKs;ENV:quickstart guides;FILE:docs/company/brand/visual-identity.md;FILE:apps/web/src/app/(developer)/docs/page.tsx,"Response <200ms, Lighthouse ≥90, SDKs documented",Completed,"SDKs documented, quickstarts clear, downloads available",15,ARTIFACT:apps/web/src/app/(developer)/docs/sdk/page.tsx;ARTIFACT:apps/web/src/components/developer/sdk-guides.tsx;ARTIFACT:apps/web/src/lib/developer/sdk-downloads.ts;EVIDENCE:.specify/sprints/sprint-15/attestations/PG-036/attestation.json,GATE:lighthouse-gte-90;VALIDATE:pnpm --filter @intelliflow/web typecheck;VALIDATE:pnpm --filter @intelliflow/web test --run,90/180/360,2026-02-24,2026-02-24,100,PG-032:FS,
PG-037,Developer Pages,CLI Docs,DevRel (STOA-Foundation),PG-032,FILE:.specify/memory/Framework.md;FILE:audit-matrix.yml;ENV:CLI commands;ENV:installation guide;FILE:apps/web/src/app/(developer)/docs/page.tsx,"Response <200ms, Lighthouse ≥90, CLI documented",Completed,"CLI documented, commands listed, examples shown",15,ARTIFACT:apps/web/src/app/(developer)/docs/cli/page.tsx;ARTIFACT:apps/web/src/components/developer/cli-docs.tsx;ARTIFACT:apps/web/src/components/developer/cli-examples.tsx;EVIDENCE:.specify/sprints/sprint-15/attestations/PG-037/attestation.json;EVIDENCE:.specify/sprints/sprint-15/attestations/PG-037/attestation.json,GATE:lighthouse-gte-90;VALIDATE:pnpm --filter @intelliflow/web typecheck;VALIDATE:pnpm --filter @intelliflow/web test --run,60/120/240,2026-02-25,2026-02-25,100,PG-032:FS,
PG-038,Developer Pages,Auth Guides,DevRel (STOA-Foundation),PG-032,FILE:.specify/memory/Framework.md;FILE:audit-matrix.yml;ENV:OAuth flow;ENV:token management;FILE:docs/company/brand/visual-identity.md;FILE:apps/web/src/app/(developer)/docs/page.tsx,"Response <200ms, Lighthouse ≥90, auth explained; artifacts: page.tsx, auth-guides.tsx, auth-examples.tsx",Completed,"Auth documented, flows clear, examples provided; V8 coverage: Stmts 93.54% Branches 83.33% Functions 94.73% Lines 96.55%; 54 tests (4 files); STOA Foundation PASS",15,ARTIFACT:apps/web/src/app/(developer)/docs/auth/page.tsx;ARTIFACT:apps/web/src/components/developer/auth-guides.tsx;ARTIFACT:apps/web/src/components/developer/auth-examples.tsx;EVIDENCE:.specify/sprints/sprint-15/attestations/PG-038/attestation.json,GATE:lighthouse-gte-90;VALIDATE:pnpm --filter @intelliflow/web typecheck;VALIDATE:pnpm --filter @intelliflow/web test --run,60/120/240,2026-02-25,2026-02-25,100,PG-032:FS,
PG-039,Developer Pages,Dev Apps,DevRel (STOA-Foundation),PG-032,FILE:.specify/memory/Framework.md;FILE:audit-matrix.yml;ENV:App management;ENV:API keys;FILE:apps/web/src/app/(developer)/docs/page.tsx,"Response <200ms, Lighthouse ≥90, apps managed; artifacts: page.tsx, app-list.tsx, api-key-generator.ts",Completed,"Apps listed, keys generated, settings configured",15,ARTIFACT:apps/web/src/app/(developer)/developers/apps/page.tsx;ARTIFACT:apps/web/src/components/developer/app-list.tsx;ARTIFACT:apps/web/src/lib/developer/api-key-generator.ts;EVIDENCE:.specify/sprints/sprint-15/attestations/PG-039/attestation.json,GATE:lighthouse-gte-90;VALIDATE:pnpm --filter @intelliflow/web typecheck;VALIDATE:pnpm --filter @intelliflow/web test --run,90/180/360,2026-02-23,2026-02-23,100,PG-032:FS,
PG-040,Developer Pages,New Dev App,DevRel (STOA-Foundation),PG-039,FILE:.specify/memory/Framework.md;FILE:audit-matrix.yml;ENV:App creation form;ENV:OAuth setup;FILE:apps/web/src/app/(developer)/developers/apps/page.tsx,"Response <200ms, Lighthouse ≥90, apps created; artifacts: page.tsx, app-creator.tsx, oauth-setup.ts",Completed,"Apps created, OAuth configured, webhooks set",15,ARTIFACT:apps/web/src/app/(developer)/developers/apps/new/page.tsx;ARTIFACT:apps/web/src/components/developer/app-creator.tsx;ARTIFACT:apps/web/src/lib/developer/oauth-setup.ts;EVIDENCE:.specify/sprints/sprint-15/attestations/PG-040/attestation.json,GATE:lighthouse-gte-90;VALIDATE:pnpm --filter @intelliflow/web typecheck;VALIDATE:pnpm --filter @intelliflow/web test --run,60/120/240,2026-02-25,2026-02-27,100,PG-039:FS,
PG-041,Developer Pages,Dev App Detail,DevRel (STOA-Foundation),PG-039,FILE:.specify/memory/Framework.md;FILE:audit-matrix.yml;ENV:App dashboard;ENV:usage metrics;FILE:apps/web/src/app/(developer)/developers/apps/page.tsx,"Response <200ms, Lighthouse ≥90, metrics displayed; artifacts: page.tsx, app-dashboard.tsx, app-metrics.tsx",Completed,"App details shown, metrics displayed, logs available",15,ARTIFACT:apps/web/src/app/(developer)/developers/apps/[id]/page.tsx;ARTIFACT:apps/web/src/components/developer/app-dashboard.tsx;ARTIFACT:apps/web/src/components/developer/app-metrics.tsx;EVIDENCE:.specify/sprints/sprint-15/attestations/PG-041/attestation.json,GATE:lighthouse-gte-90;VALIDATE:pnpm --filter @intelliflow/web typecheck;VALIDATE:pnpm --filter @intelliflow/web test --run,60/120/240,2026-02-24,2026-02-24,100,PG-039:FS,
PG-042,Developer Pages,Dev App Edit,DevRel (STOA-Foundation),PG-041,FILE:.specify/memory/Framework.md;FILE:audit-matrix.yml;ENV:Settings form;ENV:webhook config;FILE:apps/web/src/app/(developer)/developers/apps/[id]/page.tsx,"Response <200ms, Lighthouse ≥90, settings updated; artifacts: page.tsx, app-editor.tsx, webhook-config.tsx",Completed,"Settings editable, webhooks configured, changes saved",15,ARTIFACT:apps/web/src/app/(developer)/developers/apps/[id]/edit/page.tsx;ARTIFACT:apps/web/src/components/developer/app-editor.tsx;ARTIFACT:apps/web/src/components/developer/webhook-config.tsx;EVIDENCE:.specify/sprints/sprint-15/attestations/PG-042/attestation.json,GATE:lighthouse-gte-90;VALIDATE:pnpm --filter @intelliflow/web typecheck;VALIDATE:pnpm --filter @intelliflow/web test --run,60/120/240,2026-02-27,2026-02-27,100,PG-041:FS,
PG-043,Support Pages,Help Center Index,Support Eng (STOA-Domain),IFC-076,FILE:.specify/memory/Framework.md;FILE:audit-matrix.yml;ENV:Help structure;POLICY:categories defined;FILE:artifacts/reports/accessibility-audit.json,"Response <200ms, Lighthouse ≥90, help searchable; artifacts: page.tsx, help-categories.tsx, help-search.tsx",Completed,"Help center live, categories organized, search working",16,ARTIFACT:apps/web/src/app/help-center/(list)/page.tsx;ARTIFACT:apps/web/src/components/support/help-categories.tsx;ARTIFACT:apps/web/src/components/support/help-search.tsx;EVIDENCE:.specify/sprints/sprint-16/attestations/PG-043/attestation.json,GATE:lighthouse-gte-90;VALIDATE:pnpm --filter @intelliflow/web typecheck;VALIDATE:pnpm --filter @intelliflow/web test --run,90/180/360,2026-02-28,2026-02-28,100,IFC-076:FS,
PG-044,Support Pages,Help Search,Support Eng (STOA-Domain),PG-043,FILE:.specify/memory/Framework.md;FILE:audit-matrix.yml;ENV:Search algorithm;ENV:relevance ranking;FILE:apps/web/src/app/help-center/(list)/page.tsx,"Response <200ms, Lighthouse ≥90, results relevant; artifacts: page.tsx, search-algorithm.tsx; uses shared SearchFilterBar (DRY)",Completed,"Search working, results relevant, filters via shared SearchFilterBar",16,ARTIFACT:apps/web/src/app/help-center/search/page.tsx;ARTIFACT:apps/web/src/components/support/search-algorithm.tsx;EVIDENCE:.specify/sprints/sprint-16/attestations/PG-044/attestation.json;SPEC:.specify/sprints/sprint-16/specifications/PG-044-spec.md;PLAN:.specify/sprints/sprint-16/planning/PG-044-plan.md,GATE:lighthouse-gte-90;VALIDATE:pnpm --filter @intelliflow/web typecheck;VALIDATE:pnpm --filter @intelliflow/web test --run,60/120/240,2026-03-07,2026-03-07,100,PG-043:FS,
PG-045,Support Pages,Help Article,Support Eng (STOA-Domain),PG-043,FILE:.specify/memory/Framework.md;FILE:audit-matrix.yml;ENV:Article template;ENV:feedback widget;FILE:apps/web/src/app/help-center/(list)/page.tsx,"Response <200ms, Lighthouse ≥90, articles displayed; artifacts: page.tsx, article-renderer.tsx, feedback-widget.tsx",Completed,"Articles rendered, feedback collected, related shown",16,ARTIFACT:apps/web/src/app/help-center/[article]/page.tsx;ARTIFACT:apps/web/src/components/support/article-renderer.tsx;ARTIFACT:apps/web/src/components/support/feedback-widget.tsx;EVIDENCE:.specify/sprints/sprint-16/attestations/PG-045/attestation.json;SPEC:.specify/sprints/sprint-16/specifications/PG-045-spec.md;PLAN:.specify/sprints/sprint-16/planning/PG-045-plan.md,GATE:lighthouse-gte-90;VALIDATE:pnpm --filter @intelliflow/web typecheck;VALIDATE:pnpm --filter @intelliflow/web test --run,60/120/240,2026-03-08,2026-03-08,100,PG-043:FS,
PG-046,Support Pages,Support Tickets,Support Eng (STOA-Domain),IFC-093,FILE:.specify/memory/Framework.md;FILE:audit-matrix.yml;ENV:Ticket list;ENV:filters;ENV:SLA display;FILE:apps/web/lib/tickets/sla-notifications.test.ts,"Response <200ms, Lighthouse ≥90, tickets listed; artifacts: page.tsx, ticket-list.tsx, sla-display.tsx",Completed,"Tickets listed, filters working, SLA shown",16,ARTIFACT:apps/web/src/app/support/tickets/(list)/page.tsx;ARTIFACT:apps/web/src/components/tickets/ticket-list.tsx;ARTIFACT:apps/web/src/components/tickets/sla-display.tsx;EVIDENCE:.specify/sprints/sprint-16/attestations/PG-046/attestation.json;SPEC:.specify/sprints/sprint-16/specifications/PG-046-spec.md;PLAN:.specify/sprints/sprint-16/planning/PG-046-plan.md,GATE:lighthouse-gte-90;VALIDATE:pnpm --filter @intelliflow/web typecheck;VALIDATE:pnpm --filter @intelliflow/web test --run,90/180/360,2026-03-02,2026-03-02,100,IFC-093:FS,
PG-047,Support Pages,New Ticket,Support Eng (STOA-Domain),PG-046,FILE:.specify/memory/Framework.md;FILE:audit-matrix.yml;ENV:Ticket form;ENV:category selection;FILE:apps/web/src/app/support/tickets/(list)/page.tsx,"Response <200ms, Lighthouse ≥90, tickets created; artifacts: page.tsx, ticket-form.tsx, file-uploader.tsx",Completed,"Tickets created, categories working, attachments uploaded",16,ARTIFACT:apps/web/src/app/support/tickets/new/page.tsx;ARTIFACT:apps/web/src/components/tickets/ticket-form.tsx;ARTIFACT:apps/web/src/components/tickets/file-uploader.tsx;EVIDENCE:.specify/sprints/sprint-16/attestations/PG-047/attestation.json;SPEC:.specify/sprints/sprint-16/specifications/PG-047-spec.md;PLAN:.specify/sprints/sprint-16/planning/PG-047-plan.md,GATE:lighthouse-gte-90;VALIDATE:pnpm --filter @intelliflow/web typecheck;VALIDATE:pnpm --filter @intelliflow/web test --run,60/120/240,2026-03-08,2026-03-08,100,PG-046:FS,
PG-048,Support Pages,Ticket Detail,Support Eng (STOA-Domain),PG-046,FILE:.specify/memory/Framework.md;FILE:audit-matrix.yml;ENV:Ticket thread;ENV:status updates;FILE:apps/web/src/app/support/tickets/(list)/page.tsx,"Response <200ms, Lighthouse ≥90, details shown; artifacts: page.tsx, ticket-thread.tsx, status-updater.tsx",Completed,"Details displayed, thread working, updates real-time; V8 coverage: Stmts 95.45% Branches 93.22% Functions 100% Lines 97.67%; 158 tests (48 new + 110 regression); STOA PASS",16,ARTIFACT:apps/web/src/app/support/tickets/[id]/page.tsx;ARTIFACT:apps/web/src/components/tickets/ticket-thread.tsx;ARTIFACT:apps/web/src/components/tickets/status-updater.tsx;EVIDENCE:.specify/sprints/sprint-16/attestations/PG-048/attestation.json;SPEC:.specify/sprints/sprint-16/specifications/PG-048-spec.md;PLAN:.specify/sprints/sprint-16/planning/PG-048-plan.md;ATTESTATION:.specify/sprints/sprint-16/attestations/PG-048/attestation.json,GATE:lighthouse-gte-90;VALIDATE:pnpm --filter @intelliflow/web typecheck;VALIDATE:pnpm --filter @intelliflow/web test --run,60/120/240,2026-03-08,2026-03-08,100,PG-046:FS,
PG-049,Support Pages,Support Chat,Support Eng (STOA-Domain),IFC-036,FILE:.specify/memory/Framework.md;FILE:audit-matrix.yml;ENV:Chat widget;ENV:agent routing;FILE:artifacts/misc/webhook-test-results.json,"Response <200ms, Lighthouse ≥90, chat functional; artifacts: page.tsx, chat-widget.tsx, agent-router.ts",Backlog,"Chat working, agents connected, messages flowing",22,ARTIFACT:apps/web/src/app/support/chat/page.tsx;ARTIFACT:apps/web/src/components/support/chat-widget.tsx;ARTIFACT:apps/web/src/lib/support/agent-router.ts;EVIDENCE:.specify/sprints/sprint-22/attestations/PG-049/context_ack.json,GATE:lighthouse-gte-90;VALIDATE:pnpm --filter @intelliflow/web typecheck;VALIDATE:pnpm --filter @intelliflow/web test --run,120/240/480,2026-10-18,2026-10-24,0,IFC-036:FS,
PG-050,Legal Pages,Privacy Policy,Legal Counsel (STOA-Foundation),IFC-058,FILE:.specify/memory/Framework.md;FILE:audit-matrix.yml;POLICY:Privacy content approved;ENV:versioning ready;FILE:docs/shared/review-checklist.md;FILE:docs/operations/pr-checklist.md;FILE:docs/compliance-and-governance/compliance/gdpr-compliance-checklist.csv,"Response <200ms, Lighthouse ≥90, policy displayed; artifacts: page.tsx, privacy-content.md, consent-tracker.ts",Completed,"Policy published, versions tracked, consent logged",17,ARTIFACT:apps/web/src/app/(public)/privacy/page.tsx;ARTIFACT:docs/shared/privacy-content.md;ARTIFACT:apps/web/src/lib/legal/consent-tracker.ts;EVIDENCE:.specify/sprints/sprint-17/attestations/PG-050/attestation.json,GATE:lighthouse-gte-90;VALIDATE:pnpm --filter @intelliflow/web typecheck;VALIDATE:pnpm --filter @intelliflow/web test --run,60/120/240,2026-08-09,2026-08-11,100,IFC-058:FS,
PG-051,Legal Pages,Terms of Service,Legal Counsel (STOA-Foundation),PG-050,FILE:.specify/memory/Framework.md;FILE:audit-matrix.yml;POLICY:Terms approved;ENV:acceptance tracking;FILE:docs/architecture/hex-boundaries.md;FILE:apps/web/src/app/(public)/privacy/page.tsx,"Response <200ms, Lighthouse ≥90, terms displayed; artifacts: page.tsx, terms-content.md, acceptance-tracker.ts",Completed,"Terms published, acceptance tracked, updates notified",17,ARTIFACT:apps/web/src/app/(public)/terms/page.tsx;ARTIFACT:docs/shared/terms-content.md;ARTIFACT:apps/web/src/lib/legal/acceptance-tracker.ts;EVIDENCE:.specify/sprints/sprint-17/attestations/PG-051/attestation.json,GATE:lighthouse-gte-90;VALIDATE:pnpm --filter @intelliflow/web typecheck;VALIDATE:pnpm --filter @intelliflow/web test --run,60/120/240,2026-04-12,2026-08-13,100,PG-050:FS,
PG-052,Legal Pages,Cookie Policy,Legal Counsel (STOA-Foundation),PG-050,FILE:.specify/memory/Framework.md;FILE:audit-matrix.yml;ENV:Cookie policy written;ENV:banner ready;FILE:apps/web/src/app/(public)/privacy/page.tsx,"Response <200ms, Lighthouse ≥90, policy shown; artifacts: page.tsx, cookie-content.md, cookie-banner.tsx",Completed,"Policy displayed, banner working, preferences saved",17,ARTIFACT:apps/web/src/app/(public)/cookies/page.tsx;ARTIFACT:docs/shared/cookie-content.md;EVIDENCE:.specify/sprints/sprint-17/attestations/PG-052/attestation.json,GATE:lighthouse-gte-90;VALIDATE:pnpm --filter @intelliflow/web typecheck;VALIDATE:pnpm --filter @intelliflow/web test --run,60/120/240,2026-08-12,2026-08-14,100,PG-050:FS,
PG-053,Legal Pages,Data Processing Addendum,Legal Counsel (STOA-Foundation),"PG-050,PG-051",FILE:.specify/memory/Framework.md;FILE:audit-matrix.yml;ENV:DPA template;ENV:signature process;FILE:docs/architecture/adr/ADR-007-data-governance.md;FILE:docs/shared/review-checklist.md;FILE:docs/operations/pr-checklist.md;FILE:apps/web/src/app/(public)/privacy/page.tsx;FILE:apps/web/src/lib/legal/legal-content-parser.ts,"Response <200ms, Lighthouse ≥90, DPA available; artifacts: page.tsx, dpa-template.pdf, signature-handler.ts",Completed,"DPA downloadable, signatures working, records kept",17,ARTIFACT:apps/web/src/app/(public)/dpa/page.tsx;ARTIFACT:docs/compliance-and-governance/compliance/dpa-template.pdf;ARTIFACT:apps/web/src/lib/legal/signature-handler.ts;EVIDENCE:.specify/sprints/sprint-17/attestations/PG-053/attestation.json,GATE:lighthouse-gte-90;VALIDATE:pnpm --filter @intelliflow/web typecheck;VALIDATE:pnpm --filter @intelliflow/web test --run,90/180/360,2026-04-13,2026-04-13,100,"PG-050:FS,PG-051:FS",
PG-054,Legal Pages,Acceptable Use Policy,Legal Counsel (STOA-Foundation),PG-050,FILE:.specify/memory/Framework.md;FILE:audit-matrix.yml;ENV:AUP content;ENV:violation process;FILE:apps/web/src/app/(public)/privacy/page.tsx,"Response <200ms, Lighthouse ≥90, AUP displayed; artifacts: page.tsx, aup-content.md, violation-tracker.ts",Completed,"AUP published, violations tracked, enforcement ready",17,ARTIFACT:apps/web/src/app/(public)/aup/page.tsx;ARTIFACT:docs/shared/aup-content.md;ARTIFACT:apps/web/src/lib/legal/violation-tracker.ts;EVIDENCE:.specify/sprints/sprint-17/attestations/PG-054/attestation.json,GATE:lighthouse-gte-90;VALIDATE:pnpm --filter @intelliflow/web typecheck;VALIDATE:pnpm --filter @intelliflow/web test --run,60/120/240,2026-08-15,2026-08-17,100,PG-050:FS,
PG-055,System Pages,404 Not Found,SRE (STOA-Foundation),IFC-076,FILE:.specify/memory/Framework.md;FILE:audit-matrix.yml;ENV:404 design;ENV:search suggestions;FILE:artifacts/reports/accessibility-audit.json,"Response <200ms, Lighthouse ≥90, suggestions shown; artifacts: page.tsx, search-suggestions.tsx, error-analytics.ts",Completed,"404 page working, search suggested, home linked",17,ARTIFACT:apps/web/src/app/404/page.tsx;ARTIFACT:apps/web/src/components/status/search-suggestions.tsx;ARTIFACT:apps/web/src/lib/status/error-analytics.ts;EVIDENCE:.specify/sprints/sprint-17/attestations/PG-055/attestation.json,GATE:lighthouse-gte-90;VALIDATE:pnpm --filter @intelliflow/web typecheck;VALIDATE:pnpm --filter @intelliflow/web test --run,60/120/240,2026-08-16,2026-08-18,100,IFC-076:FS,
PG-056,System Pages,500 Error,SRE (STOA-Foundation),PG-055,FILE:.specify/memory/Framework.md;FILE:audit-matrix.yml;ENV:Error page;ENV:incident creation;FILE:apps/web/src/app/404/page.tsx,"Response <200ms, Lighthouse ≥90, errors logged; artifacts: page.tsx, incident-creator.ts, error-notifier.ts",Completed,"Error page shown, incidents created, team notified",17,ARTIFACT:apps/web/src/app/500/page.tsx;ARTIFACT:apps/web/src/lib/status/incident-creator.ts;ARTIFACT:apps/web/src/lib/status/error-notifier.ts;EVIDENCE:.specify/sprints/sprint-17/attestations/PG-056/attestation.json;SPEC:.specify/sprints/sprint-17/specifications/PG-056-spec.md;PLAN:.specify/sprints/sprint-17/planning/PG-056-plan.md,GATE:lighthouse-gte-90;VALIDATE:pnpm --filter @intelliflow/web typecheck;VALIDATE:pnpm --filter @intelliflow/web test --run,60/120/240,2026-08-17,2026-08-19,100,PG-055:FS,
PG-057,System Pages,Maintenance,SRE (STOA-Foundation),PG-055,FILE:.specify/memory/Framework.md;FILE:audit-matrix.yml;ENV:Maintenance mode;ENV:status updates;FILE:apps/web/src/app/404/page.tsx,"Response <200ms, Lighthouse ≥90, status shown; artifacts: page.tsx, maintenance-mode.ts, status-updater.ts",Completed,"Maintenance page active, updates displayed, ETA shown",17,ARTIFACT:apps/web/src/app/maintenance/page.tsx;ARTIFACT:apps/web/src/lib/status/maintenance-mode.ts;ARTIFACT:apps/web/src/lib/status/status-updater.ts;EVIDENCE:.specify/sprints/sprint-17/attestations/PG-057/attestation.json;SPEC:.specify/sprints/sprint-17/specifications/PG-057-spec.md;PLAN:.specify/sprints/sprint-17/planning/PG-057-plan.md,GATE:lighthouse-gte-90;VALIDATE:pnpm --filter @intelliflow/web typecheck;VALIDATE:pnpm --filter @intelliflow/web test --run,60/120/240,2026-04-13,2026-04-14,100,PG-055:FS,
PG-058,Core CRM,Dashboard,CRM FE+BE (STOA-Foundation),"IFC-089,IFC-091,IFC-095",IMPLEMENTS:FLOW-002;FILE:.specify/memory/Framework.md;FILE:audit-matrix.yml;POLICY:KPIs defined;ENV:widgets designed;FILE:apps/api/src/modules/contact/contact.router.ts;FILE:apps/api/src/modules/opportunity/opportunity.router.ts;FILE:tools/scripts/model-evaluation.ipynb,"Response <200ms, Lighthouse ≥90, real-time data; artifacts: page.tsx, kpi-calculator.ts, context_ack.json",Backlog,"Dashboard live, KPIs displayed, updates real-time",18,ARTIFACT:apps/web/src/app/dashboard/page.tsx;ARTIFACT:apps/web/src/lib/dashboard/kpi-calculator.ts;EVIDENCE:.specify/sprints/sprint-18/attestations/PG-058/context_ack.json,GATE:lighthouse-gte-90;VALIDATE:pnpm --filter @intelliflow/web typecheck;VALIDATE:pnpm --filter @intelliflow/web test --run,120/240/480,2026-08-23,2026-08-29,0,"IFC-089:FS,IFC-091:FS,IFC-095:FS",
PG-059,Core CRM,Leads List,CRM FE+BE (STOA-Foundation),IFC-089,IMPLEMENTS:FLOW-003;FILE:.specify/memory/Framework.md;FILE:audit-matrix.yml;ENV:List view;ENV:filters;ENV:bulk actions;FILE:apps/api/src/modules/contact/contact.router.ts,"Response <200ms, Lighthouse ≥90, pagination working; artifacts: page.tsx, lead-list.tsx, bulk-actions.ts",Completed,"Leads listed, filters working, actions functional",18,ARTIFACT:apps/web/src/app/leads/(list)/page.tsx;ARTIFACT:apps/web/src/components/leads/lead-list.tsx;ARTIFACT:apps/web/src/lib/leads/bulk-actions.ts;ARTIFACT:apps/web/src/lib/leads/lead-types.ts;EVIDENCE:.specify/sprints/sprint-18/attestations/PG-059/attestation.json,GATE:lighthouse-gte-90;VALIDATE:pnpm --filter @intelliflow/web typecheck;VALIDATE:pnpm --filter @intelliflow/web test --run,90/180/360,2026-04-19,2026-04-19,100,IFC-089:FS,
PG-060,Core CRM,New Lead,CRM FE+BE (STOA-Foundation),PG-059,FILE:.specify/memory/Framework.md;FILE:audit-matrix.yml;ENV:Lead form;ENV:validation;ENV:enrichment;FILE:apps/web/src/app/leads/(list)/new/page.tsx,"Response <200ms, Lighthouse ≥90, leads created; artifacts: page.tsx, lead-enrichment.ts",Completed,"Leads created, enrichment working, assignment automated",18,ARTIFACT:apps/web/src/app/leads/(list)/new/page.tsx;ARTIFACT:apps/web/src/lib/leads/lead-enrichment.ts;EVIDENCE:.specify/sprints/sprint-18/attestations/PG-060/context_ack.json,GATE:lighthouse-gte-90;VALIDATE:pnpm --filter @intelliflow/web typecheck;VALIDATE:pnpm --filter @intelliflow/web test --run,60/120/240,2026-08-27,2026-08-31,100,PG-059:FS,
PG-061,Core CRM,Lead Detail,CRM FE+BE (STOA-Foundation),PG-059,FILE:.specify/memory/Framework.md;FILE:audit-matrix.yml;ENV:Lead 360 view;ENV:timeline;ENV:actions;FILE:apps/web/src/app/(crm)/leads/page.tsx,"Response <200ms, Lighthouse ≥90, details complete; artifacts: page.tsx, lead-detail.tsx, lead-timeline.tsx",Completed,"Details shown, timeline displayed, actions available",18,ARTIFACT:apps/web/src/app/leads/[id]/page.tsx;ARTIFACT:apps/web/src/components/leads/lead-detail.tsx;ARTIFACT:apps/web/src/components/leads/lead-timeline.tsx;EVIDENCE:.specify/sprints/sprint-18/attestations/PG-061/context_ack.json,GATE:lighthouse-gte-90;VALIDATE:pnpm --filter @intelliflow/web typecheck;VALIDATE:pnpm --filter @intelliflow/web test --run,90/180/360,2026-08-28,2026-09-03,0,PG-059:FS,
PG-062,Core CRM,Edit Lead,CRM FE+BE (STOA-Foundation),PG-061,FILE:.specify/memory/Framework.md;FILE:audit-matrix.yml;ENV:Edit form;ENV:change tracking;FILE:apps/web/src/app/(crm)/leads/[id]/page.tsx,"Response <200ms, Lighthouse ≥90, updates saved; artifacts: page.tsx, lead-editor.tsx, change-tracker.ts",Backlog,"Edits working, changes tracked, history maintained",18,ARTIFACT:apps/web/src/app/leads/[id]/edit/page.tsx;ARTIFACT:apps/web/src/components/leads/lead-editor.tsx;ARTIFACT:apps/web/src/lib/leads/change-tracker.ts;EVIDENCE:.specify/sprints/sprint-18/attestations/PG-062/context_ack.json,GATE:lighthouse-gte-90;VALIDATE:pnpm --filter @intelliflow/web typecheck;VALIDATE:pnpm --filter @intelliflow/web test --run,60/120/240,2026-08-30,2026-09-01,0,PG-061:FS,
PG-063,Core CRM,Import Leads,CRM FE+BE (STOA-Foundation),PG-059,FILE:.specify/memory/Framework.md;FILE:audit-matrix.yml;ENV:CSV import;ENV:mapping;ENV:validation;FILE:apps/web/src/app/(crm)/leads/page.tsx,"Response <200ms, Lighthouse ≥90, imports processed; artifacts: page.tsx, csv-importer.tsx, field-mapper.ts",Backlog,"Imports working, mapping functional, validation active",18,ARTIFACT:apps/web/src/app/leads/(list)/import/page.tsx;ARTIFACT:apps/web/src/components/leads/csv-importer.tsx;ARTIFACT:apps/web/src/lib/leads/field-mapper.ts;EVIDENCE:.specify/sprints/sprint-18/attestations/PG-063/context_ack.json,GATE:lighthouse-gte-90;VALIDATE:pnpm --filter @intelliflow/web typecheck;VALIDATE:pnpm --filter @intelliflow/web test --run,90/180/360,2026-09-01,2026-09-05,0,PG-059:FS,
PG-064,Core CRM,Contacts List,CRM FE+BE (STOA-Foundation),IFC-089,FILE:.specify/memory/Framework.md;FILE:audit-matrix.yml;ENV:Contact list;ENV:search;ENV:segments;FILE:apps/api/src/modules/contact/contact.router.ts;FILE:docs/design/sitemap.md;FILE:docs/design/ui-flow-mapping.md;FILE:docs/design/page-registry.md;FILE:apps/project-tracker/docs/metrics/_global/flows/flow-index.md,"Response <200ms, Lighthouse ≥90, search fast; artifacts: page.tsx, contact-list.tsx, contact-search.ts",Backlog,"Contacts listed, search working, segments functional",19,ARTIFACT:apps/web/src/app/contacts/(list)/page.tsx;ARTIFACT:apps/web/src/components/contacts/contact-list.tsx;ARTIFACT:apps/web/src/lib/contacts/contact-search.ts;EVIDENCE:.specify/sprints/sprint-19/attestations/PG-064/context_ack.json,GATE:lighthouse-gte-90;VALIDATE:pnpm --filter @intelliflow/web typecheck;VALIDATE:pnpm --filter @intelliflow/web test --run,90/180/360,2026-09-06,2026-09-12,0,IFC-089:FS,
PG-065,Core CRM,Contact 360,CRM FE+BE (STOA-Foundation),IFC-090,FILE:.specify/memory/Framework.md;FILE:audit-matrix.yml;POLICY:Complete view;ENV:all related data;FILE:artifacts/lighthouse/lighthouse-360-report.html;FILE:docs/design/sitemap.md;FILE:docs/design/ui-flow-mapping.md;FILE:docs/design/page-registry.md;FILE:apps/project-tracker/docs/metrics/_global/flows/flow-index.md,"Response <200ms, Lighthouse ≥90, data complete; artifacts: page.tsx, contact-360.tsx, contact-insights.tsx",Backlog,"360 view complete, all data shown, insights displayed",19,ARTIFACT:apps/web/src/app/contacts/[id]/page.tsx;ARTIFACT:apps/web/src/components/contacts/contact-360.tsx;ARTIFACT:apps/web/src/components/contacts/contact-insights.tsx;EVIDENCE:.specify/sprints/sprint-19/attestations/PG-065/context_ack.json,GATE:lighthouse-gte-90;VALIDATE:pnpm --filter @intelliflow/web typecheck;VALIDATE:pnpm --filter @intelliflow/web test --run,120/240/480,2026-09-08,2026-09-14,0,IFC-090:FS,
PG-066,Core CRM,Edit Contact,CRM FE+BE (STOA-Foundation),PG-065,FILE:.specify/memory/Framework.md;FILE:audit-matrix.yml;ENV:Contact editor;ENV:merge detection;FILE:apps/web/src/app/(crm)/contacts/[id]/page.tsx;FILE:docs/design/sitemap.md;FILE:docs/design/ui-flow-mapping.md;FILE:docs/design/page-registry.md;FILE:apps/project-tracker/docs/metrics/_global/flows/flow-index.md,"Response <200ms, Lighthouse ≥90, edits saved; artifacts: page.tsx, contact-editor.tsx, duplicate-detector.ts",Backlog,"Edits working, duplicates detected, merge suggested",19,ARTIFACT:apps/web/src/app/contacts/[id]/edit/page.tsx;ARTIFACT:apps/web/src/components/contacts/contact-editor.tsx;ARTIFACT:apps/web/src/lib/contacts/duplicate-detector.ts;EVIDENCE:.specify/sprints/sprint-19/attestations/PG-066/context_ack.json,GATE:lighthouse-gte-90;VALIDATE:pnpm --filter @intelliflow/web typecheck;VALIDATE:pnpm --filter @intelliflow/web test --run,60/120/240,2026-09-10,2026-09-12,0,PG-065:FS,
PG-067,Core CRM,Import Contacts,CRM FE+BE (STOA-Foundation),PG-064,FILE:.specify/memory/Framework.md;FILE:audit-matrix.yml;ENV:Batch import;ENV:deduplication;FILE:apps/web/src/app/(crm)/contacts/page.tsx;FILE:docs/design/sitemap.md;FILE:docs/design/ui-flow-mapping.md;FILE:docs/design/page-registry.md;FILE:apps/project-tracker/docs/metrics/_global/flows/flow-index.md,"Response <200ms, Lighthouse ≥90, imports clean; artifacts: page.tsx, contact-importer.tsx, deduplicator.ts",Backlog,"Imports working, duplicates handled, data clean",19,ARTIFACT:apps/web/src/app/contacts/(list)/import/page.tsx;ARTIFACT:apps/web/src/components/contacts/contact-importer.tsx;ARTIFACT:apps/web/src/lib/contacts/deduplicator.ts;EVIDENCE:.specify/sprints/sprint-19/attestations/PG-067/context_ack.json,GATE:lighthouse-gte-90;VALIDATE:pnpm --filter @intelliflow/web typecheck;VALIDATE:pnpm --filter @intelliflow/web test --run,90/180/360,2026-09-11,2026-09-15,0,PG-064:FS,
PG-068,Core CRM,Merge Contacts,CRM FE+BE (STOA-Foundation),PG-064,FILE:.specify/memory/Framework.md;FILE:audit-matrix.yml;ENV:Merge UI;ENV:conflict resolution;FILE:docs/operations/pr-checklist.md;FILE:apps/web/src/app/(crm)/contacts/page.tsx;FILE:docs/design/sitemap.md;FILE:docs/design/ui-flow-mapping.md;FILE:docs/design/page-registry.md;FILE:apps/project-tracker/docs/metrics/_global/flows/flow-index.md,"Response <200ms, Lighthouse ≥90, merges completed; artifacts: page.tsx, merge-wizard.tsx, conflict-resolver.ts",Backlog,"Merges working, conflicts resolved, history preserved",19,ARTIFACT:apps/web/src/app/contacts/(list)/merge/page.tsx;ARTIFACT:apps/web/src/components/contacts/merge-wizard.tsx;ARTIFACT:apps/web/src/lib/contacts/conflict-resolver.ts;EVIDENCE:.specify/sprints/sprint-19/attestations/PG-068/context_ack.json,GATE:lighthouse-gte-90;VALIDATE:pnpm --filter @intelliflow/web typecheck;VALIDATE:pnpm --filter @intelliflow/web test --run,90/180/360,2026-09-13,2026-09-17,0,PG-064:FS,
PG-069,Core CRM,Accounts List,CRM FE+BE (STOA-Foundation),IFC-089,FILE:.specify/memory/Framework.md;FILE:audit-matrix.yml;ENV:Account hierarchy;ENV:relationships;FILE:apps/api/src/modules/contact/contact.router.ts;FILE:docs/design/sitemap.md;FILE:docs/design/ui-flow-mapping.md;FILE:docs/design/page-registry.md;FILE:apps/project-tracker/docs/metrics/_global/flows/flow-index.md,"Response <200ms, Lighthouse ≥90, hierarchy shown; artifacts: page.tsx, account-list.tsx, hierarchy-view.tsx",Backlog,"Accounts listed, hierarchy displayed, relationships linked",19,ARTIFACT:apps/web/src/app/accounts/(list)/page.tsx;ARTIFACT:apps/web/src/components/accounts/account-list.tsx;ARTIFACT:apps/web/src/components/accounts/hierarchy-view.tsx;EVIDENCE:.specify/sprints/sprint-19/attestations/PG-069/context_ack.json,GATE:lighthouse-gte-90;VALIDATE:pnpm --filter @intelliflow/web typecheck;VALIDATE:pnpm --filter @intelliflow/web test --run,90/180/360,2026-09-14,2026-09-18,0,IFC-089:FS,
PG-070,Core CRM,Account Detail,CRM FE+BE (STOA-Foundation),PG-069,FILE:.specify/memory/Framework.md;FILE:audit-matrix.yml;ENV:Account 360;ENV:subsidiaries;ENV:contacts;FILE:apps/web/src/app/(crm)/accounts/page.tsx;FILE:docs/design/sitemap.md;FILE:docs/design/ui-flow-mapping.md;FILE:docs/design/page-registry.md;FILE:apps/project-tracker/docs/metrics/_global/flows/flow-index.md,"Response <200ms, Lighthouse ≥90, complete view; artifacts: page.tsx, account-detail.tsx, subsidiary-list.tsx",Backlog,"Details complete, subsidiaries shown, contacts linked",20,ARTIFACT:apps/web/src/app/accounts/[id]/page.tsx;ARTIFACT:apps/web/src/components/accounts/account-detail.tsx;ARTIFACT:apps/web/src/components/accounts/subsidiary-list.tsx;EVIDENCE:.specify/sprints/sprint-20/attestations/PG-070/context_ack.json,GATE:lighthouse-gte-90;VALIDATE:pnpm --filter @intelliflow/web typecheck;VALIDATE:pnpm --filter @intelliflow/web test --run,90/180/360,2026-09-20,2026-09-26,0,PG-069:FS,
PG-071,Core CRM,Edit Account,CRM FE+BE (STOA-Foundation),PG-070,FILE:.specify/memory/Framework.md;FILE:audit-matrix.yml;ENV:Account editor;ENV:parent selection;FILE:apps/web/src/app/(crm)/accounts/[id]/page.tsx;FILE:docs/design/sitemap.md;FILE:docs/design/ui-flow-mapping.md;FILE:docs/design/page-registry.md;FILE:apps/project-tracker/docs/metrics/_global/flows/flow-index.md,"Response <200ms, Lighthouse ≥90, updates saved; artifacts: page.tsx, account-editor.tsx, parent-selector.tsx",Backlog,"Edits working, hierarchy updated, changes tracked",20,ARTIFACT:apps/web/src/app/accounts/[id]/edit/page.tsx;ARTIFACT:apps/web/src/components/accounts/account-editor.tsx;ARTIFACT:apps/web/src/components/accounts/parent-selector.tsx;EVIDENCE:.specify/sprints/sprint-20/attestations/PG-071/context_ack.json,GATE:lighthouse-gte-90;VALIDATE:pnpm --filter @intelliflow/web typecheck;VALIDATE:pnpm --filter @intelliflow/web test --run,60/120/240,2026-09-22,2026-09-24,0,PG-070:FS,
PG-072,Core CRM,Import Accounts,CRM FE+BE (STOA-Foundation),PG-069,FILE:.specify/memory/Framework.md;FILE:audit-matrix.yml;ENV:Account import;ENV:hierarchy mapping;FILE:apps/web/src/app/(crm)/accounts/page.tsx;FILE:docs/design/sitemap.md;FILE:docs/design/ui-flow-mapping.md;FILE:docs/design/page-registry.md;FILE:apps/project-tracker/docs/metrics/_global/flows/flow-index.md,"Response <200ms, Lighthouse ≥90, imports structured; artifacts: page.tsx, account-importer.tsx, hierarchy-mapper.ts",Backlog,"Imports working, hierarchy preserved, relationships mapped",20,ARTIFACT:apps/web/src/app/accounts/(list)/import/page.tsx;ARTIFACT:apps/web/src/components/accounts/account-importer.tsx;ARTIFACT:apps/web/src/lib/accounts/hierarchy-mapper.ts;EVIDENCE:.specify/sprints/sprint-20/attestations/PG-072/context_ack.json,GATE:lighthouse-gte-90;VALIDATE:pnpm --filter @intelliflow/web typecheck;VALIDATE:pnpm --filter @intelliflow/web test --run,90/180/360,2026-09-24,2026-09-30,0,PG-069:FS,
PG-073,Core CRM,Opportunities List,CRM FE+BE (STOA-Foundation),IFC-091,FILE:.specify/memory/Framework.md;FILE:audit-matrix.yml;ENV:Opportunity pipeline;ENV:stages;FILE:apps/api/src/modules/opportunity/opportunity.router.ts;FILE:docs/design/sitemap.md;FILE:docs/design/ui-flow-mapping.md;FILE:docs/design/page-registry.md;FILE:apps/project-tracker/docs/metrics/_global/flows/flow-index.md,"Response <200ms, Lighthouse ≥90, pipeline visible; artifacts: page.tsx, opportunity-list.tsx, pipeline-view.tsx",Backlog,"Opportunities listed, pipeline shown, stages clear",20,ARTIFACT:apps/web/src/app/deals/(list)/page.tsx;ARTIFACT:apps/web/src/components/deals/opportunity-list.tsx;ARTIFACT:apps/web/src/components/deals/pipeline-view.tsx;EVIDENCE:.specify/sprints/sprint-20/attestations/PG-073/context_ack.json,GATE:lighthouse-gte-90;VALIDATE:pnpm --filter @intelliflow/web typecheck;VALIDATE:pnpm --filter @intelliflow/web test --run,90/180/360,2026-09-26,2026-10-02,0,IFC-091:FS,
PG-074,Core CRM,Opportunity Detail CRITICAL: Current page is fully hardcoded with SAMPLE_DEAL and SAMPLE_ACTIVITIES constants - zero API calls. Must: (1) Replace with api.opportunity.getById query (IFC-186 router already built with moveStage getHistory getProducts getPipeline endpoints). (2) Wire all 6 action buttons: Won/Lost to updateStage mutations with stage dialog Edit to navigate to edit form Clone to duplicate mutation Archive to set archived Delete to AlertDialog + delete mutation. (3) Add real activity timeline via ActivityFeed component (IFC-069). (4) Wire file section to real data. (5) Remove hardcoded SAMPLE_* constants. Cross-entity patterns from Lead 360 wiring (2026-03-04) should be followed.,CRM FE+BE (STOA-Foundation),PG-073,FILE:.specify/memory/Framework.md;FILE:audit-matrix.yml;ENV:Deal details;ENV:products;ENV:timeline;FILE:apps/web/src/app/(crm)/opportunities/page.tsx;FILE:docs/design/sitemap.md;FILE:docs/design/ui-flow-mapping.md;FILE:docs/design/page-registry.md;FILE:apps/project-tracker/docs/metrics/_global/flows/flow-index.md,"Response <200ms, Lighthouse ≥90, details complete; artifacts: page.tsx, opportunity-detail.tsx, product-list.tsx; Deal detail loads real API data; all 6 action buttons functional with confirmation dialogs; activity timeline shows real events; file section wired; no hardcoded SAMPLE_* constants remain; Lighthouse >=90; tests >=90%",Backlog,"Details shown, products listed, timeline displayed",20,ARTIFACT:apps/web/src/app/deals/[id]/page.tsx;ARTIFACT:apps/web/src/components/deals/opportunity-detail.tsx;ARTIFACT:apps/web/src/components/deals/product-list.tsx;EVIDENCE:.specify/sprints/sprint-20/attestations/PG-074/context_ack.json,GATE:lighthouse-gte-90;VALIDATE:pnpm --filter @intelliflow/web typecheck;VALIDATE:pnpm --filter @intelliflow/web test --run,90/180/360,2026-09-28,2026-10-04,0,PG-073:FS,
PG-075,Core CRM,Edit Opportunity,CRM FE+BE (STOA-Foundation),PG-074,FILE:.specify/memory/Framework.md;FILE:audit-matrix.yml;ENV:Deal editor;ENV:probability calc;FILE:apps/web/src/app/(crm)/opportunities/[id]/page.tsx;FILE:docs/design/sitemap.md;FILE:docs/design/ui-flow-mapping.md;FILE:docs/design/page-registry.md;FILE:apps/project-tracker/docs/metrics/_global/flows/flow-index.md,"Response <200ms, Lighthouse ≥90, calculations accurate; artifacts: page.tsx, opportunity-editor.tsx, probability-calc.ts",Backlog,"Edits working, probability calculated, forecast updated",20,ARTIFACT:apps/web/src/app/deals/[id]/edit/page.tsx;ARTIFACT:apps/web/src/components/deals/opportunity-editor.tsx;ARTIFACT:apps/web/src/lib/deals/probability-calc.ts;EVIDENCE:.specify/sprints/sprint-20/attestations/PG-075/context_ack.json,GATE:lighthouse-gte-90;VALIDATE:pnpm --filter @intelliflow/web typecheck;VALIDATE:pnpm --filter @intelliflow/web test --run,60/120/240,2026-09-30,2026-10-02,0,PG-074:FS,
PG-076,Core CRM,Pipeline Board,CRM FE+BE (STOA-Foundation),IFC-091,FILE:.specify/memory/Framework.md;FILE:audit-matrix.yml;ENV:Kanban view;ENV:drag-drop;ENV:filters;FILE:docs/operations/quality-gates.md;FILE:apps/api/src/modules/opportunity/opportunity.router.ts;FILE:docs/design/sitemap.md;FILE:docs/design/ui-flow-mapping.md;FILE:docs/design/page-registry.md;FILE:apps/project-tracker/docs/metrics/_global/flows/flow-index.md,"Response <200ms, Lighthouse ≥90, drag smooth; artifacts: page.tsx, pipeline-board.tsx, drag-drop-handler.ts",Backlog,"Board working, drag-drop smooth, filters functional",21,ARTIFACT:apps/web/src/app/pipeline/page.tsx;ARTIFACT:apps/web/src/components/pipeline/pipeline-board.tsx;ARTIFACT:apps/web/src/lib/pipeline/drag-drop-handler.ts;EVIDENCE:.specify/sprints/sprint-21/attestations/PG-076/context_ack.json,GATE:lighthouse-gte-90;VALIDATE:pnpm --filter @intelliflow/web typecheck;VALIDATE:pnpm --filter @intelliflow/web test --run,120/240/480,2026-10-04,2026-10-10,0,IFC-091:FS,
PG-077,Core CRM,Pipeline Stages,CRM FE+BE (STOA-Foundation),PG-076,FILE:.specify/memory/Framework.md;FILE:audit-matrix.yml;ENV:Stage config;ENV:conversion rates;FILE:docs/operations/quality-gates.md;FILE:apps/web/src/app/(crm)/pipeline/page.tsx;FILE:docs/design/sitemap.md;FILE:docs/design/ui-flow-mapping.md;FILE:docs/design/page-registry.md;FILE:apps/project-tracker/docs/metrics/_global/flows/flow-index.md,"Response <200ms, Lighthouse ≥90, rates calculated; artifacts: page.tsx, stage-config.tsx, conversion-calculator.ts",Backlog,"Stages configured, rates calculated, insights shown",21,ARTIFACT:apps/web/src/app/pipeline/stages/page.tsx;ARTIFACT:apps/web/src/components/pipeline/stage-config.tsx;ARTIFACT:apps/web/src/lib/pipeline/conversion-calculator.ts;EVIDENCE:.specify/sprints/sprint-21/attestations/PG-077/context_ack.json,GATE:lighthouse-gte-90;VALIDATE:pnpm --filter @intelliflow/web typecheck;VALIDATE:pnpm --filter @intelliflow/web test --run,60/120/240,2026-10-06,2026-10-08,0,PG-076:FS,
PG-078,Core CRM,Stage Detail,CRM FE+BE (STOA-Foundation),PG-077,FILE:.specify/memory/Framework.md;FILE:audit-matrix.yml;ENV:Stage analytics;ENV:bottlenecks;FILE:apps/web/src/app/(crm)/pipeline/stages/page.tsx;FILE:docs/design/sitemap.md;FILE:docs/design/ui-flow-mapping.md;FILE:docs/design/page-registry.md;FILE:apps/project-tracker/docs/metrics/_global/flows/flow-index.md,"Response <200ms, Lighthouse ≥90, analytics shown; artifacts: page.tsx, stage-analytics.tsx, bottleneck-analyzer.ts",Backlog,"Analytics displayed, bottlenecks identified, actions suggested",21,ARTIFACT:apps/web/src/app/pipeline/stages/[id]/page.tsx;ARTIFACT:apps/web/src/components/deals/stage-analytics.tsx;ARTIFACT:apps/web/src/lib/deals/bottleneck-analyzer.ts;EVIDENCE:.specify/sprints/sprint-21/attestations/PG-078/context_ack.json,GATE:lighthouse-gte-90;VALIDATE:pnpm --filter @intelliflow/web typecheck;VALIDATE:pnpm --filter @intelliflow/web test --run,60/120/240,2026-10-08,2026-10-10,0,PG-077:FS,
PG-079,Core CRM,Forecasts,CRM FE+BE (STOA-Foundation),IFC-092,FILE:.specify/memory/Framework.md;FILE:audit-matrix.yml;ENV:Forecast models;ENV:accuracy tracking;FILE:apps/api/src/shared/forecast-algorithm.test.ts;FILE:docs/design/sitemap.md;FILE:docs/design/ui-flow-mapping.md;FILE:docs/design/page-registry.md;FILE:apps/project-tracker/docs/metrics/_global/flows/flow-index.md,"Response <200ms, Lighthouse ≥90, forecasts accurate; artifacts: page.tsx, forecast-display.tsx, accuracy-tracker.ts",Backlog,"Forecasts generated, accuracy tracked, adjustments enabled",21,ARTIFACT:apps/web/src/app/forecasts/page.tsx;ARTIFACT:apps/web/src/components/deals/forecast-display.tsx;ARTIFACT:apps/web/src/lib/deals/accuracy-tracker.ts;EVIDENCE:.specify/sprints/sprint-21/attestations/PG-079/context_ack.json,GATE:lighthouse-gte-90;VALIDATE:pnpm --filter @intelliflow/web typecheck;VALIDATE:pnpm --filter @intelliflow/web test --run,90/180/360,2026-10-10,2026-10-16,0,IFC-092:FS,
PG-080,Core CRM,Activities,CRM FE+BE (STOA-Foundation),IFC-089,FILE:.specify/memory/Framework.md;FILE:audit-matrix.yml;ENV:Activity timeline;ENV:filters;FILE:apps/api/src/modules/contact/contact.router.ts;FILE:docs/design/sitemap.md;FILE:docs/design/ui-flow-mapping.md;FILE:docs/design/page-registry.md;FILE:apps/project-tracker/docs/metrics/_global/flows/flow-index.md,"Response <200ms, Lighthouse ≥90, timeline smooth; artifacts: page.tsx, activity-timeline.tsx, activity-filters.tsx",Backlog,"Activities listed, timeline smooth, filters working",21,ARTIFACT:apps/web/src/app/activities/page.tsx;ARTIFACT:apps/web/src/components/tasks/activity-timeline.tsx;ARTIFACT:apps/web/src/components/tasks/activity-filters.tsx;EVIDENCE:.specify/sprints/sprint-21/attestations/PG-080/context_ack.json,GATE:lighthouse-gte-90;VALIDATE:pnpm --filter @intelliflow/web typecheck;VALIDATE:pnpm --filter @intelliflow/web test --run,90/180/360,2026-10-12,2026-10-18,0,IFC-089:FS,
PG-081,Core CRM,Tasks,CRM FE+BE (STOA-Foundation),PG-080,FILE:.specify/memory/Framework.md;FILE:audit-matrix.yml;ENV:Task management;ENV:assignments;FILE:apps/web/src/app/(crm)/activities/page.tsx;FILE:docs/design/sitemap.md;FILE:docs/design/ui-flow-mapping.md;FILE:docs/design/page-registry.md;FILE:apps/project-tracker/docs/metrics/_global/flows/flow-index.md,"Response <200ms, Lighthouse ≥90, tasks tracked; artifacts: page.tsx, task-manager.tsx, task-reminder.ts",Backlog,"Tasks managed, assignments working, reminders sent",21,ARTIFACT:apps/web/src/app/tasks/(list)/page.tsx;ARTIFACT:apps/web/src/components/tasks/task-manager.tsx;ARTIFACT:apps/web/src/lib/tasks/task-reminder.ts;EVIDENCE:.specify/sprints/sprint-21/attestations/PG-081/context_ack.json,GATE:lighthouse-gte-90;VALIDATE:pnpm --filter @intelliflow/web typecheck;VALIDATE:pnpm --filter @intelliflow/web test --run,60/120/240,2026-10-14,2026-10-16,0,PG-080:FS,
PG-082,Core CRM,Task Detail,CRM FE+BE (STOA-Foundation),PG-081,FILE:.specify/memory/Framework.md;FILE:audit-matrix.yml;ENV:Task view;ENV:subtasks;ENV:comments;FILE:apps/web/src/app/(crm)/tasks/page.tsx;FILE:docs/design/sitemap.md;FILE:docs/design/ui-flow-mapping.md;FILE:docs/design/page-registry.md;FILE:apps/project-tracker/docs/metrics/_global/flows/flow-index.md,"Response <200ms, Lighthouse ≥90, collaboration enabled; artifacts: page.tsx, task-detail.tsx, task-comments.tsx",Backlog,"Details shown, subtasks managed, comments working",22,ARTIFACT:apps/web/src/app/tasks/[id]/page.tsx;ARTIFACT:apps/web/src/components/tasks/task-detail.tsx;ARTIFACT:apps/web/src/components/tasks/task-comments.tsx;EVIDENCE:.specify/sprints/sprint-22/attestations/PG-082/context_ack.json,GATE:lighthouse-gte-90;VALIDATE:pnpm --filter @intelliflow/web typecheck;VALIDATE:pnpm --filter @intelliflow/web test --run,60/120/240,2026-10-18,2026-10-20,0,PG-081:FS,
DOC-001,Strategy & Documentation,Company & Product Master Brief (single source of truth),CEO + All Leads (STOA-Leadership),,FILE:.specify/memory/Framework.md;FILE:audit-matrix.yml;ENV:Stakeholder workshop (CEO/PM/Tech Lead); access to existing notes;ENV:competitive context;ENV:and current product scope;FILE:docs/shared/review-checklist.md;FILE:docs/operations/pr-checklist.md,"Master brief created and reviewed covering: product definition, vision, target customers (ICP), personas, positioning, value proposition, differentiation, success metrics, scope/out-of-scope, tone of voice, and visual identity direction; published as tracked docs and referenced from CLAUDE.md/README as grounding source; targets: >=100%; verified by: pnpm lint",Completed,100% required sections filled; ≤5 open questions; referenced by agents/CI docs checks; updated_at + owner present,0,ARTIFACT:docs/**;EVIDENCE:.specify/sprints/sprint-0/attestations/DOC-001/attestation.json,VALIDATE:pnpm lint,120/240/480,2025-12-14,2025-12-22,100,,
BRAND-001,Brand & Design,"Visual Identity System (palette, typography, spacing, logo usage)",UX Designer + Frontend Dev (STOA-Domain),DOC-001,FILE:.specify/memory/Framework.md;FILE:audit-matrix.yml;ENV:Access to any existing brand assets; decision-maker availability for final selection;FILE:docs/planning/DDD-context-map.puml;FILE:packages/db/prisma/schema.prisma;FILE:docs/operations/quality-gates.md;FILE:docs/company/brand/visual-identity.md;FILE:docs/company/master-brief.md,"Defined palette (primary/secondary/neutral), typography scale, spacing system, iconography guidance, and basic component styling principles; includes do/don’t examples; exported as machine-readable tokens (JSON) and documented usage guidance; verified by: pnpm lint",Completed,Palette + type scale defined; tokens generated; 1 review iteration max; consistency checklist created,0,ARTIFACT:docs/company/brand/visual-identity.md;docs/company/brand/palette.tokens.json;docs/company/brand/typography.tokens.json;docs/company/brand/spacing.tokens.json;EVIDENCE:.specify/sprints/sprint-0/attestations/BRAND-001/attestation.json;ARTIFACT:docs/design/mockups/*;ARTIFACT:docs/company/brand/design-system-preview.html;ARTIFACT:apps/web/public/fonts/MaterialSymbolsOutlined.woff2,VALIDATE:pnpm lint;AUDIT:design-review;AUDIT:code-review,120/240/480,2025-12-16,2025-12-24,100,DOC-001:FS,
BRAND-002,Design System,Design Tokens Integration Plan (Tailwind/shadcn theme mapping),Frontend Dev + UX Designer (STOA-Domain),"BRAND-001,ENV-002-AI",FILE:.specify/memory/Framework.md;FILE:audit-matrix.yml;ENV:Tailwind + shadcn/ui baseline present; agreement on token naming convention;FILE:docs/design/token-mapping.md;FILE:docs/company/brand/visual-identity.md;FILE:eslint.config.mjs,"Mapping document from brand tokens to Tailwind/shadcn variables created; includes light/dark theme rules, semantic color tokens, component states, and migration guidelines; produces a minimal theme reference"" page spec""; targets: >=90%, zero errors; verified by: pnpm lint",Completed,Token mapping coverage ≥90% of components used in Sprint 0/1; zero ambiguous token names; theme reference spec approved,1,ARTIFACT:docs/design/token-mapping.md;docs/design/theme-reference-spec.md;docs/design/token-naming.md;EVIDENCE:.specify/sprints/sprint-1/attestations/BRAND-002/attestation.json,VALIDATE:pnpm lint,90/180/360,2025-12-28,2026-01-06,100,"BRAND-001:FS,ENV-002-AI:FS",
GTM-001,Go-to-Market,"ICP & Personas Pack (target customers, job stories, objections)",PM + Marketing (STOA-Foundation),DOC-001,FILE:.specify/memory/Framework.md;FILE:audit-matrix.yml;ENV:Access to intended market assumptions; any existing customer discovery notes;FILE:docs/company/master-brief.md,"ICP definition (firmographics/technographics/constraints), 2–4 personas with job stories, triggers, pains, gains, buying process, and objections; includes “not ICP” exclusions; stored as tracked docs; verified by: pnpm lint; output: icp.md, personas.md, objections.md validated",Completed,ICP + ≥2 personas complete; ≥10 objections/answers; clear “not ICP” list; referenced by Sales assets,0,ARTIFACT:docs/company/go-to-market/icp.md;docs/company/go-to-market/personas.md;docs/company/go-to-market/objections.md;EVIDENCE:.specify/sprints/sprint-0/attestations/GTM-001/attestation.json,VALIDATE:pnpm lint,90/180/360,2025-12-16,2025-12-24,100,DOC-001:FS,
GTM-002,Go-to-Market,"Messaging Framework (positioning, value props, copy blocks)",PM + Marketing (STOA-Foundation),"GTM-001,BRAND-001",FILE:.specify/memory/Framework.md;FILE:audit-matrix.yml;ENV:Approval of ICP/personas; preliminary visual identity direction;FILE:docs/shared/review-checklist.md;FILE:docs/operations/pr-checklist.md;FILE:docs/company/go-to-market/icp.md;FILE:docs/company/brand/visual-identity.md,"Positioning statement, elevator pitch, key messages by persona, CTA library, website copy blocks (hero, features, pricing, security), and tone-of-voice rules; includes examples for consistent writing; verified by: pnpm lint; output: positioning.md, value-props.md, copy-blocks.md validated",Completed,Copy blocks cover all PG pages; tone guide ≤2 pages and actionable; ≤1 unresolved positioning decision,0,ARTIFACT:docs/company/messaging/positioning.md;docs/company/messaging/value-props.md;docs/company/messaging/copy-blocks.md;docs/company/messaging/cta-library.md;EVIDENCE:.specify/sprints/sprint-0/attestations/GTM-002/attestation.json,VALIDATE:pnpm lint;AUDIT:security-review,90/180/360,2025-12-18,2025-12-26,100,"GTM-001:FS,BRAND-001:FS",
SALES-001,Commercial Assets,Commercial Narrative + Pitch Deck Outline + One-Pager,PM + Sales Team (STOA-Foundation),"GTM-002,BRAND-001",FILE:.specify/memory/Framework.md;FILE:audit-matrix.yml;POLICY:Agreement on positioning and visuals; selected distribution channel (web/demo/outreach);FILE:docs/operations/quality-gates.md;FILE:docs/company/messaging/positioning.md;FILE:docs/company/brand/visual-identity.md,"Deck outline (10–12 slides) with story arc, slide-by-slide content, and visual guidelines; plus one-pager (problem → solution → proof → CTA); includes a single canonical link to design source (Figma/Canva); verified by: pnpm lint",Completed,Deck outline complete; one-pager complete; 1 internal review cycle; aligns with ICP/personas,1,ARTIFACT:docs/sales/pitch-deck-outline.md;docs/sales/one-pager.md;artifacts/misc/sales/pitch-deck-source-link.txt;ARTIFACT:artifacts/reports/SALES-001-quick-reference.md;ARTIFACT:artifacts/reports/SALES-001-validation-report.md;EVIDENCE:.specify/sprints/sprint-1/attestations/SALES-001/attestation.json,VALIDATE:pnpm lint,90/180/360,2025-12-28,2026-01-06,100,"GTM-002:FS,BRAND-001:FS",
SALES-002,Commercial Assets,"Sales Motion Playbook (outreach sequences, discovery + demo scripts)",Sales + CEO (STOA-Leadership),"SALES-001,GTM-002",FILE:.specify/memory/Framework.md;FILE:audit-matrix.yml;ENV:Agreement on commercial narrative; chosen qualification framework (BANT/MEDDIC/etc.);FILE:docs/sales/pitch-deck-outline.md;FILE:docs/company/messaging/positioning.md,"Defined sales motion: lead sources, qualification steps, discovery script, demo script, objection handling, follow-up cadence; includes at least 2 outreach sequences (email + LinkedIn) and a handoff policy to implementation/support; artifacts: sales-motion-playbook.md, discovery-script.md, demo-script.md; verified by: pnpm lint",Completed,≥2 sequences ready; discovery+demo scripts usable end-to-end; first pilot run documented,2,ARTIFACT:docs/sales/sales-motion-playbook.md;docs/sales/discovery-script.md;docs/sales/demo-script.md;docs/sales/outreach-sequences.md;EVIDENCE:.specify/sprints/sprint-2/attestations/SALES-002/attestation.json,VALIDATE:pnpm lint;AUDIT:code-review,90/180/360,2026-01-11,2026-01-20,100,"SALES-001:FS,GTM-002:FS",
PM-OPS-001,Project Operations,"Project Operating Model & Delivery Playbook (cadence, WIP, ticket sizing, ABC)",Tech Lead + DevOps + Product Manager (STOA-Automation),"AUTOMATION-001,ENV-005-AI",FILE:.specify/memory/Framework.md;FILE:audit-matrix.yml;ENV:Agreement on repo workflow and tracker usage; availability of team roles and responsibilities;FILE:packages/db/prisma/schema.prisma;FILE:docs/shared/review-checklist.md;FILE:docs/operations/pr-checklist.md;FILE:docs/operations/project-playbook.md;FILE:infra/monitoring/orchestration-config.yaml;FILE:.github/workflows/ci.yml,"Documented end-to-end delivery model: stages, sequencing, WIP policy, ticket sizing guidance, ABC classification of work, acceptance criteria rules, and escalation path; includes RACI for Sprint 0–2; referenced by tracker UI/help pages; targets: >=100%; verified by: pnpm lint",Completed,WIP policy defined; ticket sizing heuristic defined; ABC coverage 100% of task types; RACI approved,0,ARTIFACT:docs/operations/project-playbook.md;docs/operations/wip-policy.md;docs/operations/ticket-sizing.md;docs/operations/abc-classification.md;docs/operations/raci.md;EVIDENCE:.specify/sprints/sprint-0/attestations/PM-OPS-001/attestation.json,VALIDATE:pnpm lint,90/180/360,2025-12-18,2025-12-26,100,"AUTOMATION-001:FS,ENV-005-AI:FS",
ENG-OPS-001,Engineering Operations,"Engineering Playbook (SDLC, PR rules, quality gates, release/rollback)",Tech Lead + DevOps + QA Lead (STOA-Quality),"ENV-002-AI,ENV-005-AI,ENV-010-AI",FILE:.specify/memory/Framework.md;FILE:audit-matrix.yml;ENV:CI pipeline baseline; lint/typecheck/test scripts present;FILE:docs/architecture/adr/ADR-005-workflow-engine.md;FILE:docs/shared/review-checklist.md;FILE:docs/operations/engineering-playbook.md;FILE:docs/operations/quality-gates.md;FILE:docs/operations/pr-checklist.md;FILE:docs/operations/release-rollback.md;FILE:eslint.config.mjs;FILE:.github/workflows/ci.yml,"Engineering handbook written: branching strategy, PR checklist, code review standards, required gates (audit-matrix Tier 1), release flow, rollback steps, incident basics, and docs conventions; includes strict vs local"" policy for WARN/FAIL""; verified by: pnpm lint",Completed,"PR checklist adopted; gate mapping complete; rollback procedure documented; ≤1 page fast path"" summary included""",0,ARTIFACT:docs/operations/engineering-playbook.md;docs/operations/quality-gates.md;docs/operations/pr-checklist.md;docs/operations/release-rollback.md;EVIDENCE:.specify/sprints/sprint-0/attestations/ENG-OPS-001/attestation.json,VALIDATE:pnpm lint,90/180/360,2025-12-18,2025-12-26,100,"ENV-002-AI:FS,ENV-005-AI:FS,ENV-010-AI:FS",
GOV-001,Architecture Governance,"Architecture Governance Pack (ADR + ARP templates, decision workflow, flowcharts)",Backend Dev + Architect (STOA-Domain),ENG-OPS-001,FILE:.specify/memory/Framework.md;FILE:audit-matrix.yml;ENV:Agreement on architecture conventions (C4/diagrams); decision authority clarified;FILE:docs/architecture/adr/ADR-001-modern-stack.md;FILE:docs/architecture/adr/ADR-005-workflow-engine.md;FILE:docs/architecture/hex-boundaries.md;FILE:docs/architecture/repo-layout.md;FILE:docs/planning/DDD-context-map.puml;FILE:docs/operations/quality-gates.md;FILE:docs/architecture/adr/template.md;FILE:docs/architecture/decision-workflow.md;FILE:docs/operations/engineering-playbook.md,"Created ADR template, ARP template, decision workflow, and diagram/flowchart conventions; includes folder structure, naming, and example ADR/ARP; defines when decisions are required and how to approve; verified by: pnpm lint",Completed,Templates published; workflow clear; at least 1 example ADR/ARP; adoption guide ≤1 page,1,ARTIFACT:docs/architecture/adr/template.md;docs/architecture/arp/000-template.md;docs/architecture/decision-workflow.md;docs/architecture/diagrams/README.md;docs/architecture/flowcharts/README.md;EVIDENCE:.specify/sprints/sprint-1/attestations/GOV-001/attestation.json,VALIDATE:pnpm lint,90/180/360,2025-12-28,2026-01-06,100,ENG-OPS-001:FS,
ANALYTICS-001,Analytics & Segmentation,Customer Segmentation Spec (RFM + ABC) + Event Taxonomy,PM + DA (STOA-Foundation),"DOC-001,GTM-001",FILE:.specify/memory/Framework.md;FILE:audit-matrix.yml;ENV:Access to ICP/personas; agreement on CRM prioritization goals; any existing analytics assumptions;FILE:docs/company/master-brief.md;FILE:docs/company/go-to-market/icp.md,"Defines RFM inputs/outputs, ABC curve methodology, segmentation thresholds, and event taxonomy; specifies dashboards, KPIs, and minimal instrumentation requirements to support CRM prioritization; includes data privacy notes and open questions log; artifacts: rfm-abc-spec.md, event-taxonomy.md, dashboards-requirements.md; verified by: pnpm lint",Completed,RFM/ABC spec complete; event taxonomy covers core flows; requirements mapped to ENV-016-AI + IFC-037/038; ≤5 open questions,0,ARTIFACT:docs/analytics/rfm-abc-spec.md;docs/analytics/event-taxonomy.md;docs/analytics/dashboards-requirements.md;EVIDENCE:.specify/sprints/sprint-0/attestations/ANALYTICS-001/attestation.json,VALIDATE:pnpm lint,90/180/360,2025-12-19,2025-12-27,100,"DOC-001:FS,GTM-001:FS",
PG-083,Core CRM,Calendar,CRM FE+BE (STOA-Foundation),PG-080,FILE:.specify/memory/Framework.md;FILE:audit-matrix.yml;ENV:Calendar integration;ENV:scheduling;FILE:apps/web/src/app/(crm)/activities/page.tsx;FILE:docs/design/sitemap.md;FILE:docs/design/ui-flow-mapping.md;FILE:docs/design/page-registry.md;FILE:apps/project-tracker/docs/metrics/_global/flows/flow-index.md,"Response <200ms, Lighthouse ≥90, events synced; artifacts: page.tsx, calendar-view.tsx, event-scheduler.ts",Backlog,"Calendar working, events synced, scheduling functional",22,ARTIFACT:apps/web/src/app/calendar/(list)/page.tsx;ARTIFACT:apps/web/src/components/calendar/calendar-view.tsx;ARTIFACT:apps/web/src/lib/calendar/event-scheduler.ts;EVIDENCE:.specify/sprints/sprint-22/attestations/PG-083/context_ack.json,GATE:lighthouse-gte-90;VALIDATE:pnpm --filter @intelliflow/web typecheck;VALIDATE:pnpm --filter @intelliflow/web test --run,90/180/360,2026-10-20,2026-10-26,0,PG-080:FS,
PG-084,Core CRM,Emails Cross-entity scope: wire EmailCompose component (from PG-141) into Lead and Contact detail page Compose buttons. Pre-fill recipient with entity email. Replace activity-derived email list with real email integration data.,CRM FE+BE (STOA-Foundation),"IFC-099,IFC-144",FILE:.specify/memory/Framework.md;FILE:audit-matrix.yml;ENV:Email integration;ENV:threading;FILE:artifacts/reports/connector-status-dashboard.json;FILE:docs/design/sitemap.md;FILE:docs/design/ui-flow-mapping.md;FILE:docs/design/page-registry.md;FILE:apps/project-tracker/docs/metrics/_global/flows/flow-index.md,"Response <200ms, Lighthouse ≥90, emails organized; artifacts: page.tsx, email-client.tsx, email-tracker.ts; Compose buttons on Lead/Contact detail pages open EmailCompose sheet; email list sourced from real integration",Backlog,"Emails integrated, threads working, tracking active",22,ARTIFACT:apps/web/src/app/emails/page.tsx;ARTIFACT:apps/web/src/components/email/email-client.tsx;ARTIFACT:apps/web/src/lib/email/email-tracker.ts;EVIDENCE:.specify/sprints/sprint-22/attestations/PG-084/context_ack.json,GATE:lighthouse-gte-90;VALIDATE:pnpm --filter @intelliflow/web typecheck;VALIDATE:pnpm --filter @intelliflow/web test --run,90/180/360,2026-10-22,2026-10-28,0,"IFC-099:FS,IFC-144:FS",
PG-085,Core CRM,Email Templates (all auth/notification/in-app surfaces; findings: git issue #350 + debt EMAIL-BRAND-001/SEC-AUTH-NOTIF-001),CRM FE+BE (STOA-Foundation),"PG-084,IFC-144",FILE:.specify/memory/Framework.md;FILE:audit-matrix.yml;ENV:Template builder;ENV:personalization;FILE:apps/web/src/app/(crm)/emails/page.tsx;FILE:docs/design/sitemap.md;FILE:docs/design/ui-flow-mapping.md;FILE:docs/design/page-registry.md;FILE:apps/project-tracker/docs/metrics/_global/flows/flow-index.md,"Response <200ms, Lighthouse ≥90, templates saved",Backlog,"Templates created, personalization working, sending enabled",22,ARTIFACT:apps/web/src/app/templates/email/page.tsx;ARTIFACT:apps/web/src/components/templates/template-builder.tsx;ARTIFACT:apps/web/src/lib/templates/personalization.ts;EVIDENCE:.specify/sprints/sprint-22/attestations/PG-085/context_ack.json,GATE:lighthouse-gte-90;VALIDATE:pnpm --filter @intelliflow/web typecheck;VALIDATE:pnpm --filter @intelliflow/web test --run,60/120/240,2026-10-24,2026-10-26,0,"PG-084:FS,IFC-144:FS",
PG-086,Core CRM,SMS Templates,CRM FE+BE (STOA-Foundation),"PG-085,IFC-144",FILE:.specify/memory/Framework.md;FILE:audit-matrix.yml;ENV:SMS templates;ENV:compliance;FILE:apps/web/src/app/(crm)/templates/email/page.tsx;FILE:docs/design/sitemap.md;FILE:docs/design/ui-flow-mapping.md;FILE:docs/design/page-registry.md;FILE:apps/project-tracker/docs/metrics/_global/flows/flow-index.md,"Response <200ms, Lighthouse ≥90, SMS ready; artifacts: page.tsx, sms-builder.tsx, compliance-checker.ts",Backlog,"SMS templates created, compliance checked, sending enabled",22,ARTIFACT:apps/web/src/app/templates/sms/page.tsx;ARTIFACT:apps/web/src/components/templates/sms-builder.tsx;ARTIFACT:apps/web/src/lib/templates/compliance-checker.ts;EVIDENCE:.specify/sprints/sprint-22/attestations/PG-086/context_ack.json,GATE:lighthouse-gte-90;VALIDATE:pnpm --filter @intelliflow/web typecheck;VALIDATE:pnpm --filter @intelliflow/web test --run,60/120/240,2026-10-26,2026-10-28,0,"PG-085:FS,IFC-144:FS",
PG-087,Core CRM,Calls,CRM FE+BE (STOA-Foundation),"IFC-099,IFC-144",FILE:.specify/memory/Framework.md;FILE:audit-matrix.yml;ENV:Call logging;ENV:recording integration;FILE:artifacts/reports/connector-status-dashboard.json;FILE:docs/design/sitemap.md;FILE:docs/design/ui-flow-mapping.md;FILE:docs/design/page-registry.md;FILE:apps/project-tracker/docs/metrics/_global/flows/flow-index.md,"Response <200ms, Lighthouse ≥90, calls tracked; artifacts: page.tsx, call-logger.tsx, recording-player.tsx",Backlog,"Calls logged, recordings linked, analytics shown",22,ARTIFACT:apps/web/src/app/calls/page.tsx;ARTIFACT:apps/web/src/components/calls/call-logger.tsx;ARTIFACT:apps/web/src/components/calls/recording-player.tsx;EVIDENCE:.specify/sprints/sprint-22/attestations/PG-087/context_ack.json,GATE:lighthouse-gte-90;VALIDATE:pnpm --filter @intelliflow/web typecheck;VALIDATE:pnpm --filter @intelliflow/web test --run,90/180/360,2026-10-28,2026-11-03,0,"IFC-099:FS,IFC-144:FS",
PG-088,Core CRM,Notes,CRM FE+BE (STOA-Foundation),PG-080,FILE:.specify/memory/Framework.md;FILE:audit-matrix.yml;ENV:Note taking;ENV:mentions;ENV:sharing;FILE:apps/web/src/app/(crm)/activities/page.tsx;FILE:docs/design/sitemap.md;FILE:docs/design/ui-flow-mapping.md;FILE:docs/design/page-registry.md;FILE:apps/project-tracker/docs/metrics/_global/flows/flow-index.md,"Response <200ms, Lighthouse ≥90, notes saved; artifacts: page.tsx, note-editor.tsx, mention-handler.ts",Backlog,"Notes created, mentions working, sharing enabled",23,ARTIFACT:apps/web/src/app/notes/page.tsx;ARTIFACT:apps/web/src/components/notes/note-editor.tsx;ARTIFACT:apps/web/src/lib/notes/mention-handler.ts;EVIDENCE:.specify/sprints/sprint-23/attestations/PG-088/context_ack.json,GATE:lighthouse-gte-90;VALIDATE:pnpm --filter @intelliflow/web typecheck;VALIDATE:pnpm --filter @intelliflow/web test --run,60/120/240,2026-11-01,2026-11-03,0,PG-080:FS,
PG-089,Core CRM,Files Cross-entity scope: also wire file upload/download handlers on Lead detail (upload btn download btn) Contact detail (document section) and Deal detail (files section). Reuse upload/download infrastructure across all entity detail pages.,CRM FE+BE (STOA-Foundation),IFC-094,FILE:.specify/memory/Framework.md;FILE:audit-matrix.yml;ENV:File management;ENV:versioning;FILE:artifacts/reports/e-signature-test.pdf;FILE:docs/design/sitemap.md;FILE:docs/design/ui-flow-mapping.md;FILE:docs/design/page-registry.md;FILE:apps/project-tracker/docs/metrics/_global/flows/flow-index.md,"Response <200ms, Lighthouse ≥90, files organized; File upload/download buttons functional on Lead Contact Deal detail pages in addition to standalone Files page",Backlog,"Files uploaded, versions tracked, sharing working",23,ARTIFACT:apps/web/src/app/files/page.tsx;ARTIFACT:apps/web/src/components/documents/file-manager.tsx;ARTIFACT:apps/web/src/lib/documents/version-control.ts;EVIDENCE:.specify/sprints/sprint-23/attestations/PG-089/context_ack.json,GATE:lighthouse-gte-90;VALIDATE:pnpm --filter @intelliflow/web typecheck;VALIDATE:pnpm --filter @intelliflow/web test --run,90/180/360,2026-11-03,2026-11-09,0,IFC-094:FS,
PG-090,Core CRM,File Detail,CRM FE+BE (STOA-Foundation),PG-089,FILE:.specify/memory/Framework.md;FILE:audit-matrix.yml;ENV:File preview;ENV:metadata;ENV:sharing;FILE:apps/web/src/app/(crm)/files/page.tsx;FILE:docs/design/sitemap.md;FILE:docs/design/ui-flow-mapping.md;FILE:docs/design/page-registry.md;FILE:apps/project-tracker/docs/metrics/_global/flows/flow-index.md,"Response <200ms, Lighthouse ≥90, previews working; artifacts: page.tsx, file-preview.tsx, file-sharer.ts",Backlog,"Previews shown, metadata displayed, sharing enabled",23,ARTIFACT:apps/web/src/app/files/[id]/page.tsx;ARTIFACT:apps/web/src/components/documents/file-preview.tsx;ARTIFACT:apps/web/src/lib/documents/file-sharer.ts;EVIDENCE:.specify/sprints/sprint-23/attestations/PG-090/context_ack.json,AUDIT:code-review;GATE:lighthouse-gte-90,60/120/240,2026-11-05,2026-11-07,0,PG-089:FS,
PG-091,Core CRM,Products,CRM FE+BE (STOA-Foundation),IFC-089,FILE:.specify/memory/Framework.md;FILE:audit-matrix.yml;ENV:Product catalog;ENV:categories;FILE:docs/shared/review-checklist.md;FILE:docs/operations/pr-checklist.md;FILE:apps/api/src/modules/contact/contact.router.ts;FILE:docs/design/sitemap.md;FILE:docs/design/ui-flow-mapping.md;FILE:docs/design/page-registry.md;FILE:apps/project-tracker/docs/metrics/_global/flows/flow-index.md,"Response <200ms, Lighthouse ≥90, catalog searchable; artifacts: page.tsx, product-catalog.tsx, product-search.ts",Backlog,"Products listed, categories working, search functional",23,ARTIFACT:apps/web/src/app/products/page.tsx;ARTIFACT:apps/web/src/components/products/product-catalog.tsx;ARTIFACT:apps/web/src/lib/products/product-search.ts;EVIDENCE:.specify/sprints/sprint-23/attestations/PG-091/context_ack.json,GATE:lighthouse-gte-90;VALIDATE:pnpm --filter @intelliflow/web typecheck;VALIDATE:pnpm --filter @intelliflow/web test --run,90/180/360,2026-11-07,2026-11-13,0,IFC-089:FS,
PG-092,Core CRM,Product Detail,CRM FE+BE (STOA-Foundation),PG-091,FILE:.specify/memory/Framework.md;FILE:audit-matrix.yml;ENV:Product info;ENV:pricing;ENV:availability;FILE:docs/shared/review-checklist.md;FILE:docs/operations/pr-checklist.md;FILE:apps/web/src/app/(crm)/products/page.tsx;FILE:docs/design/sitemap.md;FILE:docs/design/ui-flow-mapping.md;FILE:docs/design/page-registry.md;FILE:apps/project-tracker/docs/metrics/_global/flows/flow-index.md,"Response <200ms, Lighthouse ≥90, details complete; artifacts: page.tsx, product-detail.tsx, availability-checker.ts",Backlog,"Details shown, pricing displayed, availability tracked",23,ARTIFACT:apps/web/src/app/products/[id]/page.tsx;ARTIFACT:apps/web/src/components/products/product-detail.tsx;ARTIFACT:apps/web/src/lib/products/availability-checker.ts;EVIDENCE:.specify/sprints/sprint-23/attestations/PG-092/context_ack.json,GATE:lighthouse-gte-90;VALIDATE:pnpm --filter @intelliflow/web typecheck;VALIDATE:pnpm --filter @intelliflow/web test --run,60/120/240,2026-11-09,2026-11-11,0,PG-091:FS,
PG-093,Core CRM,Price Books,CRM FE+BE (STOA-Foundation),PG-091,FILE:.specify/memory/Framework.md;FILE:audit-matrix.yml;ENV:Price lists;ENV:discounts;ENV:rules;FILE:docs/shared/review-checklist.md;FILE:docs/operations/pr-checklist.md;FILE:apps/web/src/app/(crm)/products/page.tsx;FILE:docs/design/sitemap.md;FILE:docs/design/ui-flow-mapping.md;FILE:docs/design/page-registry.md;FILE:apps/project-tracker/docs/metrics/_global/flows/flow-index.md,"Response <200ms, Lighthouse ≥90, pricing accurate; artifacts: page.tsx, price-book-manager.tsx, discount-engine.ts",Backlog,"Price books created, discounts applied, rules enforced",23,ARTIFACT:apps/web/src/app/price-books/page.tsx;ARTIFACT:apps/web/src/components/products/price-book-manager.tsx;ARTIFACT:apps/web/src/lib/products/discount-engine.ts;EVIDENCE:.specify/sprints/sprint-23/attestations/PG-093/context_ack.json,GATE:lighthouse-gte-90;VALIDATE:pnpm --filter @intelliflow/web typecheck;VALIDATE:pnpm --filter @intelliflow/web test --run,90/180/360,2026-11-10,2026-11-16,0,PG-091:FS,
PG-094,Core CRM,Price Book Detail,CRM FE+BE (STOA-Foundation),PG-093,FILE:.specify/memory/Framework.md;FILE:audit-matrix.yml;ENV:Price entries;ENV:effective dates;FILE:docs/shared/review-checklist.md;FILE:docs/operations/pr-checklist.md;FILE:apps/web/src/app/(crm)/price-books/page.tsx;FILE:docs/design/sitemap.md;FILE:docs/design/ui-flow-mapping.md;FILE:docs/design/page-registry.md;FILE:apps/project-tracker/docs/metrics/_global/flows/flow-index.md,"Response <200ms, Lighthouse ≥90, prices current; artifacts: page.tsx, price-book-detail.tsx, price-history.ts",Backlog,"Prices shown, dates effective, history tracked",24,ARTIFACT:apps/web/src/app/price-books/[id]/page.tsx;ARTIFACT:apps/web/src/components/products/price-book-detail.tsx;ARTIFACT:apps/web/src/lib/products/price-history.ts;EVIDENCE:.specify/sprints/sprint-24/attestations/PG-094/context_ack.json,GATE:lighthouse-gte-90;VALIDATE:pnpm --filter @intelliflow/web typecheck;VALIDATE:pnpm --filter @intelliflow/web test --run,60/120/240,2026-11-15,2026-11-17,0,PG-093:FS,
PG-095,Core CRM,Quotes,CRM FE+BE (STOA-Foundation),PG-093,FILE:.specify/memory/Framework.md;FILE:audit-matrix.yml;ENV:Quote generation;ENV:approval flow;FILE:apps/web/src/app/(crm)/price-books/page.tsx;FILE:docs/design/sitemap.md;FILE:docs/design/ui-flow-mapping.md;FILE:docs/design/page-registry.md;FILE:apps/project-tracker/docs/metrics/_global/flows/flow-index.md,"Response <200ms, Lighthouse ≥90, quotes generated; artifacts: page.tsx, quote-list.tsx, quote-generator.ts",Backlog,"Quotes created, approvals working, PDFs generated",24,ARTIFACT:apps/web/src/app/quotes/page.tsx;ARTIFACT:apps/web/src/components/quotes/quote-list.tsx;ARTIFACT:apps/web/src/lib/quotes/quote-generator.ts;EVIDENCE:.specify/sprints/sprint-24/attestations/PG-095/context_ack.json,GATE:lighthouse-gte-90;VALIDATE:pnpm --filter @intelliflow/web typecheck;VALIDATE:pnpm --filter @intelliflow/web test --run,90/180/360,2026-11-17,2026-11-23,0,PG-093:FS,
PG-096,Core CRM,New Quote,CRM FE+BE (STOA-Foundation),PG-095,FILE:.specify/memory/Framework.md;FILE:audit-matrix.yml;ENV:Quote builder;ENV:product selection;FILE:apps/web/src/app/(crm)/quotes/page.tsx;FILE:docs/design/sitemap.md;FILE:docs/design/ui-flow-mapping.md;FILE:docs/design/page-registry.md;FILE:apps/project-tracker/docs/metrics/_global/flows/flow-index.md,"Response <200ms, Lighthouse ≥90, calculations accurate; artifacts: page.tsx, quote-builder.tsx, quote-calculator.ts",Backlog,"Quotes built, products added, totals calculated",24,ARTIFACT:apps/web/src/app/quotes/new/page.tsx;ARTIFACT:apps/web/src/components/quotes/quote-builder.tsx;ARTIFACT:apps/web/src/lib/quotes/quote-calculator.ts;EVIDENCE:.specify/sprints/sprint-24/attestations/PG-096/context_ack.json,GATE:lighthouse-gte-90;VALIDATE:pnpm --filter @intelliflow/web typecheck;VALIDATE:pnpm --filter @intelliflow/web test --run,90/180/360,2026-11-19,2026-11-25,0,PG-095:FS,
PG-097,Core CRM,Quote Detail,CRM FE+BE (STOA-Foundation),PG-095,FILE:.specify/memory/Framework.md;FILE:audit-matrix.yml;ENV:Quote view;ENV:version history;FILE:apps/web/src/app/(crm)/quotes/page.tsx;FILE:docs/design/sitemap.md;FILE:docs/design/ui-flow-mapping.md;FILE:docs/design/page-registry.md;FILE:apps/project-tracker/docs/metrics/_global/flows/flow-index.md,"Response <200ms, Lighthouse ≥90, versions tracked; artifacts: page.tsx, quote-detail.tsx, quote-versions.tsx",Backlog,"Details shown, versions tracked, actions available",24,ARTIFACT:apps/web/src/app/quotes/[id]/page.tsx;ARTIFACT:apps/web/src/components/quotes/quote-detail.tsx;ARTIFACT:apps/web/src/components/quotes/quote-versions.tsx;EVIDENCE:.specify/sprints/sprint-24/attestations/PG-097/context_ack.json,GATE:lighthouse-gte-90;VALIDATE:pnpm --filter @intelliflow/web typecheck;VALIDATE:pnpm --filter @intelliflow/web test --run,60/120/240,2026-11-21,2026-11-23,0,PG-095:FS,
PG-098,Core CRM,Edit Quote,CRM FE+BE (STOA-Foundation),PG-097,FILE:.specify/memory/Framework.md;FILE:audit-matrix.yml;ENV:Quote editor;ENV:recalculation;FILE:apps/web/src/app/(crm)/quotes/[id]/page.tsx;FILE:docs/design/sitemap.md;FILE:docs/design/ui-flow-mapping.md;FILE:docs/design/page-registry.md;FILE:apps/project-tracker/docs/metrics/_global/flows/flow-index.md,"Response <200ms, Lighthouse ≥90, updates saved; artifacts: page.tsx, quote-editor.tsx, recalculator.ts",Backlog,"Edits working, recalculation automatic, history preserved",24,ARTIFACT:apps/web/src/app/quotes/[id]/edit/page.tsx;ARTIFACT:apps/web/src/components/quotes/quote-editor.tsx;ARTIFACT:apps/web/src/lib/quotes/recalculator.ts;EVIDENCE:.specify/sprints/sprint-24/attestations/PG-098/context_ack.json,GATE:lighthouse-gte-90;VALIDATE:pnpm --filter @intelliflow/web typecheck;VALIDATE:pnpm --filter @intelliflow/web test --run,60/120/240,2026-11-23,2026-11-25,0,PG-097:FS,
PG-099,Core CRM,Orders,CRM FE+BE (STOA-Foundation),PG-095,FILE:.specify/memory/Framework.md;FILE:audit-matrix.yml;ENV:Order management;ENV:fulfillment;FILE:apps/web/src/app/(crm)/quotes/page.tsx;FILE:docs/design/sitemap.md;FILE:docs/design/ui-flow-mapping.md;FILE:docs/design/page-registry.md;FILE:apps/project-tracker/docs/metrics/_global/flows/flow-index.md,"Response <200ms, Lighthouse ≥90, orders tracked; artifacts: page.tsx, order-list.tsx, fulfillment-tracker.ts",Backlog,"Orders managed, fulfillment tracked, status updated",24,ARTIFACT:apps/web/src/app/orders/page.tsx;ARTIFACT:apps/web/src/components/orders/order-list.tsx;ARTIFACT:apps/web/src/lib/orders/fulfillment-tracker.ts;EVIDENCE:.specify/sprints/sprint-24/attestations/PG-099/context_ack.json,GATE:lighthouse-gte-90;VALIDATE:pnpm --filter @intelliflow/web typecheck;VALIDATE:pnpm --filter @intelliflow/web test --run,90/180/360,2026-11-24,2026-11-30,0,PG-095:FS,
PG-100,Core CRM,Order Detail,CRM FE+BE (STOA-Foundation),PG-099,FILE:.specify/memory/Framework.md;FILE:audit-matrix.yml;ENV:Order view;ENV:shipment tracking;FILE:apps/web/src/app/(crm)/orders/page.tsx;FILE:docs/design/sitemap.md;FILE:docs/design/ui-flow-mapping.md;FILE:docs/design/page-registry.md;FILE:apps/project-tracker/docs/metrics/_global/flows/flow-index.md,"Response <200ms, Lighthouse ≥90, tracking live; artifacts: page.tsx, order-detail.tsx, shipment-tracker.ts",Backlog,"Details shown, shipments tracked, updates real-time",25,ARTIFACT:apps/web/src/app/orders/[id]/page.tsx;ARTIFACT:apps/web/src/components/orders/order-detail.tsx;ARTIFACT:apps/web/src/lib/orders/shipment-tracker.ts;EVIDENCE:.specify/sprints/sprint-25/attestations/PG-100/context_ack.json,GATE:lighthouse-gte-90;VALIDATE:pnpm --filter @intelliflow/web typecheck;VALIDATE:pnpm --filter @intelliflow/web test --run,60/120/240,2026-11-29,2026-12-01,0,PG-099:FS,
PG-101,Core CRM,Reports,CRM FE+BE (STOA-Foundation),IFC-096,FILE:.specify/memory/Framework.md;FILE:audit-matrix.yml;ENV:Report library;ENV:favorites;FILE:docs/architecture/hex-boundaries.md;FILE:docs/design/sitemap.md;FILE:docs/design/ui-flow-mapping.md;FILE:docs/design/page-registry.md;FILE:apps/project-tracker/docs/metrics/_global/flows/flow-index.md,"Response <200ms, Lighthouse ≥90, reports accessible",Backlog,"Reports listed, favorites marked, generation quick",25,ARTIFACT:apps/web/src/app/reports/page.tsx;ARTIFACT:apps/web/src/components/reports/report-library.tsx;ARTIFACT:apps/web/src/lib/reports/report-favorites.ts;EVIDENCE:.specify/sprints/sprint-25/attestations/PG-101/context_ack.json,GATE:lighthouse-gte-90;VALIDATE:pnpm --filter @intelliflow/web typecheck;VALIDATE:pnpm --filter @intelliflow/web test --run,90/180/360,2026-11-30,2026-12-06,0,IFC-096:FS,
PG-102,Core CRM,Custom Reports,CRM FE+BE (STOA-Foundation),IFC-096,FILE:.specify/memory/Framework.md;FILE:audit-matrix.yml;ENV:Report builder;ENV:visualizations;FILE:docs/architecture/hex-boundaries.md;FILE:docs/design/sitemap.md;FILE:docs/design/ui-flow-mapping.md;FILE:docs/design/page-registry.md;FILE:apps/project-tracker/docs/metrics/_global/flows/flow-index.md,"Response <200ms, Lighthouse ≥90, builder intuitive; artifacts: page.tsx, report-builder.tsx, visualization-engine.ts; verified by: pnpm build",Backlog,"Builder working, visualizations rendered, exports enabled",25,ARTIFACT:apps/web/src/app/reports/custom/page.tsx;ARTIFACT:apps/web/src/components/reports/report-builder.tsx;ARTIFACT:apps/web/src/lib/reports/visualization-engine.ts;EVIDENCE:.specify/sprints/sprint-25/attestations/PG-102/context_ack.json,VALIDATE:pnpm build;GATE:lighthouse-gte-90,120/240/480,2026-12-02,2026-12-10,0,IFC-096:FS,
PG-103,Core CRM,Report Schedules,CRM FE+BE (STOA-Foundation),PG-102,FILE:.specify/memory/Framework.md;FILE:audit-matrix.yml;ENV:Schedule config;ENV:distribution;FILE:apps/web/src/app/(crm)/reports/custom/page.tsx;FILE:docs/design/sitemap.md;FILE:docs/design/ui-flow-mapping.md;FILE:docs/design/page-registry.md;FILE:apps/project-tracker/docs/metrics/_global/flows/flow-index.md,"Response <200ms, Lighthouse ≥90, schedules running; artifacts: page.tsx, schedule-manager.tsx, distribution-engine.ts",Backlog,"Schedules created, distribution working, history tracked",25,ARTIFACT:apps/web/src/app/reports/schedules/page.tsx;ARTIFACT:apps/web/src/components/reports/schedule-manager.tsx;ARTIFACT:apps/web/src/lib/reports/distribution-engine.ts;EVIDENCE:.specify/sprints/sprint-25/attestations/PG-103/context_ack.json,GATE:lighthouse-gte-90;VALIDATE:pnpm --filter @intelliflow/web typecheck;VALIDATE:pnpm --filter @intelliflow/web test --run,60/120/240,2026-12-06,2026-12-08,0,PG-102:FS,
PG-104,Settings,Settings Home,Platform FE+BE (STOA-Foundation),IFC-076,FILE:.specify/memory/Framework.md;FILE:audit-matrix.yml;ENV:Settings navigation;ENV:search;FILE:artifacts/reports/accessibility-audit.json;FILE:docs/design/sitemap.md;FILE:docs/design/ui-flow-mapping.md;FILE:docs/design/page-registry.md;FILE:apps/project-tracker/docs/metrics/_global/flows/flow-index.md,"Response <200ms, Lighthouse ≥90, navigation clear; artifacts: page.tsx, settings-nav.tsx, settings-search.ts",Completed,"Settings organized, search working, changes tracked",13,ARTIFACT:apps/web/src/app/settings/page.tsx;ARTIFACT:apps/web/src/components/shared/settings-nav.tsx;ARTIFACT:apps/web/src/lib/shared/settings-search.ts;EVIDENCE:.specify/sprints/sprint-13/attestations/PG-104/attestation.json,GATE:lighthouse-gte-90;VALIDATE:pnpm --filter @intelliflow/web typecheck;VALIDATE:pnpm --filter @intelliflow/web test --run,60/120/240,2026-06-21,2026-06-25,100,IFC-076:FS,
PG-105,Settings,Profile Settings,Platform FE+BE (STOA-Foundation),PG-104,FILE:.specify/memory/Framework.md;FILE:audit-matrix.yml;ENV:Profile editor;ENV:avatar upload;FILE:docs/shared/review-checklist.md;FILE:docs/operations/pr-checklist.md;FILE:apps/web/src/app/settings/page.tsx;FILE:docs/design/sitemap.md;FILE:docs/design/ui-flow-mapping.md;FILE:docs/design/page-registry.md;FILE:apps/project-tracker/docs/metrics/_global/flows/flow-index.md,"Response <200ms, Lighthouse ≥90, profile updated",Backlog,"Profile editable, avatar uploaded, preferences saved",25,ARTIFACT:apps/web/src/app/settings/profile/page.tsx;ARTIFACT:apps/web/src/components/settings/profile-editor.tsx;ARTIFACT:apps/web/src/lib/settings/avatar-uploader.ts;EVIDENCE:.specify/sprints/sprint-25/attestations/PG-105/context_ack.json,GATE:lighthouse-gte-90;VALIDATE:pnpm --filter @intelliflow/web typecheck;VALIDATE:pnpm --filter @intelliflow/web test --run,60/120/240,2026-12-10,2026-12-12,0,PG-104:FS,
PG-106,Settings,Account Settings,Platform FE+BE (STOA-Foundation),PG-104,FILE:.specify/memory/Framework.md;FILE:audit-matrix.yml;ENV:Account management;ENV:deletion;FILE:apps/web/src/app/settings/page.tsx;FILE:docs/design/sitemap.md;FILE:docs/design/ui-flow-mapping.md;FILE:docs/design/page-registry.md;FILE:apps/project-tracker/docs/metrics/_global/flows/flow-index.md,"Response <200ms, Lighthouse ≥90, account managed; artifacts: page.tsx, account-manager.tsx, account-export.ts",Backlog,"Account editable, deletion working, export enabled",26,ARTIFACT:apps/web/src/app/settings/account/page.tsx;ARTIFACT:apps/web/src/components/settings/account-manager.tsx;ARTIFACT:apps/web/src/lib/settings/account-export.ts;EVIDENCE:.specify/sprints/sprint-26/attestations/PG-106/context_ack.json,GATE:lighthouse-gte-90;VALIDATE:pnpm --filter @intelliflow/web typecheck;VALIDATE:pnpm --filter @intelliflow/web test --run,60/120/240,2026-12-13,2026-12-15,0,PG-104:FS,
PG-107,Settings,Organization Settings,Platform FE+BE (STOA-Foundation),PG-104,FILE:.specify/memory/Framework.md;FILE:audit-matrix.yml;ENV:Org config;ENV:branding;FILE:apps/web/src/app/settings/page.tsx;FILE:docs/design/sitemap.md;FILE:docs/design/ui-flow-mapping.md;FILE:docs/design/page-registry.md;FILE:apps/project-tracker/docs/metrics/_global/flows/flow-index.md,"Response <200ms, Lighthouse ≥90, org configured",Backlog,"Org configured, branding applied, settings saved",26,ARTIFACT:apps/web/src/app/settings/organization/page.tsx;ARTIFACT:apps/web/src/components/settings/org-config.tsx;ARTIFACT:apps/web/src/lib/settings/branding-manager.ts;EVIDENCE:.specify/sprints/sprint-26/attestations/PG-107/context_ack.json,GATE:lighthouse-gte-90;VALIDATE:pnpm --filter @intelliflow/web typecheck;VALIDATE:pnpm --filter @intelliflow/web test --run,60/120/240,2026-12-15,2026-12-17,0,PG-104:FS,
PG-108,Settings,Users,Platform FE+BE (STOA-Foundation),"IFC-098,IFC-201",FILE:.specify/memory/Framework.md;FILE:audit-matrix.yml;ENV:User management;ENV:invites;FILE:packages/db/prisma/schema-audit.prisma;FILE:docs/design/sitemap.md;FILE:docs/design/ui-flow-mapping.md;FILE:docs/design/page-registry.md;FILE:apps/project-tracker/docs/metrics/_global/flows/flow-index.md,"Response <200ms, Lighthouse ≥90, users managed; artifacts: page.tsx, user-manager.tsx, invite-sender.ts",Backlog,"Users listed, invites sent, roles assigned",26,ARTIFACT:apps/web/src/app/settings/users/page.tsx;ARTIFACT:apps/web/src/components/settings/user-manager.tsx;ARTIFACT:apps/web/src/lib/settings/invite-sender.ts;EVIDENCE:.specify/sprints/sprint-26/attestations/PG-108/context_ack.json,GATE:lighthouse-gte-90;VALIDATE:pnpm --filter @intelliflow/web typecheck;VALIDATE:pnpm --filter @intelliflow/web test --run,90/180/360,2026-12-16,2026-12-22,0,"IFC-098:FS,IFC-201:FS",
PG-109,Settings,Roles,Platform FE+BE (STOA-Foundation),"IFC-098,IFC-201",FILE:.specify/memory/Framework.md;FILE:audit-matrix.yml;ENV:Role editor;ENV:permissions;FILE:packages/db/prisma/schema-audit.prisma;FILE:docs/design/sitemap.md;FILE:docs/design/ui-flow-mapping.md;FILE:docs/design/page-registry.md;FILE:apps/project-tracker/docs/metrics/_global/flows/flow-index.md,"Response <200ms, Lighthouse ≥90, roles configured",Backlog,"Roles created, permissions set, inheritance working",26,ARTIFACT:apps/web/src/app/settings/roles/page.tsx;ARTIFACT:apps/web/src/components/settings/role-editor.tsx;ARTIFACT:apps/web/src/lib/settings/permission-manager.ts;EVIDENCE:.specify/sprints/sprint-26/attestations/PG-109/context_ack.json,GATE:lighthouse-gte-90;VALIDATE:pnpm --filter @intelliflow/web typecheck;VALIDATE:pnpm --filter @intelliflow/web test --run,90/180/360,2026-12-18,2026-12-24,0,"IFC-098:FS,IFC-201:FS",
PG-110,Settings,Permissions,Platform FE+BE (STOA-Foundation),"PG-109,IFC-201",FILE:.specify/memory/Framework.md;FILE:audit-matrix.yml;ENV:Permission matrix;ENV:testing;FILE:apps/web/src/app/settings/roles/page.tsx;FILE:docs/design/sitemap.md;FILE:docs/design/ui-flow-mapping.md;FILE:docs/design/page-registry.md;FILE:apps/project-tracker/docs/metrics/_global/flows/flow-index.md,"Response <200ms, Lighthouse ≥90, permissions enforced; artifacts: page.tsx, permission-matrix.tsx, permission-tester.ts; verified by: pnpm test",Backlog,"Permissions configured, testing enabled, enforcement active",26,ARTIFACT:apps/web/src/app/settings/permissions/page.tsx;ARTIFACT:apps/web/src/components/settings/permission-matrix.tsx;ARTIFACT:apps/web/src/lib/settings/permission-tester.ts;EVIDENCE:.specify/sprints/sprint-26/attestations/PG-110/context_ack.json,VALIDATE:pnpm test;GATE:lighthouse-gte-90,90/180/360,2026-12-20,2026-12-26,0,"PG-109:FS,IFC-201:FS",
PG-111,Settings,Teams,Platform FE+BE (STOA-Foundation),"PG-108,IFC-201",FILE:.specify/memory/Framework.md;FILE:audit-matrix.yml;ENV:Team structure;ENV:hierarchy;FILE:apps/web/src/app/settings/users/page.tsx;FILE:docs/design/sitemap.md;FILE:docs/design/ui-flow-mapping.md;FILE:docs/design/page-registry.md;FILE:apps/project-tracker/docs/metrics/_global/flows/flow-index.md,"Response <200ms, Lighthouse ≥90, teams organized; artifacts: page.tsx, team-manager.tsx, hierarchy-builder.ts",Backlog,"Teams created, hierarchy set, members assigned",26,ARTIFACT:apps/web/src/app/settings/teams/page.tsx;ARTIFACT:apps/web/src/components/settings/team-manager.tsx;ARTIFACT:apps/web/src/lib/settings/hierarchy-builder.ts;EVIDENCE:.specify/sprints/sprint-26/attestations/PG-111/context_ack.json,GATE:lighthouse-gte-90;VALIDATE:pnpm --filter @intelliflow/web typecheck;VALIDATE:pnpm --filter @intelliflow/web test --run,60/120/240,2026-12-22,2026-12-24,0,"PG-108:FS,IFC-201:FS",
PG-112,Settings,Audit Log,Platform FE+BE (STOA-Foundation),"IFC-098,IFC-124,IFC-201",FILE:.specify/memory/Framework.md;FILE:audit-matrix.yml;ENV:Activity tracking;ENV:filtering;FILE:docs/architecture/adr/ADR-008-audit-logging.md;FILE:packages/db/prisma/schema-audit.prisma;FILE:apps/api/src/shared/apps/api/src/shared/audit-encryption-module.ts;FILE:docs/design/sitemap.md;FILE:docs/design/ui-flow-mapping.md;FILE:docs/design/page-registry.md;FILE:apps/project-tracker/docs/metrics/_global/flows/flow-index.md,"Response <200ms, Lighthouse ≥90, logs searchable; artifacts: page.tsx, audit-viewer.tsx, log-exporter.ts",Backlog,"Logs captured, filtering working, export enabled",27,ARTIFACT:apps/web/src/app/settings/audit-log/page.tsx;ARTIFACT:apps/web/src/components/settings/audit-viewer.tsx;ARTIFACT:apps/web/src/lib/settings/log-exporter.ts;EVIDENCE:.specify/sprints/sprint-27/attestations/PG-112/context_ack.json,GATE:lighthouse-gte-90;VALIDATE:pnpm --filter @intelliflow/web typecheck;VALIDATE:pnpm --filter @intelliflow/web test --run,90/180/360,2026-12-27,2027-01-02,0,"IFC-098:FS,IFC-124:FS,IFC-201:FS",
PG-113,Settings,API Keys,Platform FE+BE (STOA-Foundation),PG-104,FILE:.specify/memory/Framework.md;FILE:audit-matrix.yml;ENV:Key generation;ENV:scopes;FILE:apps/web/src/app/settings/page.tsx;FILE:docs/design/sitemap.md;FILE:docs/design/ui-flow-mapping.md;FILE:docs/design/page-registry.md;FILE:apps/project-tracker/docs/metrics/_global/flows/flow-index.md,"Response <200ms, Lighthouse ≥90, keys secure; artifacts: page.tsx, key-generator.tsx, scope-manager.ts",Backlog,"Keys generated, scopes enforced, rotation enabled",27,ARTIFACT:apps/web/src/app/settings/api-keys/page.tsx;ARTIFACT:apps/web/src/components/settings/key-generator.tsx;ARTIFACT:apps/web/src/lib/settings/scope-manager.ts;EVIDENCE:.specify/sprints/sprint-27/attestations/PG-113/context_ack.json,GATE:lighthouse-gte-90;VALIDATE:pnpm --filter @intelliflow/web typecheck;VALIDATE:pnpm --filter @intelliflow/web test --run,60/120/240,2026-12-29,2026-12-31,0,PG-104:FS,
PG-114,Settings,Webhooks,Platform FE+BE (STOA-Foundation),"IFC-099,IFC-201",FILE:.specify/memory/Framework.md;FILE:audit-matrix.yml;ENV:Webhook config;ENV:testing;FILE:artifacts/reports/connector-status-dashboard.json;FILE:docs/design/sitemap.md;FILE:docs/design/ui-flow-mapping.md;FILE:docs/design/page-registry.md;FILE:apps/project-tracker/docs/metrics/_global/flows/flow-index.md,"Response <200ms, Lighthouse ≥90, webhooks firing; artifacts: page.tsx, webhook-config.tsx, webhook-tester.ts; verified by: pnpm test",Backlog,"Webhooks configured, testing enabled, logs available",27,ARTIFACT:apps/web/src/app/settings/webhooks/page.tsx;ARTIFACT:apps/web/src/components/settings/webhook-config.tsx;ARTIFACT:apps/web/src/lib/settings/webhook-tester.ts;EVIDENCE:.specify/sprints/sprint-27/attestations/PG-114/context_ack.json,VALIDATE:pnpm test;GATE:lighthouse-gte-90,90/180/360,2026-12-31,2027-01-06,0,"IFC-099:FS,IFC-201:FS",
PG-115,Settings,Integrations,Platform FE+BE (STOA-Foundation),"IFC-099,IFC-201",FILE:.specify/memory/Framework.md;FILE:audit-matrix.yml;ENV:Integration catalog;ENV:OAuth;FILE:artifacts/reports/connector-status-dashboard.json;FILE:docs/design/sitemap.md;FILE:docs/design/ui-flow-mapping.md;FILE:docs/design/page-registry.md;FILE:apps/project-tracker/docs/metrics/_global/flows/flow-index.md,"Response <200ms, Lighthouse ≥90, integrations connected; artifacts: page.tsx, integration-catalog.tsx, oauth-handler.ts; verified by: pnpm test:integration",Backlog,"Integrations listed, OAuth working, sync active",27,ARTIFACT:apps/web/src/app/settings/integrations/page.tsx;ARTIFACT:apps/web/src/components/settings/integration-catalog.tsx;ARTIFACT:apps/web/src/lib/settings/oauth-handler.ts;EVIDENCE:.specify/sprints/sprint-27/attestations/PG-115/context_ack.json,VALIDATE:pnpm test:integration;GATE:lighthouse-gte-90,90/180/360,2027-01-02,2027-01-08,0,"IFC-099:FS,IFC-201:FS",
PG-116,Settings,Notifications,Platform FE+BE (STOA-Foundation),PG-104,FILE:.specify/memory/Framework.md;FILE:audit-matrix.yml;ENV:Notification preferences;ENV:channels;FILE:apps/web/src/app/settings/page.tsx;FILE:docs/design/sitemap.md;FILE:docs/design/ui-flow-mapping.md;FILE:docs/design/page-registry.md;FILE:apps/project-tracker/docs/metrics/_global/flows/flow-index.md,"Response <200ms, Lighthouse ≥90, preferences saved; artifacts: page.tsx, notification-prefs.tsx, channel-config.ts",Backlog,"Preferences set, channels configured, delivery working",27,ARTIFACT:apps/web/src/app/settings/notifications/page.tsx;ARTIFACT:apps/web/src/components/notifications/notification-prefs.tsx;ARTIFACT:apps/web/src/lib/notifications/channel-config.ts;EVIDENCE:.specify/sprints/sprint-27/attestations/PG-116/context_ack.json,GATE:lighthouse-gte-90;VALIDATE:pnpm --filter @intelliflow/web typecheck;VALIDATE:pnpm --filter @intelliflow/web test --run,60/120/240,2027-01-04,2027-01-06,0,PG-104:FS,
PG-117,Settings,Localization,Platform FE+BE (STOA-Foundation),PG-104,FILE:.specify/memory/Framework.md;FILE:audit-matrix.yml;ENV:Language settings;ENV:translations;FILE:apps/web/src/app/settings/page.tsx;FILE:docs/design/sitemap.md;FILE:docs/design/ui-flow-mapping.md;FILE:docs/design/page-registry.md;FILE:apps/project-tracker/docs/metrics/_global/flows/flow-index.md,"Response <200ms, Lighthouse ≥90, languages switched; artifacts: page.tsx, language-selector.tsx, translation-manager.ts",Backlog,"Languages configured, translations loaded, switching smooth",27,ARTIFACT:apps/web/src/app/settings/localization/page.tsx;ARTIFACT:apps/web/src/components/settings/language-selector.tsx;ARTIFACT:apps/web/src/lib/settings/translation-manager.ts;EVIDENCE:.specify/sprints/sprint-27/attestations/PG-117/context_ack.json,GATE:lighthouse-gte-90;VALIDATE:pnpm --filter @intelliflow/web typecheck;VALIDATE:pnpm --filter @intelliflow/web test --run,60/120/240,2027-01-06,2027-01-08,0,PG-104:FS,
PG-118,Settings,Data Retention,Platform FE+BE (STOA-Foundation),IFC-058,FILE:.specify/memory/Framework.md;FILE:audit-matrix.yml;ENV:Retention policies;ENV:automation;FILE:docs/architecture/adr/ADR-007-data-governance.md;FILE:artifacts/reports/gdpr-compliance-checklist.xlsx;FILE:docs/design/sitemap.md;FILE:docs/design/ui-flow-mapping.md;FILE:docs/design/page-registry.md;FILE:apps/project-tracker/docs/metrics/_global/flows/flow-index.md,"Response <200ms, Lighthouse ≥90, policies enforced; artifacts: page.tsx, retention-policy.tsx, data-purger.ts",Backlog,"Policies configured, automation working, compliance met",28,ARTIFACT:apps/web/src/app/settings/data-retention/page.tsx;ARTIFACT:apps/web/src/components/settings/retention-policy.tsx;ARTIFACT:apps/web/src/lib/settings/data-purger.ts;EVIDENCE:.specify/sprints/sprint-28/attestations/PG-118/context_ack.json,GATE:lighthouse-gte-90;VALIDATE:pnpm --filter @intelliflow/web typecheck;VALIDATE:pnpm --filter @intelliflow/web test --run,90/180/360,2027-01-10,2027-01-16,0,IFC-058:FS,
PG-119,Settings,Compliance,Platform FE+BE (STOA-Foundation),IFC-058,FILE:.specify/memory/Framework.md;FILE:audit-matrix.yml;ENV:Compliance dashboard;ENV:reports;FILE:docs/architecture/adr/ADR-008-audit-logging.md;FILE:artifacts/reports/gdpr-compliance-checklist.xlsx;FILE:docs/design/sitemap.md;FILE:docs/design/ui-flow-mapping.md;FILE:docs/design/page-registry.md;FILE:apps/project-tracker/docs/metrics/_global/flows/flow-index.md,"Response <200ms, Lighthouse ≥90, compliance tracked; artifacts: page.tsx, compliance-dashboard.tsx, audit-reporter.ts",Backlog,"Dashboard live, reports generated, audits passed",28,ARTIFACT:apps/web/src/app/settings/compliance/page.tsx;ARTIFACT:apps/web/src/components/settings/compliance-dashboard.tsx;ARTIFACT:apps/web/src/lib/settings/audit-reporter.ts;EVIDENCE:.specify/sprints/sprint-28/attestations/PG-119/context_ack.json,GATE:lighthouse-gte-90;VALIDATE:pnpm --filter @intelliflow/web typecheck;VALIDATE:pnpm --filter @intelliflow/web test --run,90/180/360,2027-01-12,2027-01-18,0,IFC-058:FS,
PG-120,Settings,Security,Platform FE+BE (STOA-Foundation),"IFC-072,IFC-201",FILE:.specify/memory/Framework.md;FILE:audit-matrix.yml;ENV:Security settings;ENV:2FA config;FILE:docs/security/zero-trust-design.md;FILE:docs/design/sitemap.md;FILE:docs/design/ui-flow-mapping.md;FILE:docs/design/page-registry.md;FILE:apps/project-tracker/docs/metrics/_global/flows/flow-index.md,"Response <200ms, Lighthouse ≥90, security enforced; artifacts: page.tsx, security-config.tsx, 2fa-manager.ts",Backlog,"Settings configured, 2FA working, policies enforced",28,ARTIFACT:apps/web/src/app/settings/security/page.tsx;ARTIFACT:apps/web/src/components/security/security-config.tsx;ARTIFACT:apps/web/src/lib/security/2fa-manager.ts;EVIDENCE:.specify/sprints/sprint-28/attestations/PG-120/context_ack.json,GATE:lighthouse-gte-90;AUDIT:security-review;VALIDATE:pnpm --filter @intelliflow/web typecheck;VALIDATE:pnpm --filter @intelliflow/web test --run,120/240/480,2027-01-14,2027-01-21,0,"IFC-072:FS,IFC-201:FS",
PG-121,Settings,Import/Export,Platform FE+BE (STOA-Foundation),IFC-070,FILE:.specify/memory/Framework.md;FILE:audit-matrix.yml;ENV:Data import/export tools;FILE:artifacts/reports/data-validation-report.csv;FILE:docs/design/sitemap.md;FILE:docs/design/ui-flow-mapping.md;FILE:docs/design/page-registry.md;FILE:apps/project-tracker/docs/metrics/_global/flows/flow-index.md,"Response <200ms, Lighthouse ≥90, transfers working; artifacts: page.tsx, data-importer.tsx, data-exporter.ts",Backlog,"Imports processed, exports generated, mappings saved",28,ARTIFACT:apps/web/src/app/settings/import-export/page.tsx;ARTIFACT:apps/web/src/components/settings/data-importer.tsx;ARTIFACT:apps/web/src/lib/settings/data-exporter.ts;EVIDENCE:.specify/sprints/sprint-28/attestations/PG-121/context_ack.json,GATE:lighthouse-gte-90;VALIDATE:pnpm --filter @intelliflow/web typecheck;VALIDATE:pnpm --filter @intelliflow/web test --run,90/180/360,2027-01-16,2027-01-22,0,IFC-070:FS,
PG-122,Settings,Privacy Export,Platform FE+BE (STOA-Foundation),IFC-058,FILE:.specify/memory/Framework.md;FILE:audit-matrix.yml;ENV:GDPR export;ENV:data packages;FILE:docs/shared/review-checklist.md;FILE:docs/operations/pr-checklist.md;FILE:artifacts/reports/gdpr-compliance-checklist.xlsx;FILE:docs/design/sitemap.md;FILE:docs/design/ui-flow-mapping.md;FILE:docs/design/page-registry.md;FILE:apps/project-tracker/docs/metrics/_global/flows/flow-index.md,"Response <200ms, Lighthouse ≥90, exports compliant; artifacts: page.tsx, privacy-exporter.tsx, gdpr-packager.ts",Backlog,"Exports generated, packages complete, GDPR compliant",28,ARTIFACT:apps/web/src/app/settings/privacy/export/page.tsx;ARTIFACT:apps/web/src/components/settings/privacy-exporter.tsx;ARTIFACT:apps/web/src/lib/settings/gdpr-packager.ts;EVIDENCE:.specify/sprints/sprint-28/attestations/PG-122/context_ack.json,GATE:lighthouse-gte-90;VALIDATE:pnpm --filter @intelliflow/web typecheck;VALIDATE:pnpm --filter @intelliflow/web test --run,90/180/360,2027-01-17,2027-01-23,0,IFC-058:FS,
PG-123,Settings,Privacy Delete,Platform FE+BE (STOA-Foundation),IFC-058,FILE:.specify/memory/Framework.md;FILE:audit-matrix.yml;ENV:Right to erasure;ENV:confirmation;FILE:docs/shared/review-checklist.md;FILE:docs/operations/pr-checklist.md;FILE:artifacts/reports/gdpr-compliance-checklist.xlsx;FILE:docs/design/sitemap.md;FILE:docs/design/ui-flow-mapping.md;FILE:docs/design/page-registry.md;FILE:apps/project-tracker/docs/metrics/_global/flows/flow-index.md,"Response <200ms, Lighthouse ≥90, deletion complete; artifacts: page.tsx, data-eraser.tsx, deletion-audit.ts",Backlog,"Deletion working, confirmation required, audit logged",28,ARTIFACT:apps/web/src/app/settings/privacy/delete/page.tsx;ARTIFACT:apps/web/src/components/settings/data-eraser.tsx;ARTIFACT:apps/web/src/lib/settings/deletion-audit.ts;EVIDENCE:.specify/sprints/sprint-28/attestations/PG-123/context_ack.json,GATE:lighthouse-gte-90;VALIDATE:pnpm --filter @intelliflow/web typecheck;VALIDATE:pnpm --filter @intelliflow/web test --run,90/180/360,2027-01-18,2027-01-23,0,IFC-058:FS,
IFC-101,Validation,PHASE-039: Lead Aggregate and Value Objects,Backend Dev + Tech Lead (STOA-Domain),IFC-002,FILE:.specify/memory/Framework.md;FILE:audit-matrix.yml;POLICY:Bounded contexts defined;POLICY:IFC-002 completed;FILE:docs/planning/DDD-context-map.puml;FILE:packages/db/prisma/schema.prisma;FILE:docs/development/tdd-guidelines.md;FILE:docs/shared/review-checklist.md;FILE:docs/operations/quality-gates.md,"Lead aggregate, value objects, repository interfaces and domain services implemented; artifacts: PrismaLeadRepository.ts, context_ack.json; targets: >=90%; verified by: pnpm test, pnpm test:integration",Completed,"Design approved, unit tests ≥90% coverage, repository API stable",2,ARTIFACT:packages/adapters/src/repositories/PrismaLeadRepository.ts;ARTIFACT:packages/domain/src/**;ARTIFACT:apps/project-tracker/docs/metrics/_global/phase-validations/PHASE-039-validation.md;EVIDENCE:.specify/sprints/sprint-2/attestations/IFC-101/attestation.json;ARTIFACT:docs/architecture/adr/ADR-019-core-crm-foundation.md;ARTIFACT:docs/planning/prd-core-crm.md;ARTIFACT:packages/domain/src/shared/__tests__/AggregateRoot.test.ts;ARTIFACT:packages/domain/src/shared/__tests__/DomainEvent.test.ts;ARTIFACT:packages/domain/src/shared/__tests__/Entity.test.ts;ARTIFACT:packages/domain/src/shared/__tests__/ValueObject.test.ts;ARTIFACT:packages/domain/src/shared/__tests__/Result.test.ts,VALIDATE:pnpm test;VALIDATE:pnpm test:integration;AUDIT:design-review;AUDIT:code-review,120/240/480,2026-01-11,2026-01-20,100,IFC-002:FS,
IFC-102,Validation,PHASE-039: Contact Aggregate and Value Objects,Backend Dev + Tech Lead (STOA-Domain),IFC-002,IMPLEMENTS:FLOW-021;FILE:.specify/memory/Framework.md;FILE:audit-matrix.yml;POLICY:Bounded contexts defined;POLICY:IFC-002 completed;FILE:docs/planning/DDD-context-map.puml;FILE:packages/db/prisma/schema.prisma;FILE:docs/development/tdd-guidelines.md;FILE:docs/shared/review-checklist.md;FILE:docs/operations/quality-gates.md,"Contact aggregate implemented with value objects, repository, domain services; artifacts: PrismaContactRepository.ts, context_ack.json; targets: >=90%; verified by: pnpm test",Completed,"Design approved, unit tests ≥90% coverage, repository API stable",2,ARTIFACT:packages/adapters/src/repositories/PrismaContactRepository.ts;ARTIFACT:apps/project-tracker/docs/metrics/_global/phase-validations/PHASE-039-validation.md;EVIDENCE:.specify/sprints/sprint-2/attestations/IFC-102/attestation.json;ARTIFACT:docs/architecture/adr/ADR-019-core-crm-foundation.md;ARTIFACT:docs/planning/prd-core-crm.md,VALIDATE:pnpm test;AUDIT:design-review;AUDIT:code-review,120/240/480,2026-01-13,2026-01-22,100,IFC-002:FS,
IFC-103,Validation,PHASE-039: Account Aggregate and Value Objects,Backend Dev + Tech Lead (STOA-Domain),IFC-002,FILE:.specify/memory/Framework.md;FILE:audit-matrix.yml;POLICY:Bounded contexts defined;POLICY:IFC-002 completed;FILE:docs/planning/DDD-context-map.puml;FILE:packages/db/prisma/schema.prisma;FILE:docs/development/tdd-guidelines.md;FILE:docs/shared/review-checklist.md;FILE:docs/operations/quality-gates.md,"Account aggregate implemented with value objects, repository, domain services; artifacts: PrismaAccountRepository.ts, context_ack.json; targets: >=90%; verified by: pnpm test",Completed,"Design approved, unit tests ≥90% coverage, repository API stable",2,ARTIFACT:packages/adapters/src/repositories/PrismaAccountRepository.ts;ARTIFACT:apps/project-tracker/docs/metrics/_global/phase-validations/PHASE-039-validation.md;EVIDENCE:.specify/sprints/sprint-2/attestations/IFC-103/attestation.json;ARTIFACT:docs/architecture/adr/ADR-019-core-crm-foundation.md;ARTIFACT:docs/planning/prd-core-crm.md,VALIDATE:pnpm test;AUDIT:design-review;AUDIT:code-review,120/240/480,2026-01-15,2026-01-24,100,IFC-002:FS,
IFC-104,Validation,PHASE-039: Opportunity Aggregate and Value Objects,Backend Dev + Tech Lead (STOA-Domain),IFC-002,IMPLEMENTS:FLOW-008;FILE:.specify/memory/Framework.md;FILE:audit-matrix.yml;POLICY:Bounded contexts defined;POLICY:IFC-002 completed;FILE:docs/planning/DDD-context-map.puml;FILE:packages/db/prisma/schema.prisma;FILE:docs/development/tdd-guidelines.md;FILE:docs/shared/review-checklist.md;FILE:docs/operations/quality-gates.md,"Opportunity aggregate implemented with value objects, repository, domain services; artifacts: PrismaOpportunityRepository.ts, context_ack.json; targets: >=90%; verified by: pnpm test",Completed,"Design approved, unit tests ≥90% coverage, repository API stable",3,ARTIFACT:packages/adapters/src/repositories/PrismaOpportunityRepository.ts;ARTIFACT:apps/project-tracker/docs/metrics/_global/phase-validations/PHASE-039-validation.md;EVIDENCE:.specify/sprints/sprint-3/attestations/IFC-104/attestation.json;ARTIFACT:docs/architecture/adr/ADR-019-core-crm-foundation.md;ARTIFACT:docs/planning/prd-core-crm.md,VALIDATE:pnpm test;AUDIT:design-review;AUDIT:code-review,120/240/480,2026-01-25,2026-02-03,100,IFC-002:FS,
IFC-105,Validation,PHASE-039: Task Aggregate and Value Objects,Backend Dev + Tech Lead (STOA-Domain),IFC-002,FILE:.specify/memory/Framework.md;FILE:audit-matrix.yml;POLICY:Bounded contexts defined;POLICY:IFC-002 completed;FILE:docs/planning/DDD-context-map.puml;FILE:packages/db/prisma/schema.prisma;FILE:docs/development/tdd-guidelines.md;FILE:docs/shared/review-checklist.md;FILE:docs/operations/quality-gates.md,"Task aggregate implemented with value objects, repository, domain services; artifacts: PrismaTaskRepository.ts, context_ack.json; targets: >=90%; verified by: pnpm test",Completed,"Design approved, unit tests ≥90% coverage, repository API stable",3,ARTIFACT:packages/adapters/src/repositories/PrismaTaskRepository.ts;ARTIFACT:apps/project-tracker/docs/metrics/_global/phase-validations/PHASE-039-validation.md;EVIDENCE:.specify/sprints/sprint-3/attestations/IFC-105/attestation.json;ARTIFACT:docs/architecture/adr/ADR-019-core-crm-foundation.md;ARTIFACT:docs/planning/prd-core-crm.md,VALIDATE:pnpm test;AUDIT:design-review;AUDIT:code-review,120/240/480,2026-01-27,2026-02-05,100,IFC-002:FS,
IFC-106,Architecture,PHASE-039: Define Hexagonal module boundaries + create canonical packages/application + packages/adapters skeleton,Tech Lead + Backend Dev (STOA-Domain),IFC-002,FILE:.specify/memory/Framework.md;FILE:audit-matrix.yml;ENV:Domain model for all entities implemented;FILE:docs/architecture/hex-boundaries.md;FILE:docs/architecture/repo-layout.md;FILE:docs/planning/DDD-context-map.puml;FILE:packages/db/prisma/schema.prisma,"Application layer created (ports + use-cases); adapters layer created; module boundary rules enforced in CI; architecture tests passing; ADR updated; artifacts: hex-boundaries.md, repo-layout.md, context_ack.json; targets: >=100%",Completed,"No domain code depends on infrastructure, 100% adapters tested",1,ARTIFACT:docs/architecture/hex-boundaries.md;ARTIFACT:docs/architecture/repo-layout.md;ARTIFACT:apps/project-tracker/docs/metrics/_global/phase-validations/PHASE-039-validation.md;EVIDENCE:.specify/sprints/sprint-1/attestations/IFC-106/attestation.json;ARTIFACT:packages/application/src/errors/ApplicationErrors.ts;ARTIFACT:packages/adapters/src/**;ARTIFACT:packages/application/src/**;ARTIFACT:docs/architecture/adr/ADR-047-hexagonal-architecture.md;ARTIFACT:docs/architecture/overview.md;ARTIFACT:tests/architecture/dependency-rules.ts,VALIDATE:pnpm test;AUDIT:code-review,90/180/360,2025-12-28,2026-01-06,100,IFC-002:FS,
IFC-107,Infrastructure,PHASE-039: Implement Repositories and Factories,Backend Dev (STOA-Domain),"IFC-101,IFC-102,IFC-103,IFC-104,IFC-105",FILE:.specify/memory/Framework.md;FILE:audit-matrix.yml;ENV:Domain models implemented;FILE:packages/adapters/src/repositories/PrismaLeadRepository.ts;FILE:packages/adapters/src/repositories/PrismaContactRepository.ts;FILE:packages/adapters/src/repositories/PrismaAccountRepository.ts;FILE:packages/adapters/src/repositories/PrismaOpportunityRepository.ts;FILE:packages/adapters/src/repositories/PrismaTaskRepository.ts,"Repository implementations for all aggregates with Prisma, factories for entity creation; artifacts: context_ack.json; targets: >=90%; verified by: pnpm test, pnpm test:unit",Completed,"Repositories integrated with Prisma, tests coverage >90%",3,ARTIFACT:apps/project-tracker/docs/metrics/_global/phase-validations/PHASE-039-validation.md;EVIDENCE:.specify/sprints/sprint-3/attestations/IFC-107/attestation.json,VALIDATE:pnpm test;VALIDATE:pnpm test:unit;GATE:coverage-gte-90,120/240/480,2026-01-29,2026-02-07,100,"IFC-101:FS,IFC-102:FS,IFC-103:FS,IFC-104:FS,IFC-105:FS",
IFC-108,Validation,Implement Domain Services & Business Logic,Backend Dev (STOA-Domain),IFC-107,FILE:.specify/memory/Framework.md;FILE:audit-matrix.yml;ENV:Domain models and repositories implemented;FILE:docs/architecture/hex-boundaries.md;FILE:docs/planning/DDD-context-map.puml;FILE:docs/development/tdd-guidelines.md;FILE:docs/shared/review-checklist.md,"Domain services implemented for leads, contacts, accounts, opportunities, tasks; artifacts: context_ack.json; targets: >=90%; verified by: pnpm test, pnpm test:integration",Completed,"All business rules enforced, 90% test coverage",4,EVIDENCE:.specify/sprints/sprint-4/attestations/IFC-108/attestation.json,VALIDATE:pnpm test;VALIDATE:pnpm test:integration,120/240/480,2026-02-08,2026-02-17,100,IFC-107:FS,
IFC-109,Testing,"Define TDD Process, Coverage & Review Checklist",QA Lead + Tech Lead (STOA-Quality),IFC-002,FILE:.specify/memory/Framework.md;FILE:audit-matrix.yml;ENV:Testing infrastructure ready;FILE:docs/development/tdd-guidelines.md;FILE:docs/shared/review-checklist.md;FILE:docs/operations/pr-checklist.md;FILE:packages/db/prisma/schema.prisma,"TDD guidelines documented, coverage threshold 90% enforced via CI, code review checklist established; gates: coverage-gte-90",Completed,"Coverage ≥90%, zero lint errors, code review time <24h",2,ARTIFACT:docs/development/tdd-guidelines.md;ARTIFACT:infra/monitoring/ci-coverage-config.yml;ARTIFACT:docs/shared/review-checklist.md;EVIDENCE:.specify/sprints/sprint-2/attestations/IFC-109/attestation.json;ARTIFACT:docs/architecture/adr/ADR-019-core-crm-foundation.md;ARTIFACT:docs/planning/prd-core-crm.md,GATE:coverage-gte-90;VALIDATE:pnpm test,60/120/240,2026-01-11,2026-01-17,100,IFC-002:FS,
IFC-110,Testing,Write Unit & Integration Tests for Domain Entities,QA + Backend Dev (STOA-Quality),"IFC-101,IFC-102,IFC-103,IFC-104,IFC-105",FILE:.specify/memory/Framework.md;FILE:audit-matrix.yml;ENV:Domain models implemented;FILE:docs/architecture/hex-boundaries.md;FILE:docs/planning/DDD-context-map.puml;FILE:docs/development/tdd-guidelines.md;FILE:docs/shared/review-checklist.md;FILE:packages/adapters/src/repositories/PrismaLeadRepository.ts;FILE:packages/adapters/src/repositories/PrismaContactRepository.ts;FILE:packages/adapters/src/repositories/PrismaAccountRepository.ts;FILE:packages/adapters/src/repositories/PrismaOpportunityRepository.ts;FILE:packages/adapters/src/repositories/PrismaTaskRepository.ts,All domain entities have unit and integration tests covering business logic and repository operations; artifacts: context_ack.json; targets: >=90%; gates: coverage-gte-90,Completed,"Coverage ≥90%, tests passing in CI",4,EVIDENCE:.specify/sprints/sprint-4/attestations/IFC-110/attestation.json;ARTIFACT:docs/architecture/adr/ADR-019-core-crm-foundation.md;ARTIFACT:docs/planning/prd-core-crm.md,VALIDATE:pnpm test;GATE:coverage-gte-90,120/240/480,2026-02-10,2026-02-19,100,"IFC-101:FS,IFC-102:FS,IFC-103:FS,IFC-104:FS,IFC-105:FS",
IFC-111,Quality,Set up SonarQube and integrate static analysis into CI/CD,DevOps + QA Lead (STOA-Quality),ENV-005-AI,FILE:.specify/memory/Framework.md;FILE:audit-matrix.yml;POLICY:CI/CD pipeline established;FILE:docs/operations/quality-gates.md;FILE:.github/workflows/ci.yml,"SonarQube server running, CI pipeline pushes analysis, quality gates defined with OWASP and Clean Code rules; artifacts: sonar-project.properties, ci-sonar.yml, sonar-dashboard.md; targets: zero errors",Completed,"Sonar quality gate >= A, zero blocker issues",5,ARTIFACT:infra/monitoring/sonar-project.properties;ARTIFACT:infra/monitoring/ci-sonar.yml;ARTIFACT:docs/shared/sonar-dashboard.md;EVIDENCE:.specify/sprints/sprint-5/attestations/IFC-111/attestation.json,VALIDATE:pnpm typecheck,90/180/360,2026-02-22,2026-03-01,100,ENV-005-AI:FS,
IFC-112,Infrastructure,Implement blue/green deployment and rollback strategy,DevOps (STOA-Automation),ENV-005-AI,FILE:.specify/memory/Framework.md;FILE:audit-matrix.yml;ENV:Production environment configured;FILE:docs/operations/release-rollback.md;FILE:.github/workflows/ci.yml,"Blue/green deployment pipeline configured, automated health checks, rollback scripts ready; verified by: pnpm test",Completed,"Deployment switch <1m, no downtime",5,ARTIFACT:artifacts/metrics/blue-green-metrics.csv;EVIDENCE:.specify/sprints/sprint-5/attestations/IFC-112/attestation.json,VALIDATE:pnpm test,90/180/360,2026-02-24,2026-03-03,100,ENV-005-AI:FS,
IFC-113,Security,Implement secrets management and encryption at rest and in transit,Security Eng + DevOps (STOA-Security),"IFC-072,IFC-098",FILE:.specify/memory/Framework.md;FILE:audit-matrix.yml;POLICY:Database and environment established;FILE:docs/security/zero-trust-design.md;FILE:docs/security/owasp-checklist.md;FILE:packages/db/prisma/schema-audit.prisma,"Secrets stored in vault, encrypted connections (TLS/mTLS), data encryption implemented; artifacts: vault-config.yaml, encryption.ts, key-rotation.ts, encryption-tests.md; targets: >=100%",Completed,"No secrets in repo, 100% encrypted endpoints",10,ARTIFACT:infra/monitoring/vault-config.yaml;ARTIFACT:apps/api/src/security/encryption.ts;ARTIFACT:apps/api/src/security/key-rotation.ts;ARTIFACT:docs/security/encryption-tests.md;EVIDENCE:.specify/sprints/sprint-10/attestations/IFC-113/attestation.json,VALIDATE:pnpm typecheck;VALIDATE:pnpm test,180/360/720,2026-05-03,2026-05-14,100,"IFC-072:FS,IFC-098:FS",
IFC-114,Security,Implement API rate limiting and DDoS protection,Backend Dev + DevOps (STOA-Automation),"IFC-003,IFC-072",FILE:.specify/memory/Framework.md;FILE:audit-matrix.yml;POLICY:API endpoints defined;FILE:docs/security/zero-trust-design.md;FILE:docs/security/owasp-checklist.md;FILE:docs/shared/review-checklist.md;FILE:docs/operations/pr-checklist.md;FILE:apps/api/src/trpc.ts,"Rate limiting middleware in API, WAF configured for DDoS, tests for request bursts",Completed,"No request saturates system, response stable under load (44 tests passed)",7,ARTIFACT:apps/api/src/middleware/rate-limit.ts;ARTIFACT:infra/monitoring/waf-config.json;ARTIFACT:artifacts/reports/ddos-test-report.txt;EVIDENCE:.specify/sprints/sprint-7/attestations/IFC-114/attestation.json,VALIDATE:pnpm test,120/240/480,2026-03-22,2026-04-01,100,"IFC-003:FS,IFC-072:FS",
IFC-115,Resilience,Setup backups and disaster recovery plan,DevOps + DBA (STOA-Automation),IFC-071,FILE:.specify/memory/Framework.md;FILE:audit-matrix.yml;ENV:Production environment configured;FILE:docs/shared/multi-region-architecture.puml,"Automated backups scheduled, restore scripts tested, DR documentation prepared; targets: >=100%",Backlog,"RPO <5m, RTO <30m, backup success rate 100%",25,ARTIFACT:artifacts/misc/backup-scripts.sh;ARTIFACT:docs/shared/dr-plan.md;ARTIFACT:artifacts/reports/restore-test-report.csv;EVIDENCE:.specify/sprints/sprint-25/attestations/IFC-115/context_ack.json,VALIDATE:pnpm test,180/360/720,2026-11-29,2026-12-10,0,IFC-071:FS,
IFC-116,Observability,"Instrument application with OpenTelemetry, unify logs, metrics and traces",DevOps + SRE (STOA-Automation),IFC-074,FILE:.specify/memory/Framework.md;FILE:audit-matrix.yml;ENV:OpenTelemetry integrated;ENV:Sentry configured;FILE:docs/architecture/hex-boundaries.md;FILE:infra/monitoring/sentry-project-config.json,"All services emit structured logs, traces and metrics; dashboards and alerts created; SLOs defined; targets: >=100%, <2min",Completed,MTTD <2min (actual: 1.2min); 100% services instrumented,9,ARTIFACT:infra/monitoring/otel-config.yaml;ARTIFACT:docs/security/log-schema.md;ARTIFACT:artifacts/reports/dashboards.json;ARTIFACT:infra/monitoring/alert-rules.yml;EVIDENCE:.specify/sprints/sprint-9/attestations/IFC-116/attestation.json,VALIDATE:pnpm typecheck,120/240/480,2026-04-19,2026-04-30,100,IFC-074:FS,
IFC-117,AI Insights,"Monitor AI models for drift, latency, hallucination and ROI",AI Specialist + SRE (STOA-Intelligence),"IFC-005,AUTOMATION-002",FILE:.specify/memory/Framework.md;FILE:audit-matrix.yml;ENV:AI pipelines deployed;FILE:packages/db/prisma/schema.prisma;FILE:docs/operations/quality-gates.md;FILE:apps/ai-worker/src/chains/scoring.chain.ts;FILE:infra/monitoring/optimization-loop.yaml,Metrics collected for AI models; dashboards show drift/hallucination; alerts configured; targets: >=5%; AI metrics must be collected by actual code paths and pushed to dashboards,Completed,"Drift detected within 1 day, hallucination rate <5%, ROI tracked",6,ARTIFACT:artifacts/metrics/ai-metrics.json;ARTIFACT:docs/planning/drift-dashboard.md;ARTIFACT:infra/monitoring/alerts-config.yaml;ARTIFACT:infra/monitoring/ai-grafana-dashboard.json;ARTIFACT:infra/monitoring/ai-prometheus-rules.yaml;ARTIFACT:apps/ai-worker/src/metrics/prometheus-exporter.ts;EVIDENCE:.specify/sprints/sprint-6/attestations/IFC-117/attestation.json,GATE:integration-wired;VALIDATE:pnpm typecheck,180/360/720,2026-05-05,2026-05-16,100,"IFC-005:FS,AUTOMATION-002:FS",
IFC-118,Risk Mgmt,Establish and maintain a risk register with mitigation actions,PM + Tech Lead (STOA-Foundation),"IFC-010,IFC-054",FILE:.specify/memory/Framework.md;FILE:audit-matrix.yml;POLICY:Project charter and backlog defined;FILE:docs/planning/decision-gate-1.md;FILE:artifacts/reports/code-analysis/debt-analysis.json,"Risk register created, risks scored by impact/likelihood, mitigation owners assigned; review scheduled per sprint; artifacts: risk-register.csv, risk-mitigation-plan.md, risk-review-agenda.md",Completed,"25 risks tracked, all mitigation owners assigned, sprint review scheduled",8,ARTIFACT:docs/compliance-and-governance/governance/risk-register.csv;ARTIFACT:docs/shared/risk-mitigation-plan.md;ARTIFACT:docs/shared/risk-review-agenda.md;EVIDENCE:.specify/sprints/sprint-8/attestations/IFC-118/attestation.json,AUDIT:code-review,60/120/240,2026-04-05,2026-04-11,100,"IFC-010:FS,IFC-054:FS",
IFC-119,Planning,"Define recurring backlog refinement, sprint planning, review and retrospective ceremonies",Scrum Master + PM (STOA-Foundation),,FILE:.specify/memory/Framework.md;FILE:audit-matrix.yml;POLICY:Sprint cadence defined;FILE:docs/shared/review-checklist.md;FILE:docs/operations/pr-checklist.md;FILE:docs/operations/project-playbook.md,Ceremony schedule published; agendas and templates created; meeting outcomes documented; targets: >=100%,Completed,Backlog refined ahead of sprint; retro action items completed; schedule adherence 100%,1,ARTIFACT:docs/planning/ceremony-calendar.ics;ARTIFACT:artifacts/reports/sprint-11-completion-report.md;ARTIFACT:docs/planning/templates/backlog-refinement.md;ARTIFACT:docs/planning/templates/daily-standup.md;ARTIFACT:docs/planning/templates/sprint-planning.md;ARTIFACT:docs/planning/templates/sprint-retrospective.md;ARTIFACT:docs/planning/templates/sprint-review.md;EVIDENCE:.specify/sprints/sprint-1/attestations/IFC-119/attestation.json,VALIDATE:pnpm typecheck,60/120/240,2025-12-28,2026-01-03,100,,
IFC-120,Auth Pages,Implement password reset and email verification flows,Frontend Dev + Backend Dev (STOA-Domain),"PG-019,PG-020,PG-023,IFC-006",FILE:.specify/memory/Framework.md;FILE:audit-matrix.yml;FILE:apps/web/src/app/(public)/login/page.tsx;FILE:apps/web/src/app/(public)/signup/page.tsx;FILE:apps/web/src/app/(public)/forgot-password/page.tsx;FILE:apps/web/src/app/(public)/reset-password/[token]/page.tsx;FILE:apps/web/src/components/shared/email-verification.tsx;FILE:apps/web/src/lib/shared/account-activation.ts;FILE:apps/web/src/lib/shared/reset-token.ts;ENV:Auth API ready,"Users can request password reset, receive secure token, reset password; email verification link sent on sign up; targets: <30s; verified by: pnpm test, pnpm test:e2e",Completed,"Reset/verification flows succeed <30s, security tests pass",14,ARTIFACT:apps/api/src/modules/auth/auth.router.ts;ARTIFACT:packages/validators/src/auth.ts;ARTIFACT:apps/api/src/lib/supabase.ts;ARTIFACT:apps/web/src/app/(public)/reset-password/callback/page.tsx;ARTIFACT:apps/web/src/app/(public)/verify-email/callback/page.tsx;ARTIFACT:apps/web/src/components/shared/email-verification.tsx;ARTIFACT:apps/web/src/components/shared/password-reset.tsx;EVIDENCE:.specify/sprints/sprint-14/attestations/IFC-120/attestation.json,VALIDATE:pnpm test;VALIDATE:pnpm --filter @intelliflow/api test --run,120/240/480,2026-02-20,2026-02-21,100,"PG-019:FS,PG-020:FS,PG-023:FS,IFC-006:FS",
PG-124,Auth Pages,Implement SSO (SAML/OAuth) and social login providers,Frontend Dev + Backend Dev (STOA-Domain),"PG-015,PG-024,IFC-006",FILE:.specify/memory/Framework.md;FILE:audit-matrix.yml;FILE:apps/web/src/app/(public)/login/page.tsx;FILE:apps/web/src/app/(public)/signup/page.tsx;FILE:apps/web/src/app/(public)/auth/callback/page.tsx;FILE:apps/web/src/components/shared/auth-providers.tsx;FILE:apps/web/src/components/shared/oauth-callback.tsx;FILE:apps/web/src/lib/shared/token-exchange.ts;FILE:apps/api/src/lib/supabase.ts;ENV:Identity provider configured,"Users can sign in via Google, Microsoft, etc.; SAML integration with enterprise providers; artifacts: page.tsx, sso-handler.ts, provider-config.json; targets: >=1%, <2s; verified by: pnpm test, pnpm test:e2e",Completed,"SSO login <2s, error rate <1%",15,ARTIFACT:apps/web/src/app/(public)/sso/page.tsx;ARTIFACT:apps/web/src/lib/auth/sso-handler.ts;ARTIFACT:infra/monitoring/provider-config.json;EVIDENCE:.specify/sprints/sprint-15/attestations/PG-124/attestation.json,VALIDATE:pnpm test;VALIDATE:pnpm --filter @intelliflow/web test --run,120/240/480,2026-07-12,2026-02-27,100,"PG-015:FS,PG-024:FS,IFC-006:FS",
PG-125,Auth Pages,Add MFA using TOTP or SMS and allow users to enable/disable from security settings,Frontend Dev + Backend Dev (STOA-Domain),"PG-021,PG-022,IFC-006",FILE:.specify/memory/Framework.md;FILE:audit-matrix.yml;FILE:apps/web/src/app/settings/security/mfa/page.tsx;FILE:apps/web/src/app/(public)/mfa/verify/page.tsx;FILE:apps/web/src/components/auth/mfa-challenge.tsx;FILE:apps/web/src/components/shared/mfa-verification.tsx;FILE:apps/web/src/lib/shared/backup-codes.ts;FILE:apps/web/src/lib/shared/code-validator.ts;FILE:packages/validators/src/auth.ts;ENV:OTP provider accounts ready,"MFA enrollment, challenge, backup codes implemented; targets: >=50%; verified by: pnpm test, pnpm test:e2e",Completed,"MFA adoption >50%, bypass not possible",16,ARTIFACT:apps/web/src/app/settings/security/mfa/page.tsx;ARTIFACT:apps/web/src/lib/security/mfa-service.ts;ARTIFACT:apps/web/src/lib/security/backup-codes.ts;ARTIFACT:tests/e2e/mfa.spec.ts;EVIDENCE:.specify/sprints/sprint-16/attestations/PG-125/attestation.json;EVIDENCE:.specify/sprints/sprint-16/attestations/PG-125/attestation.json,VALIDATE:pnpm test;VALIDATE:pnpm test:e2e,120/240/480,2026-03-08,2026-03-08,100,"PG-021:FS,PG-022:FS,IFC-006:FS",
IFC-121,Security,Schedule periodic secret rotation and dependency vulnerability updates,DevOps + Security (STOA-Security),IFC-113,FILE:.specify/memory/Framework.md;FILE:audit-matrix.yml;ENV:Secret management in place;FILE:docs/security/zero-trust-design.md;FILE:docs/security/owasp-checklist.md;FILE:infra/monitoring/vault-config.yaml,"Rotations automated via CI; dependencies scanned weekly; patches applied; artifacts: rotation-schedule.yaml, dependency-scan-report.md, dependency-scan.yml",Completed,No outdated secrets; CVE remediation within SLA,10,ARTIFACT:infra/monitoring/rotation-schedule.yaml;ARTIFACT:docs/security/dependency-scan-report.md;ARTIFACT:.github/workflows/dependency-scan.yml;EVIDENCE:.specify/sprints/sprint-10/attestations/IFC-121/attestation.json,VALIDATE:pnpm typecheck;VALIDATE:pnpm test,90/180/360,2026-05-07,2026-05-14,100,IFC-113:FS,
IFC-122,Resilience,Implement circuit breaker and retry policies for external service calls,Backend Dev (STOA-Domain),"IFC-106,IFC-107",FILE:.specify/memory/Framework.md;FILE:audit-matrix.yml;POLICY:Ports and adapters established;FILE:docs/architecture/hex-boundaries.md;FILE:docs/operations/quality-gates.md;FILE:docs/company/brand/visual-identity.md,"Circuit breaker library integrated; retries with exponential backoff; fallback strategies defined; artifacts: circuit-breaker.ts, retry-policy.ts, circuit-breaker.spec.ts; targets: >=50%; verified by: pnpm test",Completed,Error rate reduced by 50%; no cascading failures (61 tests passed),7,ARTIFACT:packages/platform/src/resilience/circuit-breaker.ts;ARTIFACT:packages/platform/src/resilience/retry-policy.ts;ARTIFACT:packages/platform/src/resilience/resilient-call.ts;ARTIFACT:tests/circuit-breaker.spec.ts;EVIDENCE:.specify/sprints/sprint-7/attestations/IFC-122/attestation.json,VALIDATE:pnpm test,90/180/360,2026-03-24,2026-04-01,100,"IFC-106:FS,IFC-107:FS",
IFC-123,Performance,Design caching strategy (Redis/CDN) and tune Prisma queries,Backend Dev + SRE (STOA-Domain),"IFC-007,IFC-087",FILE:.specify/memory/Framework.md;FILE:audit-matrix.yml;ENV:Backend endpoints implemented;FILE:packages/db/prisma/schema.prisma;FILE:docs/shared/review-checklist.md;FILE:docs/operations/pr-checklist.md;FILE:docs/design/token-mapping.md;FILE:docs/company/brand/visual-identity.md;FILE:tools/scripts/k6/load-test.js;FILE:artifacts/benchmarks/edge-performance-map.json,"Layered caching added, critical queries optimized, cache invalidation strategy documented; targets: >=30%, >=90%",Backlog,"p99 latency reduced 30%, cache hit rate >90%",21,ARTIFACT:apps/api/src/shared/cache-config.ts;ARTIFACT:artifacts/benchmarks/performance-benchmarks.csv;ARTIFACT:docs/shared/cache-invalidation.md;EVIDENCE:.specify/sprints/sprint-21/attestations/IFC-123/context_ack.json,VALIDATE:pnpm --filter @intelliflow/api typecheck;VALIDATE:pnpm --filter @intelliflow/api test --run,120/240/480,2026-10-04,2026-10-15,0,"IFC-007:FS,IFC-087:FS",
IFC-124,Compliance,Encrypt and aggregate audit logs; automate compliance reporting,Security Eng + Compliance (STOA-Security),IFC-098,FILE:.specify/memory/Framework.md;FILE:audit-matrix.yml;ENV:Audit logging implemented;FILE:docs/architecture/adr/ADR-008-audit-logging.md;FILE:docs/planning/DDD-context-map.puml;FILE:packages/db/prisma/schema.prisma;FILE:docs/operations/quality-gates.md;FILE:packages/db/prisma/schema-audit.prisma,"Audit logs encrypted and stored centrally; scheduled exports for compliance frameworks; data minimization applied; artifacts: encryption.ts, audit-logger.ts, retention-policy.md, compliance-report.md",Completed,"Audit retention meets regulatory needs (GDPR, SOC2, ISO 27001); report generation automated",9,ARTIFACT:apps/api/src/security/encryption.ts;ARTIFACT:apps/api/src/security/audit-logger.ts;ARTIFACT:docs/shared/retention-policy.md;ARTIFACT:docs/compliance-and-governance/compliance/compliance-report.md;EVIDENCE:.specify/sprints/sprint-9/attestations/IFC-124/attestation.json,VALIDATE:pnpm typecheck;VALIDATE:pnpm test,90/180/360,2026-04-21,2026-04-30,100,IFC-098:FS,
PG-126,Public Pages,"Add in‑app onboarding, guided product tours and feedback collection",UX Designer + Frontend Dev (STOA-Domain),"PG-001,PG-002",FILE:.specify/memory/Framework.md;FILE:audit-matrix.yml;ENV:Design ready;FILE:docs/shared/review-checklist.md;FILE:docs/operations/pr-checklist.md;FILE:docs/company/brand/visual-identity.md;FILE:apps/web/src/app/(public)/page.tsx;FILE:apps/web/src/app/(public)/features/page.tsx,Users see guided tours on first login; ability to replay; feedback widget integrated; targets: >=70%; verified by: pnpm test,Completed,Onboarding completion >70%; NPS score improvement,17,ARTIFACT:artifacts/misc/onboarding-config.json;ARTIFACT:apps/web/src/components/public/tour-components.tsx;ARTIFACT:apps/web/src/components/public/feedback-widget-public.tsx;ARTIFACT:apps/web/src/lib/public/feedback-service.ts;ARTIFACT:apps/web/src/lib/public/tour-storage.ts;ARTIFACT:apps/web/src/lib/public/tour-config.ts;ARTIFACT:apps/api/src/modules/public-feedback/public-feedback.router.ts;ARTIFACT:apps/api/src/modules/public-feedback/public-feedback.service.ts;ARTIFACT:apps/api/src/security/public-rate-limiter.ts;ARTIFACT:packages/validators/src/public-onboarding.ts;ARTIFACT:packages/application/src/ports/repositories/PublicFeedbackRepositoryPort.ts;ARTIFACT:packages/adapters/src/public-feedback/PrismaPublicFeedbackRepository.ts;ARTIFACT:packages/db/prisma/migrations/20260424210000_public_feedback_pg126/migration.sql;ARTIFACT:tests/e2e/features-tour.spec.ts;SPEC:.specify/sprints/sprint-17/specifications/PG-126-spec.md;PLAN:.specify/sprints/sprint-17/planning/PG-126-plan.md;EVIDENCE:.specify/sprints/sprint-17/attestations/PG-126/context_pack.md;EVIDENCE:.specify/sprints/sprint-17/attestations/PG-126/attestation.json;EVIDENCE:.specify/sprints/sprint-17/attestations/PG-126/attestation.json,VALIDATE:pnpm test;GATE:coverage-gte-90;GATE:lighthouse-gte-90,90/180/360,2026-08-09,2026-08-18,100,"PG-001:FS,PG-002:FS",
PG-127,Public Pages,"Partner Application Workflow - Dedicated partner application form with specialized fields, routing, and onboarding process",Growth FE+BE (STOA-Foundation),"PG-006,PG-005,GTM-002",FILE:docs/design/page-registry.md;FILE:.specify/memory/Framework.md;FILE:audit-matrix.yml;ENV:Partner page live;ENV:Contact form exists;FILE:apps/web/src/app/(public)/partners/page.tsx;FILE:apps/web/src/app/(public)/contact/page.tsx;FILE:packages/validators/src/contact-form.ts;FILE:docs/company/messaging/positioning.md;FILE:docs/company/brand/visual-identity.md;FILE:docs/company/brand/style-guide.md;FILE:docs/company/brand/accessibility-patterns.md,"Dedicated partner application form; specialized fields (company size, integration type, use case); separate routing/CRM tagging; partner-specific auto-response; artifacts: page.tsx, partner-application.ts, application-handler.ts; targets: Response <200ms, Lighthouse >=90, >=90% coverage; verified by: pnpm test",Backlog,Partner applications routed correctly; distinct from general contacts; onboarding workflow initiated; conversion rate tracked,20,ARTIFACT:apps/web/src/app/(public)/partners/apply/page.tsx;ARTIFACT:packages/validators/src/partner-application.ts;ARTIFACT:apps/web/src/lib/partners/application-handler.ts;ARTIFACT:apps/web/src/lib/partners/__tests__/application-handler.test.ts;ARTIFACT:apps/web/src/app/(public)/partners/apply/__tests__/page.test.tsx;EVIDENCE:.specify/sprints/sprint-20/attestations/PG-127/context_ack.json,VALIDATE:pnpm test;GATE:lighthouse-gte-90;GATE:coverage-gte-90,120/240/480,2026-09-20,2026-10-01,0,"PG-006:FS,PG-005:FS,GTM-002:FS",
IFC-125,AI Foundation,"Implement guardrails for prompt injection, data leakage, and monitor AI bias",AI Specialist + Security (STOA-Security),"IFC-005,IFC-008",FILE:.specify/memory/Framework.md;FILE:audit-matrix.yml;ENV:AI models integrated;FILE:docs/architecture/adr/ADR-007-data-governance.md;FILE:docs/shared/review-checklist.md;FILE:docs/operations/pr-checklist.md;FILE:apps/ai-worker/src/chains/scoring.chain.ts;FILE:docs/compliance-and-governance/compliance/compliance-report.md,"Prompt sanitization, output redaction, bias detection metrics; incidents logged; artifacts: prompt-sanitizer.ts, bias-metrics.csv, ai-guardrails-report.md; targets: zero errors; verified by: pnpm test; GuardrailsAIService must have audit logger integration completed, not deferred with TODO",Completed,Zero prompt injection incidents; bias score below threshold,6,SPEC:.specify/sprints/sprint-6/specifications/IFC-125-spec.md;PLAN:.specify/sprints/sprint-6/planning/IFC-125-plan.md;EVIDENCE:.specify/sprints/sprint-6/attestations/IFC-125/context_pack.md;EVIDENCE:.specify/sprints/sprint-6/attestations/IFC-125/attestation.json;ARTIFACT:apps/api/src/shared/prompt-sanitizer.ts;ARTIFACT:artifacts/metrics/bias-metrics.csv;ARTIFACT:docs/shared/ai-guardrails-report.md,VALIDATE:pnpm test;GATE:no-deferred-audit-logging,180/360/720,2026-05-17,2026-05-28,100,"IFC-005:FS,IFC-008:FS",
IFC-126,Documentation,Continuously maintain ADR registry and developer guide updates,Tech Writer + PM (STOA-Foundation),"IFC-100,GOV-001",FILE:.specify/memory/Framework.md;FILE:audit-matrix.yml;ENV:ADR templates ready;FILE:docs/architecture/adr/template.md;FILE:docs/company/brand/visual-identity.md;FILE:docs/shared/adr-index.md,"All significant design decisions captured via ADRs; developer guide updated per sprint; targets: >=100%, >=80%",Completed,ADR coverage 100%; developer satisfaction >80%,7,ARTIFACT:docs/development/dev-guide.md;ARTIFACT:artifacts/reports/adr-index.csv;EVIDENCE:.specify/sprints/sprint-7/attestations/IFC-126/attestation.json,AUDIT:code-review;GATE:coverage-gte-80,60/120/240,2026-05-31,2026-06-06,100,"IFC-100:FS,GOV-001:FS",
IFC-127,Security,Implement tenant isolation at database and application layers,Backend Dev (STOA-Domain),"IFC-098,IFC-072",FILE:.specify/memory/Framework.md;FILE:audit-matrix.yml;ENV:Supabase and RLS features studied;FILE:docs/architecture/adr/ADR-004-multi-tenancy.md;FILE:docs/architecture/adr/ADR-007-data-governance.md;FILE:docs/architecture/hex-boundaries.md;FILE:packages/db/prisma/schema.prisma;FILE:docs/security/zero-trust-design.md;FILE:docs/security/owasp-checklist.md;FILE:packages/db/prisma/schema-audit.prisma,"Row‑level security policies applied; tenant context enforced in services; per‑tenant resource limits; artifacts: rls-policies.sql, tenant-context.ts, context_ack.json; verified by: pnpm test",Completed,No cross‑tenant data access; isolation tests pass,5,SPEC:.specify/sprints/sprint-5/specifications/IFC-127-spec.md;PLAN:.specify/sprints/sprint-5/planning/IFC-127-plan.md;EVIDENCE:.specify/sprints/sprint-5/attestations/IFC-127/context_pack.md;EVIDENCE:.specify/sprints/sprint-5/attestations/IFC-127/attestation.json;ARTIFACT:infra/supabase/migrations/20250124000000_rls_policies.sql;ARTIFACT:infra/supabase/migrations/20260103000000_add_tenant_isolation.sql;ARTIFACT:apps/api/src/security/tenant-context.ts;ARTIFACT:infra/supabase/migrations/20260103000000_add_tenant_isolation.sql;ARTIFACT:infra/supabase/rls-policies.sql,VALIDATE:pnpm test;AUDIT:security-review,180/360/720,2026-05-03,2026-05-14,100,"IFC-098:FS,IFC-072:FS",
IFC-128,AI Foundation,Establish AI output review and manual fallback processes,QA Lead + Tech Lead (STOA-Quality),ENV-017-AI,FILE:.specify/memory/Framework.md;FILE:audit-matrix.yml;ENV:AI generation features integrated;FILE:docs/shared/review-checklist.md;FILE:docs/operations/pr-checklist.md;FILE:infra/monitoring/test-orchestration.json,"All AI-generated outputs (code, tests, docs) reviewed by humans; fallback processes documented and tested; targets: zero errors; BaseAgent must not contain placeholder demonstration code",Completed,AI suggestions accepted vs rejected ratio tracked; zero regressions from AI outputs,3,ARTIFACT:docs/shared/ai-review-checklist.md;ARTIFACT:docs/shared/fallback-procedure.md;EVIDENCE:.specify/sprints/sprint-3/attestations/IFC-128/attestation.json,AUDIT:code-review;VALIDATE:pnpm test;GATE:no-placeholder-code,90/180/360,2026-01-25,2026-02-03,100,ENV-017-AI:FS,
IFC-129,Testing,Write UI and contract tests for core pages and tRPC endpoints,QA + Frontend Dev (STOA-Quality),IFC-110,FILE:.specify/memory/Framework.md;FILE:audit-matrix.yml;ENV:Core pages built;FILE:docs/architecture/adr/ADR-001-modern-stack.md;FILE:docs/development/tdd-guidelines.md;FILE:docs/shared/review-checklist.md;FILE:docs/company/brand/visual-identity.md,"Playwright/Cypress tests cover navigation, forms, interactive components; contract tests validate tRPC endpoints; artifacts: ui-coverage.html, context_ack.json; targets: >=90%, <5min; gates: coverage-gte-90",Completed,"Coverage ≥90%, tests run <5min",6,ARTIFACT:artifacts/reports/ui-coverage.html;EVIDENCE:.specify/sprints/sprint-6/attestations/IFC-129/attestation.json,VALIDATE:pnpm test;GATE:coverage-gte-90,120/240/480,2026-03-08,2026-03-18,100,IFC-110:FS,
IFC-130,Validation,"Release governance: staging auto-deploy, promotion policy, quality/security gates, rollback criteria",DevOps Lead (STOA-Automation),"ENV-005-AI,IFC-111",FILE:.specify/memory/Framework.md;FILE:audit-matrix.yml;POLICY:CI/CD pipeline exists; environments defined;FILE:docs/security/zero-trust-design.md;FILE:docs/development/tdd-guidelines.md;FILE:docs/shared/review-checklist.md;FILE:docs/operations/quality-gates.md;FILE:docs/operations/pr-checklist.md;FILE:docs/operations/release-rollback.md;FILE:docs/architecture/decision-workflow.md;FILE:.github/workflows/ci.yml;FILE:infra/monitoring/sonar-project.properties,Promotion workflow documented; staging deploy automated; prod promotion requires gate pass + approval; rollback playbook defined; release checklist template in repo; targets: >=95%,Completed,Staging deploy success >=95%; prod promotion time <=30 min; rollback tested in staging,5,ARTIFACT:docs/release/promotion-policy.md;ARTIFACT:.github/workflows/release.yml;ARTIFACT:docs/operations/runbooks/release-checklist.md;EVIDENCE:.specify/sprints/sprint-5/attestations/IFC-130/attestation.json;ARTIFACT:docs/architecture/adr/ADR-021-governance-ops-release.md;ARTIFACT:docs/planning/prd-release-governance.md,AUDIT:code-review,90/180/360,2026-02-26,2026-03-05,100,"ENV-005-AI:FS,IFC-111:FS",
IFC-131,Foundation Setup,Architecture boundary enforcement: domain/infrastructure dependency rules + architecture tests in CI,Tech Lead (STOA-Foundation),IFC-106,FILE:.specify/memory/Framework.md;FILE:audit-matrix.yml;POLICY:Ports/adapters defined; repo structure established;FILE:docs/architecture/adr/ADR-001-modern-stack.md;FILE:docs/architecture/hex-boundaries.md;FILE:docs/architecture/repo-layout.md;FILE:docs/planning/DDD-context-map.puml;FILE:docs/development/tdd-guidelines.md;FILE:docs/operations/quality-gates.md;FILE:docs/architecture/decision-workflow.md,Module boundaries enforced; forbidden dependency rules added; architecture tests run in CI; documentation + ADR added,Completed,0 boundary violations on main; CI blocks non-compliant changes,4,ARTIFACT:docs/architecture/hex-boundaries.md;ARTIFACT:docs/architecture/adr/ADR-010-architecture-boundary-enforcement.md;EVIDENCE:.specify/sprints/sprint-4/attestations/IFC-131/attestation.json,AUDIT:code-review;VALIDATE:pnpm test,90/180/360,2026-02-12,2026-02-19,100,IFC-106:FS,
IFC-132,Security,Supply chain security: dependency pinning + SBOM generation in CI (npm/pnpm + container),Security Engineer + Backend Dev (STOA-Security),ENV-005-AI,FILE:.specify/memory/Framework.md;FILE:audit-matrix.yml;POLICY:CI pipeline available; container build defined;FILE:docs/security/zero-trust-design.md;FILE:docs/security/owasp-checklist.md;FILE:docs/operations/quality-gates.md;FILE:.github/workflows/ci.yml,Dependencies pinned/locked; SBOM generated per build; SBOM stored as artifact; baseline policy documented; targets: >=100%,Completed,100% builds produce SBOM; 0 unsigned/untracked dependency changes merged,6,ARTIFACT:.github/workflows/security-sbom.yml;ARTIFACT:docs/security/supply-chain.md;EVIDENCE:.specify/sprints/sprint-6/attestations/IFC-132/attestation.json;ARTIFACT:docs/architecture/adr/ADR-021-governance-ops-release.md;ARTIFACT:docs/planning/prd-release-governance.md,AUDIT:code-review,90/180/360,2026-03-10,2026-03-17,100,ENV-005-AI:FS,
IFC-133,Security,Supply chain security: artifact signing + provenance for build outputs (images + releases),Backend Dev (STOA-Domain),IFC-132,FILE:.specify/memory/Framework.md;FILE:audit-matrix.yml;ENV:SBOM generation in place; registry access configured;FILE:docs/security/zero-trust-design.md;FILE:docs/security/owasp-checklist.md;FILE:docs/shared/review-checklist.md;FILE:docs/operations/pr-checklist.md;FILE:docs/operations/release-rollback.md;FILE:docs/company/brand/visual-identity.md;FILE:.github/workflows/security-sbom.yml,Artifacts signed; verification step added; provenance attached; docs updated; targets: >=100%; verified by: pnpm test,Completed,100% prod-bound artifacts signed; verification enforced in deployment pipeline,7,ARTIFACT:docs/security/signing.md;ARTIFACT:.github/workflows/signing.yml;EVIDENCE:.specify/sprints/sprint-7/attestations/IFC-133/attestation.json;ARTIFACT:docs/architecture/adr/ADR-021-governance-ops-release.md;ARTIFACT:docs/planning/prd-release-governance.md,VALIDATE:pnpm test,90/180/360,2026-03-26,2026-04-02,100,IFC-132:FS,
IFC-134,Security,Container/image scanning in CI and registry with fail-on-critical policy,Security Engineer (STOA-Security),"ENV-003-AI,ENV-005-AI",FILE:.specify/memory/Framework.md;FILE:audit-matrix.yml;ENV:Container build pipeline exists;FILE:docs/security/zero-trust-design.md;FILE:docs/security/owasp-checklist.md;FILE:docs/operations/quality-gates.md;FILE:docker-compose.yml;FILE:.github/workflows/ci.yml,Image scan runs on every build; policy blocks critical vulns; exceptions process documented; targets: >=100%,Completed,0 critical vulns in prod images; scan coverage 100% for deployable images,7,ARTIFACT:docs/security/image-scanning.md;ARTIFACT:.github/workflows/image-scan.yml;EVIDENCE:.specify/sprints/sprint-7/attestations/IFC-134/attestation.json;ARTIFACT:docs/architecture/adr/ADR-021-governance-ops-release.md;ARTIFACT:docs/planning/prd-release-governance.md,VALIDATE:pnpm typecheck;VALIDATE:pnpm test,90/180/360,2026-03-28,2026-04-04,100,"ENV-003-AI:FS,ENV-005-AI:FS",
IFC-135,Architecture,Create ADR pack for multi-tenancy; workflow engine choice; agent tool-calling; data classification & retention; audit logging,Tech Lead + Architect (STOA-Foundation),"IFC-002,GOV-001",FILE:.specify/memory/Framework.md;FILE:audit-matrix.yml;POLICY:Domain model established; architecture spike complete;FILE:docs/architecture/adr/ADR-005-workflow-engine.md;FILE:docs/architecture/adr/ADR-006-agent-tools.md;FILE:docs/architecture/adr/ADR-007-data-governance.md;FILE:docs/architecture/adr/ADR-008-audit-logging.md;FILE:docs/architecture/hex-boundaries.md;FILE:docs/architecture/repo-layout.md;FILE:docs/planning/DDD-context-map.puml;FILE:docs/architecture/adr/template.md;FILE:packages/db/prisma/schema.prisma,"ADRs drafted for multi-tenancy; workflow engine; tool-calling model; data classification/retention; audit logging; reviewed and approved; artifacts: ADR-004-multi-tenancy.md, ADR-005-workflow-engine.md, ADR-006-agent-tools.md; targets: >=100%",Completed,100% ADR coverage; stakeholder approval recorded,1,ARTIFACT:docs/architecture/adr/ADR-004-multi-tenancy.md;ARTIFACT:docs/architecture/adr/ADR-005-workflow-engine.md;ARTIFACT:docs/architecture/adr/ADR-006-agent-tools.md;ARTIFACT:docs/architecture/adr/ADR-007-data-governance.md;ARTIFACT:docs/architecture/adr/ADR-008-audit-logging.md;ARTIFACT:artifacts/reports/adr-index.csv;EVIDENCE:.specify/sprints/sprint-1/attestations/IFC-135/attestation.json,AUDIT:code-review,120/240/480,2025-12-30,2026-01-08,100,"IFC-002:FS,GOV-001:FS",
IFC-136,Domain,Implement Case/Matter aggregate root with tasks; deadlines; parties; lawyer assignments,Backend Dev + Domain Architect (STOA-Intelligence),"IFC-002,IFC-003",FILE:.specify/memory/Framework.md;FILE:audit-matrix.yml;ENV:DDD model finalized; tRPC API foundation ready;FILE:docs/planning/DDD-context-map.puml;FILE:packages/db/prisma/schema.prisma;FILE:docs/operations/quality-gates.md;FILE:apps/api/src/trpc.ts,Case/Matter entities created with invariants; repositories and services implemented; CRUD endpoints via tRPC; unit and integration tests pass; targets: >=90%,Completed,Coverage >=90%; response time <=50ms; correctness validated,3,ARTIFACT:packages/domain/src/legal/cases/Case.ts;ARTIFACT:packages/domain/src/legal/cases/CaseTask.ts;ARTIFACT:infra/supabase/migrations/20260104000001_case_document_fts_embeddings.sql;ARTIFACT:apps/api/src/modules/legal/cases.router.ts;EVIDENCE:.specify/sprints/sprint-3/attestations/IFC-136/attestation.json;ARTIFACT:docs/architecture/adr/ADR-024-scheduling-calendar.md;ARTIFACT:docs/planning/prd-scheduling-calendar.md,VALIDATE:pnpm test;VALIDATE:pnpm test:integration;AUDIT:code-review;GATE:coverage-gte-90,120/240/480,2026-01-25,2026-02-05,100,"IFC-002:FS,IFC-003:FS",
IFC-137,Scheduling,Develop Appointment aggregate with conflict detection; buffers; recurrence; linkage to cases and calendars,Backend Dev + Calendar Specialist (STOA-Domain),"IFC-136,IFC-003",FILE:.specify/memory/Framework.md;FILE:audit-matrix.yml;ENV:Calendar provider research; case domain implemented;FILE:docs/planning/DDD-context-map.puml;FILE:packages/db/prisma/schema.prisma;FILE:docs/operations/quality-gates.md;FILE:packages/domain/src/legal/cases/Case.ts;FILE:apps/api/src/trpc.ts,"Appointment aggregate, services and repositories implemented; conflict detection logic with unit tests; recurrence rules; APIs via tRPC; scheduling integrated with case management; targets: >=95%, >=90%",Completed,Conflict detection accuracy >95%; scheduling latency <=100ms; test coverage >=90%,4,ARTIFACT:packages/domain/src/legal/appointments/Appointment.ts;ARTIFACT:packages/application/src/usecases/scheduling/index.ts;ARTIFACT:apps/api/src/modules/legal/appointments.router.ts;EVIDENCE:.specify/sprints/sprint-4/attestations/IFC-137/attestation.json;ARTIFACT:docs/architecture/adr/ADR-024-scheduling-calendar.md;ARTIFACT:docs/planning/prd-scheduling-calendar.md,VALIDATE:pnpm test;GATE:latency-check;GATE:coverage-gte-90,120/240/480,2026-02-14,2026-02-21,100,"IFC-136:FS,IFC-003:FS",
IFC-138,Integration,Integrate external calendar providers (Google/Microsoft) with bidirectional sync; webhook handling; idempotency; reconciliation,Backend Dev + DevOps (STOA-Automation),"IFC-137,IFC-106",FILE:.specify/memory/Framework.md;FILE:audit-matrix.yml;ENV:OAuth credentials obtained; appointment domain stable;FILE:docs/shared/review-checklist.md;FILE:docs/operations/quality-gates.md;FILE:docs/operations/pr-checklist.md;FILE:packages/domain/src/legal/appointments/Appointment.ts;FILE:docs/architecture/hex-boundaries.md,"Google and Microsoft calendar integrations implemented; event sync both directions with idempotency keys; reconcilers handle conflicts; error handling and retries; integration tests; artifacts: client.ts, client.ts, webhooks-config.yaml; targets: >=99%, >=1%, <30s; MicrosoftCalendarAdapter.test.ts must exist matching GoogleCalendarAdapter.test.ts patterns",Completed,Sync reliability >=99%; duplicate events <1%; sync latency <30s,5,ARTIFACT:packages/adapters/src/calendar/google/client.ts;ARTIFACT:packages/adapters/src/calendar/microsoft/client.ts;ARTIFACT:packages/adapters/src/calendar/shared/index.ts;ARTIFACT:packages/adapters/src/calendar/shared/ConflictResolver.ts;ARTIFACT:packages/adapters/src/calendar/shared/IdempotencyManager.ts;ARTIFACT:packages/adapters/src/calendar/shared/RetryHandler.ts;ARTIFACT:packages/adapters/src/calendar/__tests__/*;ARTIFACT:infra/monitoring/webhooks-config.yaml;EVIDENCE:.specify/sprints/sprint-5/attestations/IFC-138/attestation.json;ARTIFACT:docs/architecture/adr/ADR-024-scheduling-calendar.md;ARTIFACT:docs/planning/prd-scheduling-calendar.md,VALIDATE:pnpm test;GATE:provider-test-exists,180/360/720,2026-02-22,2026-03-05,100,"IFC-137:FS,IFC-106:FS",
IFC-139,AI Assistant,Expose application services as agent tools and implement human approval flows with preview and rollback for high-risk actions,AI Specialist + Backend Dev (STOA-Intelligence),"IFC-136,IFC-137,IFC-003,IFC-128",FILE:.specify/memory/Framework.md;FILE:audit-matrix.yml;ENV:Agent infrastructure ready; tRPC endpoints stable;FILE:docs/architecture/adr/ADR-006-agent-tools.md;FILE:docs/architecture/hex-boundaries.md;FILE:docs/shared/review-checklist.md;FILE:docs/operations/pr-checklist.md;FILE:docs/operations/release-rollback.md;FILE:packages/domain/src/legal/cases/Case.ts;FILE:packages/domain/src/legal/appointments/Appointment.ts;FILE:apps/api/src/trpc.ts;FILE:docs/shared/ai-review-checklist.md,"Agent tools for search; create; update case and appointments and draft messages; approval UI with diff preview; rollback mechanism; authorization checks; logging; tests; artifacts: agent-actions.log, context_ack.json; targets: >=100%, <30s, zero errors",Completed,100% tool actions authorized; zero unauthorized writes; user approval latency <30s,6,ARTIFACT:artifacts/logs/agent-actions.log;ARTIFACT:apps/api/src/agent/approval-workflow.ts;ARTIFACT:apps/api/src/agent/authorization.ts;ARTIFACT:apps/api/src/agent/index.ts;ARTIFACT:apps/api/src/agent/logger.ts;ARTIFACT:apps/api/src/agent/types.ts;ARTIFACT:apps/api/src/agent/tools/create.ts;ARTIFACT:apps/api/src/agent/tools/draft-message.ts;ARTIFACT:apps/api/src/agent/tools/index.ts;ARTIFACT:apps/api/src/agent/tools/search.ts;ARTIFACT:apps/api/src/agent/tools/update.ts;ARTIFACT:apps/api/src/agent/__tests__/approval-workflow.test.ts;ARTIFACT:apps/api/src/agent/__tests__/authorization.test.ts;ARTIFACT:apps/api/src/agent/__tests__/logger.test.ts;ARTIFACT:apps/api/src/agent/__tests__/tools.test.ts;EVIDENCE:.specify/sprints/sprint-6/attestations/IFC-139/attestation.json,VALIDATE:pnpm test;AUDIT:code-review,180/360/720,2026-03-08,2026-03-19,100,"IFC-136:FS,IFC-137:FS,IFC-003:FS,IFC-128:FS",
IFC-140,Compliance,Implement data governance workflows: DSAR requests; retention & legal hold policies; tenant-specific encryption key management; data residency compliance,Legal Ops + Security Eng (STOA-Security),"IFC-098,IFC-127",FILE:.specify/memory/Framework.md;FILE:audit-matrix.yml;ENV:Data classification policy defined; KMS configured;FILE:docs/architecture/adr/ADR-004-multi-tenancy.md;FILE:docs/architecture/adr/ADR-005-workflow-engine.md;FILE:docs/architecture/adr/ADR-007-data-governance.md;FILE:docs/architecture/adr/ADR-008-audit-logging.md;FILE:docs/operations/quality-gates.md;FILE:docs/architecture/decision-workflow.md;FILE:packages/db/prisma/schema-audit.prisma;FILE:infra/supabase/migrations/20250124000000_rls_policies.sql,DSAR workflow implemented with identity verification; retention schedules enforced per entity; legal hold exceptions; per-tenant key management with rotation; residency controls and subprocessor registry; documentation and tests; targets: >=100%,Completed,DSAR turnaround <7 days; encryption coverage 100%; retention and legal hold compliance audited,11,ARTIFACT:docs/compliance-and-governance/data-governance/dsar-process.md;ARTIFACT:docs/compliance-and-governance/data-governance/retention-policy.md;ARTIFACT:infra/monitoring/kms-key-config.json;ARTIFACT:apps/api/src/workflow/dsar-workflow.ts;ARTIFACT:tests/compliance/data-governance.spec.ts;EVIDENCE:.specify/sprints/sprint-11/attestations/IFC-140/attestation.json,VALIDATE:pnpm test,180/360/720,2026-05-17,2026-05-28,100,"IFC-098:FS,IFC-127:FS",
IFC-141,Workflow,Evaluate n8n; custom engine; and Temporal; document decision via ADR; build event-driven minimal rules engine and integrate selected workflow engine,Tech Lead + Backend Dev + Product Manager (STOA-Domain),"IFC-136,IFC-137,IFC-135,IFC-150,IFC-151",FILE:.specify/memory/Framework.md;FILE:audit-matrix.yml;ENV:Domain events instrumentation ready;FILE:docs/architecture/adr/ADR-005-workflow-engine.md;FILE:docs/operations/quality-gates.md;FILE:docs/architecture/adr/template.md;FILE:docs/architecture/decision-workflow.md;FILE:docs/company/brand/visual-identity.md;FILE:packages/domain/src/legal/cases/Case.ts;FILE:packages/domain/src/legal/appointments/Appointment.ts;FILE:docs/architecture/adr/ADR-004-multi-tenancy.md;FILE:docs/events/contracts-v1.yaml;FILE:docs/operations/runbooks/dlq-triage.md,"Comparative analysis of workflow options; ADR published; POC implemented; events published for case status changes; selected engine integrated to process simple workflows; training delivered; artifacts: adr-workflow-decision.md, events-spec.yaml, context_ack.json; targets: >=95%; verified by: pnpm test",Completed,Decision ratified; POC demonstrates reliability; workflow execution success rate >95% (actual: 97.1%),10,SPEC:.specify/sprints/sprint-10/specifications/IFC-141-spec.md;PLAN:.specify/sprints/sprint-10/planning/IFC-141-plan.md;ARTIFACT:docs/planning/workflow-comparison-matrix.md;EVIDENCE:.specify/sprints/sprint-10/attestations/IFC-141/context_pack.md;EVIDENCE:.specify/sprints/sprint-10/attestations/IFC-141/attestation.json;ARTIFACT:docs/architecture/adr/ADR-005-workflow-engine.md;ARTIFACT:infra/monitoring/events-spec.yaml,VALIDATE:pnpm test;AUDIT:code-review,180/360/720,2026-05-03,2026-05-14,100,"IFC-136:FS,IFC-137:FS,IFC-135:FS,IFC-150:FS,IFC-151:FS",
IFC-142,Operations,Define SLOs/SLIs and alerting; establish on-call and incident management process; conduct restore drills; create capacity and cost budgets for AI inference and search,SRE Lead + DevOps + Finance (STOA-Automation),ENV-008-AI,FILE:.specify/memory/Framework.md;FILE:audit-matrix.yml;ENV:Observability and monitoring in place; cost tracking metrics available;FILE:docs/shared/review-checklist.md;FILE:docs/operations/quality-gates.md;FILE:docs/operations/pr-checklist.md;FILE:infra/monitoring/otel-config.yaml,"SLOs and SLIs defined for core services; alert rules configured; on-call rota established with escalation policies; incident runbook prepared; restore drill executed successfully; budgets defined and monitored; targets: >=10%, >=99%, <15 min",Completed,"On-call <15min (actual: 5min), RTO <1hr (actual: 47min), cost under budget ($3,070/mo)",8,ARTIFACT:docs/operations/slo-definitions.md;ARTIFACT:infra/monitoring/alerts-config.yaml;ARTIFACT:infra/monitoring/oncall-schedule.json;ARTIFACT:docs/operations/incident-runbook.md;ARTIFACT:docs/operations/restore-drill-report.md;ARTIFACT:docs/planning/financial/cost-budget.csv;ARTIFACT:docs/architecture/observability/correlation-patterns.md;ARTIFACT:docs/architecture/observability/implementation-guide.md;ARTIFACT:docs/architecture/observability/instrumentation-checklist.md;EVIDENCE:.specify/sprints/sprint-8/attestations/IFC-142/attestation.json;ARTIFACT:docs/architecture/adr/ADR-021-governance-ops-release.md;ARTIFACT:docs/planning/prd-release-governance.md,AUDIT:code-review,120/240/480,2026-04-05,2026-04-14,100,ENV-008-AI:FS,
IFC-143,Security,Perform threat modeling and abuse-case analysis for multi-tenancy and agent tool-calling; design mitigations; schedule penetration test; implement cookie consent mechanism,Security Lead + AI Specialist (STOA-Security),"IFC-125,IFC-136,IFC-139",FILE:.specify/memory/Framework.md;FILE:audit-matrix.yml;ENV:Architecture diagrams and data flows available;FILE:docs/architecture/adr/ADR-006-agent-tools.md;FILE:packages/db/prisma/schema.prisma;FILE:docs/security/zero-trust-design.md;FILE:docs/security/owasp-checklist.md;FILE:docs/development/tdd-guidelines.md;FILE:docs/design/token-mapping.md;FILE:docs/company/brand/visual-identity.md;FILE:apps/api/src/shared/prompt-sanitizer.ts;FILE:packages/domain/src/legal/cases/Case.ts;FILE:artifacts/logs/agent-actions.log,Threat model documented; abuse cases enumerated; mitigation tasks created; penetration test executed and findings triaged; cookie consent banner implemented; compliance checks passed,Completed,All critical threats mitigated; pen test high severity issues <5; cookie compliance tests pass,11,SPEC:.specify/sprints/sprint-11/specifications/IFC-143-spec.md;PLAN:.specify/sprints/sprint-11/planning/IFC-143-plan.md;EVIDENCE:.specify/sprints/sprint-11/attestations/IFC-143/context_pack.md;EVIDENCE:.specify/sprints/sprint-11/attestations/IFC-143/attestation.json;ARTIFACT:docs/security/threat-model.puml;ARTIFACT:docs/security/abuse-cases.md;ARTIFACT:docs/security/pen-test-scope.md;ARTIFACT:packages/ui/src/components/cookie-consent/cookie-consent.tsx,VALIDATE:pnpm test;AUDIT:code-review,180/360/720,2026-05-17,2026-05-28,100,"IFC-125:FS,IFC-136:FS,IFC-139:FS",
IFC-144,Integration,Design and implement inbound/outbound email flows: SPF/DKIM/DMARC; inbound parsing; attachments; implement general webhook handling with idempotency and retries; publish public API specification (OpenAPI) with versioning; baseline inbound email feature delivered,Integration Lead + Backend Dev (STOA-Domain),"IFC-137,IFC-003,IFC-150,IFC-151,IFC-106",FILE:.specify/memory/Framework.md;FILE:audit-matrix.yml;POLICY:Domain events defined; messaging port identified;FILE:docs/operations/quality-gates.md;FILE:docs/design/token-mapping.md;FILE:docs/company/brand/visual-identity.md;FILE:packages/domain/src/legal/appointments/Appointment.ts;FILE:apps/api/src/trpc.ts;FILE:docs/events/contracts-v1.yaml;FILE:docs/operations/runbooks/dlq-triage.md;FILE:docs/architecture/hex-boundaries.md,"Outbound emails signed with SPF/DKIM/DMARC configured; inbound email parser implemented with attachments handling; webhooks infrastructure with idempotency and retries; OpenAPI spec version 1 published covering major endpoints; baseline email send/receive tested; targets: >=95%, >=99%, >=100%; Inbound email endpoint must be exposed via API route with E2E test",Completed,Outbound deliverability >=95%; inbound parse accuracy >=99%; API spec coverage 100%; zero duplicate webhook processing,6,ARTIFACT:packages/adapters/src/messaging/email/outbound.ts;ARTIFACT:packages/adapters/src/messaging/email/inbound.ts;ARTIFACT:packages/adapters/src/messaging/email/EmailServiceAdapter.ts;ARTIFACT:packages/adapters/src/messaging/email/attachments.ts;ARTIFACT:packages/adapters/src/messaging/email/dkim-signer.ts;ARTIFACT:packages/adapters/src/messaging/email/__tests__/*;ARTIFACT:packages/adapters/src/ics/IcsGenerationService.ts;ARTIFACT:packages/domain/src/notifications/*;ARTIFACT:packages/webhooks/src/framework.ts;ARTIFACT:docs/api/openapi-v1.yaml;EVIDENCE:.specify/sprints/sprint-6/attestations/IFC-144/attestation.json;ARTIFACT:docs/architecture/adr/ADR-023-communications-inbox.md;ARTIFACT:docs/planning/prd-communications-inbox.md,VALIDATE:pnpm test;GATE:integration-wired,180/360/720,2026-05-05,2026-05-16,100,"IFC-137:FS,IFC-003:FS,IFC-150:FS,IFC-151:FS,IFC-106:FS",
IFC-145,Migration,Plan and execute legacy system migration: discover and map data; assess data quality; design migration scripts; run rehearsals and reconciliation reporting; finalize cutover with rollback plan,Data Engineer + DBA + PM (STOA-Foundation),"IFC-002,IFC-136",FILE:.specify/memory/Framework.md;FILE:audit-matrix.yml;ENV:Access to legacy data; mapping to new domain;FILE:docs/architecture/adr/ADR-007-data-governance.md;FILE:docs/operations/quality-gates.md;FILE:docs/operations/release-rollback.md;FILE:docs/design/token-mapping.md;FILE:docs/company/brand/visual-identity.md;FILE:packages/db/prisma/schema.prisma;FILE:packages/domain/src/legal/cases/Case.ts,Data mapping documents created; migration scripts developed and tested; rehearsal migration executed with reconciliation reports; cutover plan created with rollback procedure; final migration executed with acceptance of accuracy and completeness; targets: >=99%,Completed,Data completeness 99.94% (target >=99%); zero critical data loss; migration time 2.8h (target <4h),9,ARTIFACT:scripts/migration/mapping.csv;ARTIFACT:scripts/migration/rehearsal-report.md;ARTIFACT:scripts/migration/cutover-plan.md;ARTIFACT:scripts/migration/README.md;ARTIFACT:artifacts/reports/reconciliation-results.csv;EVIDENCE:.specify/sprints/sprint-9/attestations/IFC-145/attestation.json,VALIDATE:pnpm test;AUDIT:code-review,180/360/720,2026-04-19,2026-04-30,100,"IFC-002:FS,IFC-136:FS",
IFC-146,Planning,Define PRD and user journey templates; create Definition of Ready criteria; develop traceability matrix linking capabilities to domain services; APIs; UIs; and tests,Product Manager + Tech Lead (STOA-Foundation),"IFC-000,ENV-018-AI",FILE:.specify/memory/Framework.md;FILE:audit-matrix.yml;ENV:Feasibility assessment; sprint planning AI predictions;FILE:docs/architecture/hex-boundaries.md;FILE:docs/planning/DDD-context-map.puml;FILE:docs/development/tdd-guidelines.md;FILE:docs/shared/review-checklist.md;FILE:docs/operations/pr-checklist.md;FILE:docs/company/brand/visual-identity.md;FILE:docs/planning/financial/business-case.md;FILE:packages/test-fixtures/velocity-prediction.json,"PRD templates available and used; user journey mapping methodology defined; DoR criteria documented and adopted; traceability matrix tool or document created and applied to backlog; backlog items updated; targets: >=100%, >=90%",Completed,100% new stories include PRD and meet DoR; traceability coverage >=90%; backlog management efficiency improved,2,ARTIFACT:docs/planning/prd-template.md;ARTIFACT:docs/planning/user-journey-template.md;ARTIFACT:docs/planning/definition-of-ready.md;ARTIFACT:docs/planning/traceability-matrix.md;EVIDENCE:.specify/sprints/sprint-2/attestations/IFC-146/attestation.json;ARTIFACT:artifacts/reports/traceability-matrix.json,AUDIT:code-review;GATE:coverage-gte-90,90/180/360,2026-01-11,2026-01-20,100,"IFC-000:FS,ENV-018-AI:FS",
IFC-147,UI/Domain,Develop Case timeline UI with deadline engine: display tasks; deadlines; events; implement deadline engine to compute legal deadlines and reminders; integrate with scheduling,Frontend Dev + Backend Dev (STOA-Domain),"IFC-136,IFC-137",FILE:.specify/memory/Framework.md;FILE:audit-matrix.yml;ENV:Case and appointment APIs; UI design ready;FILE:docs/architecture/adr/ADR-005-workflow-engine.md;FILE:docs/company/brand/visual-identity.md;FILE:packages/domain/src/legal/cases/Case.ts;FILE:packages/domain/src/legal/appointments/Appointment.ts;FILE:docs/design/sitemap.md;FILE:docs/design/ui-flow-mapping.md;FILE:docs/design/page-registry.md;FILE:apps/project-tracker/docs/metrics/_global/flows/flow-index.md,"Case timeline page implemented; tasks and deadlines displayed chronologically; deadline engine computes due dates; reminders triggered; E2E tests; accessibility compliance; targets: >=95%, >=90%, <1s",Completed,Timeline load time <1s; deadline accuracy >=95%; user adoption rate; test coverage >=90%,5,ARTIFACT:apps/web/src/app/cases/timeline/page.tsx;ARTIFACT:packages/domain/src/legal/deadlines/deadline-engine.ts;ARTIFACT:apps/web/src/lib/cases/reminders-service.ts;EVIDENCE:.specify/sprints/sprint-5/attestations/IFC-147/attestation.json,VALIDATE:pnpm test;AUDIT:code-review;GATE:coverage-gte-90,120/240/480,2026-02-22,2026-03-03,100,"IFC-136:FS,IFC-137:FS",
IFC-148,AI Assistant,Implement conversation record entity: store chat transcripts; tool calls; actions per case; enable search and retrieval; integrate audit logging and data retention policies,Backend Dev + AI Specialist (STOA-Intelligence),"IFC-139,IFC-126",FILE:.specify/memory/Framework.md;FILE:audit-matrix.yml;ENV:Agent tool-calling infrastructure; ADR registry;FILE:docs/architecture/adr/ADR-006-agent-tools.md;FILE:docs/architecture/adr/ADR-007-data-governance.md;FILE:docs/architecture/adr/ADR-008-audit-logging.md;FILE:docs/planning/DDD-context-map.puml;FILE:packages/db/prisma/schema.prisma;FILE:docs/operations/quality-gates.md;FILE:artifacts/logs/agent-actions.log;FILE:docs/development/dev-guide.md,Database schema created; conversation records stored with metadata (case ID; timestamps; user/agent ID; tool calls); search API implemented; access control enforced; retention and DSAR compliance built-in; tests covering privacy controls; targets: >=100%,Completed,100% conversations recorded; retrieval latency <=50ms; access control passes; DSAR deletion executed,7,ARTIFACT:apps/api/src/modules/agent/conversation.router.ts;ARTIFACT:apps/api/src/modules/agent/__tests__/conversation.router.test.ts;ARTIFACT:packages/application/src/services/ConversationSearchService.ts;ARTIFACT:infra/supabase/migrations/20260104000000_conversation_rls.sql;ARTIFACT:infra/monitoring/data-retention-config.yaml;EVIDENCE:.specify/sprints/sprint-7/attestations/IFC-148/attestation.json,VALIDATE:pnpm test;VALIDATE:pnpm test:integration,120/240/480,2026-05-31,2026-06-10,100,"IFC-139:FS,IFC-126:FS",
IFC-149,AI Assistant,Implement action preview and rollback UI for agent-initiated changes; integrated with approval flows,Frontend Dev + AI Specialist (STOA-Intelligence),"IFC-139,IFC-147",FILE:.specify/memory/Framework.md;FILE:audit-matrix.yml;ENV:Agent tools implemented; case timeline UI built;FILE:docs/architecture/adr/ADR-006-agent-tools.md;FILE:docs/shared/review-checklist.md;FILE:docs/operations/pr-checklist.md;FILE:docs/operations/release-rollback.md;FILE:docs/company/brand/visual-identity.md;FILE:artifacts/logs/agent-actions.log;FILE:apps/web/src/app/cases/timeline/page.tsx;FILE:docs/design/sitemap.md;FILE:docs/design/ui-flow-mapping.md;FILE:docs/design/page-registry.md;FILE:apps/project-tracker/docs/metrics/_global/flows/flow-index.md,"Approval page displays proposed changes with diff; users can approve; modify; or reject; rollback resets state and logs actions; E2E tests; analytics track approvals; artifacts: preview.tsx, rollback-service.ts, approvals-metrics.csv; targets: >=100%, zero errors",Completed,100% agent actions previewed; zero unauthorized changes; approval rate and latency tracked,6,ARTIFACT:apps/web/src/app/agent-approvals/page.tsx;ARTIFACT:apps/web/src/lib/agent/index.ts;ARTIFACT:apps/web/src/lib/agent/rollback-service.ts;ARTIFACT:artifacts/metrics/approvals-metrics.csv;EVIDENCE:.specify/sprints/sprint-6/attestations/IFC-149/attestation.json,VALIDATE:pnpm test;AUDIT:code-review,120/240/480,2026-03-08,2026-03-17,100,"IFC-139:FS,IFC-147:FS",
EXC-SEC-001,AI Foundation,"Implement Secrets Management (e.g., HashiCorp Vault) for API Keys (OpenAI, etc.).",Security Eng + DevOps (STOA-Security),ENV-013-AI,FILE:.specify/memory/Framework.md;FILE:audit-matrix.yml;POLICY:Secrets Management tool selected;ENV:AI access credentials secured;FILE:artifacts/reports/security-scan-results.json,"All API keys are stored in a secure vault, access is restricted via IAM/RBAC, and agents retrieve secrets programmatically.; artifacts: vault-config.yaml, context_ack.json; targets: >=100%, zero errors",Completed,"Zero secrets in code/config files, 100% programmatic access, audit log active.",0,ARTIFACT:infra/monitoring/vault-config.yaml;ARTIFACT:packages/test-fixtures/access-policy.json;ARTIFACT:artifacts/reports/security/audit-latest.json;EVIDENCE:.specify/sprints/sprint-0/attestations/EXC-SEC-001/attestation.json,VALIDATE:pnpm typecheck,60/120/240,2025-12-14,2025-12-20,100,ENV-013-AI:FS,
IFC-150,Platform,Domain events infrastructure: event contracts + versioning + outbox pattern + idempotent publishing,Backend Dev + Architect (STOA-Domain),"IFC-002,IFC-106,IFC-098",FILE:.specify/memory/Framework.md;FILE:audit-matrix.yml;POLICY:DDD model available; repository layer established; observability baseline;FILE:docs/architecture/hex-boundaries.md;FILE:docs/architecture/repo-layout.md;FILE:docs/planning/DDD-context-map.puml;FILE:packages/db/prisma/schema.prisma;FILE:packages/db/prisma/schema-audit.prisma,"Event contract catalogue created (schema + versioning); transactional outbox implemented; idempotency keys enforced; publisher emits metrics/traces; unit/integration tests; targets: >=100%, <200ms; performance-benchmark.json must contain real execution data, not 'simulated' entries",Completed,"0 lost events, p95 <200ms (pending migration), 100% schema-validated (24 unit tests pass)",5,ARTIFACT:docs/events/contracts-v1.yaml;ARTIFACT:docs/architecture/adr/ADR-011-domain-events.md;EVIDENCE:.specify/sprints/sprint-5/attestations/IFC-150/attestation.json;SPEC:.specify/sprints/sprint-5/specifications/IFC-150-spec.md;PLAN:.specify/sprints/sprint-5/planning/IFC-150-plan.md;ARTIFACT:packages/adapters/src/repositories/PrismaOutboxRepository.ts;ARTIFACT:packages/adapters/src/events/OutboxEventBusAdapter.ts;ARTIFACT:packages/validators/src/events.ts,VALIDATE:pnpm test;VALIDATE:pnpm test:integration;GATE:real-benchmark-data,180/360/720,2026-04-05,2026-04-16,100,"IFC-002:FS,IFC-106:FS,IFC-098:FS",
IFC-151,Platform,Event consumers framework: retries + DLQ + backoff + observability; standard webhook/idempotency utilities,Backend Dev + SRE (STOA-Domain),"IFC-150,ENV-008-AI",FILE:.specify/memory/Framework.md;FILE:audit-matrix.yml;ENV:Event publisher in place; monitoring/alerts configured;FILE:docs/events/contracts-v1.yaml;FILE:infra/monitoring/otel-config.yaml,"Consumer SDK supports retries/backoff; DLQ storage/triage workflow; idempotent handlers; poison-message handling; metrics and alerts; chaos tests; artifacts: dlq-triage.md, context_ack.json; targets: >=95%, >=90%, <30 min",Completed,DLQ drain success >95%; retry success >90%; MTTR <30 min (comprehensive runbook created),6,ARTIFACT:docs/operations/runbooks/dlq-triage.md;EVIDENCE:.specify/sprints/sprint-6/attestations/IFC-151/attestation.json,VALIDATE:pnpm test,120/240/480,2026-04-19,2026-04-30,100,"IFC-150:FS,ENV-008-AI:FS",
IFC-152,Case Docs,"Case document model: storage metadata, versioning, ACL mapping (tenant + case + role), and audit hooks",Backend Dev + Domain Architect (STOA-Intelligence),"IFC-136,IFC-127",FILE:.specify/memory/Framework.md;FILE:audit-matrix.yml;ENV:Case/Matter domain exists; tenant isolation enforced; base document management available;FILE:docs/architecture/adr/ADR-004-multi-tenancy.md;FILE:docs/architecture/adr/ADR-007-data-governance.md;FILE:docs/architecture/adr/ADR-008-audit-logging.md;FILE:packages/db/prisma/schema.prisma;FILE:packages/domain/src/legal/cases/Case.ts;FILE:infra/supabase/migrations/20250124000000_rls_policies.sql;FILE:artifacts/reports/e-signature-test.pdf,"CaseDocument aggregate and repository implemented; ACL mapping rules defined; versioning semantics; audit events on read/write; tests; targets: >=100%, >=100%, <50ms",Completed,Access control test pass 100%; audit log coverage 100%; CRUD latency p95 <50ms,6,ARTIFACT:packages/domain/src/legal/cases/case-document.ts;ARTIFACT:infra/supabase/migrations/20260104000001_case_document_fts_embeddings.sql;ARTIFACT:apps/api/src/modules/legal/documents.router.ts;EVIDENCE:.specify/sprints/sprint-6/attestations/IFC-152/attestation.json,VALIDATE:pnpm test,120/240/480,2026-05-17,2026-05-28,100,"IFC-136:FS,IFC-127:FS",
IFC-153,Case Docs,"Ingestion pipeline for case files: upload/email attachment intake, antivirus scan, metadata extraction, storage, and indexing triggers",Backend Dev + Integration Eng (STOA-Domain),"IFC-152,IFC-144,IFC-151,IFC-106",FILE:.specify/memory/Framework.md;FILE:audit-matrix.yml;ENV:Object storage configured; email inbound baseline; event consumers available;FILE:docs/architecture/adr/ADR-007-data-governance.md;FILE:docs/operations/quality-gates.md;FILE:packages/domain/src/legal/cases/case-document.ts;FILE:packages/adapters/src/messaging/email/outbound.ts;FILE:docs/operations/runbooks/dlq-triage.md;FILE:docs/architecture/hex-boundaries.md,"Upload + inbound email attachments land in storage; AV scan gate; metadata extracted; ingestion events emitted; failure handling + retries; integration tests; targets: >=99%, >=100%, >=1%",Completed,Ingestion success >=99%; AV scan blocks 100% known samples; duplicate ingestion rate <1%,6,ARTIFACT:docs/operations/runbooks/ingestion.md;EVIDENCE:.specify/sprints/sprint-6/attestations/IFC-153/attestation.json;EVIDENCE:.specify/sprints/sprint-6/attestations/IFC-153/attestation.json,VALIDATE:pnpm test:integration,180/360/720,2026-05-31,2026-06-11,100,"IFC-152:FS,IFC-144:FS,IFC-151:FS,IFC-106:FS",
IFC-154,Case Docs,OCR + text extraction worker for scanned PDFs/images; normalized text artifacts stored for search and RAG,Backend Dev + AI Specialist (STOA-Intelligence),IFC-153,FILE:.specify/memory/Framework.md;FILE:audit-matrix.yml;ENV:Worker runtime provisioned; file ingestion events available;FILE:docs/operations/runbooks/ingestion.md,"OCR worker processes supported formats; stores extracted text with provenance; handles retries; quality metrics recorded; tests; artifacts: ocr-quality-benchmarks.csv, extracted-text-schema.json, context_ack.json; targets: >=1%",Completed,OCR throughput >= X pages/min baseline; extraction accuracy benchmarked; failure rate <1%,6,ARTIFACT:packages/test-fixtures/extracted-text-schema.json;EVIDENCE:.specify/sprints/sprint-6/attestations/IFC-154/attestation.json,VALIDATE:pnpm test,120/240/480,2026-06-01,2026-06-10,100,IFC-153:FS,
IFC-155,Search/AI,Permissioned indexing for case documents and notes: full-text + embeddings with tenant/case ACL filters,Backend Dev + AI Specialist (STOA-Intelligence),"IFC-154,IFC-127,ENV-004-AI",FILE:.specify/memory/Framework.md;FILE:audit-matrix.yml;ENV:pgvector enabled; ACL model implemented; extracted text available;FILE:docs/architecture/adr/ADR-004-multi-tenancy.md;FILE:infra/supabase/migrations/20250124000000_rls_policies.sql;FILE:infra/supabase/config.toml,"FTS index and vector embeddings built; retrieval APIs enforce tenant/case ACL; re-index job; purge on DSAR rules; tests; targets: >=80%, <200ms, zero errors; gates: latency-check; generateEmbedding() must return real embeddings from embedding chain, not null placeholder",Completed,Retrieval latency p95 <200ms; zero cross-tenant leakage; relevance eval >=80% on test set,6,ARTIFACT:infra/supabase/migrations/20260104000001_case_document_fts_embeddings.sql;ARTIFACT:apps/ai-worker/src/services/document-indexer.ts;ARTIFACT:apps/ai-worker/src/workers/reindex-worker.ts;ARTIFACT:packages/search/src/retrieval.ts;ARTIFACT:artifacts/reports/relevance-eval.json;EVIDENCE:.specify/sprints/sprint-6/attestations/IFC-155/attestation.json,VALIDATE:pnpm test;GATE:latency-check;GATE:real-embedding-generation,180/360/720,2026-06-02,2026-06-13,100,"IFC-154:FS,IFC-127:FS,ENV-004-AI:FS",
IFC-156,AI Assistant,Case RAG tool: agent retrieval tool constrained by tenant/case permissions; citations + source trace; prompt-injection hardening for retrieved content,AI Specialist + Security (STOA-Security),"IFC-155,IFC-139,IFC-125",FILE:.specify/memory/Framework.md;FILE:audit-matrix.yml;ENV:Agent tool-calling exists; guardrails baseline; permissioned retrieval APIs available;FILE:docs/architecture/adr/ADR-004-multi-tenancy.md;FILE:docs/architecture/adr/ADR-006-agent-tools.md;FILE:docs/shared/review-checklist.md;FILE:docs/operations/quality-gates.md;FILE:docs/operations/pr-checklist.md;FILE:packages/search/src/retrieval.ts;FILE:artifacts/logs/agent-actions.log;FILE:apps/api/src/shared/prompt-sanitizer.ts,"Agent tool implemented (retrieve_case_context); responses include source references; injection defenses applied; approval needed for external send; tests; artifacts: retrieve-case-context.ts, case-rag.md, context_ack.json; targets: <2s",Completed,0 unauthorized retrievals; response time p95 <2s; hallucination rate reduced via eval suite,6,ARTIFACT:packages/ai/tools/retrieve-case-context.ts;ARTIFACT:docs/agent/case-rag.md;EVIDENCE:.specify/sprints/sprint-6/attestations/IFC-156/attestation.json,VALIDATE:pnpm test,180/360/720,2026-06-14,2026-06-25,100,"IFC-155:FS,IFC-139:FS,IFC-125:FS",
IFC-157,Notifications,"Notification service MVP: unified delivery (in-app + email) with preference model (backend), templates, and audit logging",Backend Dev + SRE (STOA-Domain),"IFC-144,IFC-098,IFC-151",FILE:.specify/memory/Framework.md;FILE:audit-matrix.yml;ENV:Email outbound configured; audit logging present; event consumer framework ready;FILE:docs/architecture/adr/ADR-008-audit-logging.md;FILE:docs/architecture/hex-boundaries.md;FILE:packages/db/prisma/schema.prisma;FILE:docs/shared/review-checklist.md;FILE:docs/operations/pr-checklist.md;FILE:packages/adapters/src/messaging/email/outbound.ts;FILE:packages/db/prisma/schema-audit.prisma;FILE:docs/operations/runbooks/dlq-triage.md,"Notification domain + templates implemented; delivery adapters; preference defaults stored; audit entries; retries/DLQ; tests; targets: >=99%, >=100%; All four channels (email, SMS, webhook, push) must have real implementations, not placeholder returns",Completed,Delivery success >=99%; template rendering errors 0 in CI; audit coverage 100%,11,SPEC:.specify/sprints/sprint-11/specifications/IFC-157-spec.md;PLAN:.specify/sprints/sprint-11/planning/IFC-157-plan.md;EVIDENCE:.specify/sprints/sprint-11/attestations/IFC-157/context_pack.md;EVIDENCE:.specify/sprints/sprint-11/attestations/IFC-157/attestation.json;ARTIFACT:docs/operations/runbooks/notification-service.md,VALIDATE:pnpm test;GATE:no-placeholder-channels,180/360/720,2026-05-19,2026-05-30,100,"IFC-144:FS,IFC-098:FS,IFC-151:FS",
IFC-158,Scheduling,"Scheduling communications: ICS invites, reschedule/cancel flows, reminders; integrated with notification service and calendar sync",Backend Dev + Calendar Specialist (STOA-Domain),"IFC-138,IFC-157,IFC-137",FILE:.specify/memory/Framework.md;FILE:audit-matrix.yml;ENV:Calendar sync stable; notification service MVP available; appointment aggregate ready;FILE:docs/architecture/hex-boundaries.md;FILE:packages/adapters/src/calendar/google/client.ts;FILE:docs/operations/runbooks/notification-service.md;FILE:packages/domain/src/legal/appointments/Appointment.ts,"ICS generation and delivery implemented; reschedule/cancel semantics correct; reminders scheduled; audit trail; integration tests; artifacts: context_ack.json; targets: >=95%, >=99%, zero errors",Completed,Invite delivery >=95%; reminder delivery >=99%; zero duplicate invites on retries,11,EVIDENCE:.specify/sprints/sprint-11/attestations/IFC-158/attestation.json,VALIDATE:pnpm test:integration,120/240/480,2026-05-21,2026-05-30,100,"IFC-138:FS,IFC-157:FS,IFC-137:FS",
IFC-159,UI/Domain,"Case timeline enrichment: include documents/versions, communications (email/WhatsApp), and agent actions/approvals as timeline events",Frontend Dev + Backend Dev (STOA-Domain),"IFC-147,IFC-153,IFC-144,IFC-149,IFC-148",FILE:.specify/memory/Framework.md;FILE:audit-matrix.yml;ENV:Timeline UI exists; ingestion pipeline available; comms and agent actions recorded;FILE:docs/architecture/adr/ADR-006-agent-tools.md;FILE:docs/shared/review-checklist.md;FILE:docs/operations/pr-checklist.md;FILE:apps/web/src/app/cases/timeline/page.tsx;FILE:docs/operations/runbooks/ingestion.md;FILE:packages/adapters/src/messaging/email/outbound.ts;FILE:apps/web/src/app/agent-approvals/page.tsx;FILE:docs/design/sitemap.md;FILE:docs/design/ui-flow-mapping.md;FILE:docs/design/page-registry.md;FILE:apps/project-tracker/docs/metrics/_global/flows/flow-index.md,Timeline shows unified chronological events (tasks/deadlines/docs/comms/agent actions); filters; permissions enforced; E2E tests; targets: <1s,Completed,Timeline load <1s; user task completion improved; 0 unauthorized events visible,13,ARTIFACT:apps/api/src/modules/misc/timeline.ts;ARTIFACT:apps/web/lib/documents/timeline-event-model.ts;EVIDENCE:.specify/sprints/sprint-13/attestations/IFC-159/attestation.json,VALIDATE:pnpm test;VALIDATE:pnpm --filter @intelliflow/api test --run,180/360/720,2026-06-14,2026-06-25,100,"IFC-147:FS,IFC-153:FS,IFC-144:FS,IFC-149:FS,IFC-148:FS",
IFC-160,Planning,Artifact path conventions + CI lint to prevent repo drift,Tech Lead + DevOps (STOA-Automation),"ENV-001-AI,ENV-002-AI",FILE:.specify/memory/Framework.md;FILE:audit-matrix.yml;POLICY:Canonical repo layout agreed; planning templates in place;FILE:docs/shared/review-checklist.md;FILE:docs/operations/quality-gates.md;FILE:docs/operations/pr-checklist.md;FILE:turbo.json;FILE:eslint.config.mjs,"Repo artifact conventions documented; artifact-path linter added; CI blocks non-canonical artifact paths; move-map template provided; targets: >=100%, <60s; verified by: pnpm lint",Completed,0 artifact path violations on main; lint runtime <60s; 100% new PRs checked,0,ARTIFACT:docs/architecture/repo-layout.md;ARTIFACT:docs/architecture/artifact-conventions.md;ARTIFACT:tools/lint/artifact-paths.ts;ARTIFACT:.github/workflows/artifact-lint.yml;ARTIFACT:artifacts/reports/artifact-containment-analysis.md;ARTIFACT:scripts/validate-artifact-paths.sh;ARTIFACT:scripts/compare-tree-to-sprint-plan.js;ARTIFACT:artifacts/reports/artifact-containment-analysis.md;ARTIFACT:artifacts/reports/artifact-containment-analysis.md;ARTIFACT:docs/architecture/runtime-path-linter-design.md;ARTIFACT:artifacts/reports/plan-lint-report.json;EVIDENCE:.specify/sprints/sprint-0/attestations/IFC-160/attestation.json;ARTIFACT:docs/architecture/adr/ADR-021-governance-ops-release.md;ARTIFACT:docs/planning/prd-release-governance.md;ARTIFACT:apps/project-tracker/docs/metrics/schemas/attestation-schema.yaml;ARTIFACT:apps/project-tracker/docs/metrics/schemas/evidence-pack-schema.yaml,VALIDATE:pnpm lint;AUDIT:code-review,60/120/240,2025-12-18,2025-12-24,100,"ENV-001-AI:FS,ENV-002-AI:FS",
IFC-163,Platform,"Standardize worker runtime under apps/workers (events, ingestion, notifications) with shared job framework, metrics, and deployment packaging",SRE Lead + Backend Dev (STOA-Domain),"IFC-150,IFC-151,IFC-153,IFC-157,IFC-106",FILE:.specify/memory/Framework.md;FILE:audit-matrix.yml;ENV:Event infrastructure and ingestion triggers defined; deployment pipeline ready;FILE:docs/operations/release-rollback.md;FILE:docs/events/contracts-v1.yaml;FILE:docs/operations/runbooks/dlq-triage.md;FILE:docs/operations/runbooks/ingestion.md;FILE:docs/operations/runbooks/notification-service.md;FILE:docs/architecture/hex-boundaries.md,"apps/workers structure created; workers run with shared configuration and telemetry; queues configured; health checks and dashboards added; deployment artifacts produced; restore/replay procedures documented; targets: >=99%, >=100%, <30s; verified by: pnpm test; Each worker package must have dev/start scripts that work with pnpm --filter",Completed,Worker job success >=99%; processing latency p95 <30s; 100% workers emit traces/metrics/logs,13,ARTIFACT:apps/workers/**;ARTIFACT:infra/monitoring/dashboards/workers.json;ARTIFACT:docs/operations/runbooks/workers-runbook.md;EVIDENCE:.specify/sprints/sprint-13/attestations/IFC-163/attestation.json,VALIDATE:pnpm test;GATE:dev-script-wired,180/360/720,2026-06-16,2026-06-27,100,"IFC-150:FS,IFC-151:FS,IFC-153:FS,IFC-157:FS,IFC-106:FS",
EXP-PLATFORM-001,Infrastructure,"Platform utilities package - feature flags, resilience patterns, job queues, workflow orchestration",DevOps + Tech Lead (STOA-Automation),ENV-001-AI,FILE:CLAUDE.md;FILE:audit-matrix.yml,"Package implemented with feature flags module, resilience patterns (retry, circuit breaker), BullMQ job queues, workflow orchestration; 100% test coverage; documented",Completed,100% coverage; zero runtime errors; documented APIs,12,ARTIFACT:packages/platform/package.json;ARTIFACT:packages/platform/tsconfig.json;ARTIFACT:packages/platform/src/index.ts;ARTIFACT:packages/platform/src/feature-flags/*;ARTIFACT:packages/platform/src/resilience/*;ARTIFACT:packages/platform/src/queues/*;ARTIFACT:packages/platform/src/workflow/*;EVIDENCE:.specify/sprints/sprint-12/attestations/EXP-PLATFORM-001/attestation.json,VALIDATE:pnpm typecheck,90/180/360,2026-05-31,2026-06-09,100,ENV-001-AI:FS,
EXP-SCRIPTS-001,Infrastructure,"Utility scripts - task data cleanup, schema fixes, dev monitoring",DevOps + Tech Lead (STOA-Automation),EXC-INIT-001,FILE:CLAUDE.md;FILE:audit-matrix.yml,"Utility scripts for task data maintenance, JSON schema fixes, development monitoring; all scripts documented and functional",Completed,All scripts functional; documented usage,12,ARTIFACT:scripts/clean-fake-task-data.ps1;ARTIFACT:scripts/fix-task-json-schema.ps1;ARTIFACT:scripts/fix-uppercase-sha256.ps1;ARTIFACT:scripts/run-soft.js;ARTIFACT:scripts/monitor-dev.sh;EVIDENCE:.specify/sprints/sprint-12/attestations/EXP-SCRIPTS-001/attestation.json,VALIDATE:pnpm typecheck,60/120/240,2026-06-01,2026-06-08,100,EXC-INIT-001:FS,
EXP-ARTIFACTS-002,Compliance,Cookie Consent Component Implementation (GDPR),Frontend Dev (STOA-Domain),,FILE:CLAUDE.md;FILE:audit-matrix.yml;POLICY:GDPR compliance required,Component implemented with tests; cookie consent working; GDPR compliant; targets: >=100%,Completed,100% test coverage; GDPR compliant,14,ARTIFACT:packages/ui/src/components/cookie-consent/cookie-consent.tsx;ARTIFACT:packages/ui/__tests__/cookie-consent.test.tsx;ARTIFACT:apps/web/src/app/layout.tsx;EVIDENCE:.specify/sprints/sprint-14/attestations/EXP-ARTIFACTS-002/attestation.json,VALIDATE:pnpm --filter @intelliflow/ui test,90/180/360,2026-06-28,2026-07-07,100,,
EXP-ARTIFACTS-003,Security,Vulnerability Baseline Documentation,Security Team (STOA-Security),,FILE:CLAUDE.md;FILE:audit-matrix.yml;ENV:Security scanning tools configured,Baseline documented with zero vulnerabilities; security baseline maintained; targets: zero critical,Completed,Zero critical/high vulnerabilities,14,ARTIFACT:infra/monitoring/vulnerability-baseline.json;EVIDENCE:.specify/sprints/sprint-14/attestations/EXP-ARTIFACTS-003/attestation.json,AUDIT:security-review,60/120/240,2026-06-30,2026-07-06,100,,
EXP-REPORTS-001,Operations,Project Status & Tracking Reports (Continuous),PM (STOA-Quality),,FILE:CLAUDE.md;FILE:audit-matrix.yml,Status reports maintained; tracking current; metrics up-to-date; targets: daily updates,Completed,Daily status updates; 100% accuracy,Continuous,ARTIFACT:artifacts/reports/status-snapshot.json;ARTIFACT:artifacts/reports/completed-task-ids.txt;EVIDENCE:.specify/sprints/sprint-0/attestations/EXP-REPORTS-001/attestation.json,VALIDATE:pnpm lint,30/60/120,2025-12-14,2027-12-31,100,,daily:1d
EXP-REPORTS-002,Quality,Technical Debt & Quality Tracking (Continuous),Tech Lead (STOA-Quality),,FILE:CLAUDE.md;FILE:audit-matrix.yml,YAML debt ledger maintained; phantom audits run; reviews tracked; targets: weekly updates,Completed,Weekly updates; zero phantom completions,Continuous,ARTIFACT:artifacts/reports/phantom-completion-audit.json;EVIDENCE:.specify/sprints/sprint-0/attestations/EXP-REPORTS-002/attestation.json;ARTIFACT:artifacts/reports/stoa-review-queue.json;ARTIFACT:artifacts/reports/stoa-review-queue.json,VALIDATE:pnpm lint,30/60/120,2025-12-14,2027-12-31,100,,weekly:7d
EXP-REPORTS-003,Planning,Risk Management & Compliance Tracking,PM + Compliance (STOA-Security),,FILE:CLAUDE.md;FILE:audit-matrix.yml;POLICY:Risk review quarterly,Risk register maintained; GDPR compliance tracked; targets: quarterly reviews,Completed,Quarterly risk reviews; 100% compliance,Continuous,ARTIFACT:docs/compliance-and-governance/governance/risk-register.csv;ARTIFACT:docs/compliance-and-governance/compliance/gdpr-compliance.md;EVIDENCE:.specify/sprints/sprint-0/attestations/EXP-REPORTS-003/attestation.json,VALIDATE:pnpm lint,30/60/120,2025-12-14,2027-12-31,100,,quarterly:90d
EXP-REPORTS-004,Quality,Sprint Audit System (Continuous),QA Lead (STOA-Quality),,FILE:CLAUDE.md;FILE:audit-matrix.yml;ENV:Audit tooling configured,Sprint audits automated; validation results tracked; targets: per-sprint audits,Completed,100% sprints audited; zero missing validations,Continuous,EVIDENCE:.specify/sprints/sprint-0/attestations/EXP-REPORTS-004/attestation.json;ARTIFACT:apps/web/src/app/api/quality-reports/job-storage.ts;ARTIFACT:artifacts/missing-attestations.json;ARTIFACT:artifacts/**,VALIDATE:pnpm lint,30/60/120,2025-12-14,2027-12-31,100,,per-sprint:14d
EXP-REPORTS-005,Infrastructure,Build & Validation Reports (Continuous),DevOps (STOA-Automation),,FILE:CLAUDE.md;FILE:audit-matrix.yml;ENV:CI/CD configured,Build validation automated; audit reports generated; targets: per-build reports,Completed,100% builds validated; audit reports generated,Continuous,ARTIFACT:artifacts/reports/turbo-validation.json;ARTIFACT:artifacts/reports/audit-report.json;EVIDENCE:.specify/sprints/sprint-0/attestations/EXP-REPORTS-005/attestation.json,VALIDATE:pnpm lint,30/60/120,2025-12-14,2027-12-31,100,,per-build:1d
TRACK-001,Tracking,Status Snapshot UI - Real-time task status tracking with manual refresh button,DevOps + Frontend Dev (STOA-Automation),EXP-REPORTS-001,FILE:tools/audit/status_snapshot.py;FILE:apps/project-tracker/lib/data-sync.ts,UI displays status-snapshot.json; refresh button regenerates from CSV; history view shows changes over time,Completed,"<5s refresh, real-time display",14,ARTIFACT:apps/project-tracker/components/tracking/StatusTracker.tsx;ARTIFACT:apps/project-tracker/app/api/tracking/status/route.ts;ARTIFACT:apps/project-tracker/components/tracking/shared/StaleIndicator.tsx;ARTIFACT:apps/project-tracker/components/tracking/shared/RefreshButton.tsx;ARTIFACT:apps/project-tracker/components/TrackingView.tsx;ARTIFACT:apps/project-tracker/components/tracking/StatusHistory.tsx;ARTIFACT:apps/project-tracker/components/tracking/index.ts;EVIDENCE:.specify/sprints/sprint-14/attestations/TRACK-001/attestation.json,VALIDATE:pnpm test,90/180/360,2026-06-28,2026-02-22,100,EXP-REPORTS-001:FS,
TRACK-002,Tracking,Quality Metrics UI - Debt ledger coverage SonarQube with refresh buttons,QA Lead + Frontend Dev (STOA-Quality),"EXP-REPORTS-002,IFC-088",FILE:scripts/debt-analyzer.js;FILE:scripts/sonarqube-metrics.js,"Dashboard shows debt trends, coverage %, SonarQube metrics; individual refresh buttons per metric type",Completed,"<10s refresh, trend charts",14,ARTIFACT:apps/project-tracker/components/tracking/QualityDashboard.tsx;ARTIFACT:apps/project-tracker/app/api/tracking/quality/route.ts;EVIDENCE:.specify/sprints/sprint-14/attestations/TRACK-002/attestation.json,VALIDATE:pnpm --filter project-tracker typecheck,90/180/360,2026-02-22,2026-07-09,100,"EXP-REPORTS-002:FS,IFC-088:FS",
TRACK-003,Tracking,Risk Register UI - View and update risks with mitigation tracking,PM + Security (STOA-Foundation),"EXP-REPORTS-003,IFC-118",FILE:docs/compliance-and-governance/governance/risk-register.csv;FILE:docs/shared/risk-mitigation-plan.md,Risk register displayed in table; add/edit risk modal; mitigation status tracking; export capability,Completed,"CRUD operations, history tracking",14,ARTIFACT:apps/project-tracker/components/tracking/RiskRegister.tsx;ARTIFACT:apps/project-tracker/app/api/tracking/risks/route.ts;EVIDENCE:.specify/sprints/sprint-14/attestations/TRACK-003/attestation.json,VALIDATE:pnpm --filter project-tracker typecheck,90/180/360,2026-02-22,2026-02-22,100,"EXP-REPORTS-003:FS,IFC-118:FS",
TRACK-004,Tracking,AI Metrics UI - Model performance drift detection cost tracking,AI Specialist + SRE (STOA-Intelligence),"IFC-117,AUTOMATION-002",FILE:artifacts/metrics/ai-metrics.json;FILE:infra/monitoring/ai-grafana-dashboard.json,"Dashboard shows AI latency, accuracy, cost per model; drift alerts; refresh capability",Completed,"Real-time metrics, <5% drift threshold",14,ARTIFACT:apps/project-tracker/components/tracking/AIMetrics.tsx;ARTIFACT:apps/project-tracker/app/api/tracking/ai/route.ts;EVIDENCE:.specify/sprints/sprint-14/attestations/TRACK-004/attestation.json,VALIDATE:pnpm --filter project-tracker typecheck,90/180/360,2026-02-22,2026-02-22,100,"IFC-117:FS,AUTOMATION-002:FS",
TRACK-005,Tracking,Security Dashboard UI - Vulnerability tracking scan results security posture,Security Eng (STOA-Security),"EXC-SEC-001,IFC-121",FILE:artifacts/reports/security/audit-latest.json;FILE:scripts/pnpm-audit-report.js,Dashboard shows vulnerability counts by severity; scan history; run-scan button; remediation tracking,Completed,"Zero critical vulns, weekly scans",14,ARTIFACT:apps/project-tracker/components/tracking/SecurityDashboard.tsx;ARTIFACT:apps/project-tracker/app/api/tracking/security/route.ts;EVIDENCE:.specify/sprints/sprint-14/attestations/TRACK-005/attestation.json,AUDIT:security-review,90/180/360,2026-02-22,2026-02-22,100,"EXC-SEC-001:FS,IFC-121:FS",
TRACK-006,Tracking,Build Health UI - Validation results build status test results,DevOps (STOA-Automation),"EXP-REPORTS-005,ENV-005-AI",FILE:artifacts/reports/turbo-validation.json;FILE:artifacts/reports/audit-report.json,"Dashboard shows build success rate, test results, validation status; run-validation button",Completed,"100% builds tracked, <30s validation",14,ARTIFACT:apps/project-tracker/components/tracking/BuildHealth.tsx;ARTIFACT:apps/project-tracker/app/api/tracking/build/route.ts;EVIDENCE:.specify/sprints/sprint-14/attestations/TRACK-006/attestation.json,VALIDATE:pnpm test,90/180/360,2026-07-05,2026-02-22,100,"EXP-REPORTS-005:FS,ENV-005-AI:FS",
IFC-164,AI/ML,Ollama Local Development - Real Integration & Benchmarks,AI Specialist + DevOps (STOA-Intelligence),"IFC-005,IFC-086,IFC-095",FILE:apps/ai-worker/src/config/ai.config.ts;FILE:apps/ai-worker/src/chains/scoring.chain.ts;ENV:AI scoring chain stable and tested;ENV:Docker infrastructure mature;POLICY:Cost tracking validated,"Complete Ollama integration with REAL benchmarks: (1) Implement ChatOllama in scoring.chain.ts, (2) Run real accuracy benchmarks against test leads, (3) Validate cost savings with actual metrics, (4) Update accuracy-benchmarks.json with real data; Follow-up to IFC-085 which only added config but never tested",Backlog,Real Ollama tests passing; accuracy-benchmarks.json contains measured data; dev cost reduction verified,20,ARTIFACT:apps/ai-worker/src/chains/ollama-integration.ts;ARTIFACT:artifacts/benchmarks/accuracy-benchmarks.json;ARTIFACT:artifacts/benchmarks/ollama-real-benchmark-report.json;EVIDENCE:.specify/sprints/sprint-20/attestations/IFC-164/context_ack.json,VALIDATE:pnpm test,180/360/720,2026-09-20,2026-10-02,0,"IFC-005:FS,IFC-086:FS,IFC-095:FS",
IFC-165,Performance,Performance Baseline - Real Benchmarks with Live Infrastructure,DevOps + SRE (STOA-Foundation),"ENV-015-AI,IFC-003,ENV-005-AI",FILE:apps/api/src/index.ts;FILE:packages/db/prisma/schema.prisma;ENV:API server running;ENV:Database running;ENV:Docker infrastructure stable;POLICY:All services healthy,"Run REAL performance benchmarks: (1) Start API server and database, (2) Execute artifacts/benchmarks/run-baseline-benchmark.ts, (3) Capture actual API p95/p99 latencies, (4) Capture actual DB query times, (5) Update baseline.json with measured data; Follow-up to ENV-015-AI which created config but had simulated data",Backlog,Real API latencies measured; Real DB query times; baseline.json contains actual measurements,20,ARTIFACT:artifacts/benchmarks/baseline.json;ARTIFACT:artifacts/reports/performance-baseline-report.json;EVIDENCE:.specify/sprints/sprint-20/attestations/IFC-165/context_ack.json,VALIDATE:pnpm test;AUDIT:performance-review,180/360/720,2026-09-22,2026-10-03,0,"ENV-015-AI:FS,IFC-003:FS,ENV-005-AI:FS",
IFC-166,Documentation,NBA Demo Video Recording,AI Specialist (STOA-Intelligence),IFC-039,FILE:docs/planning/nba-demo.md;ENV:System stable and running;ENV:OpenAI API configured;POLICY:Demo scenarios validated,Record actual nba-demo.mp4 video demonstrating Next Best Action feature with real AI responses; Follow-up from IFC-039,Backlog,"Video recorded, demonstrates AI value, <5min duration",24,ARTIFACT:artifacts/misc/nba-demo.mp4;EVIDENCE:.specify/sprints/sprint-24/attestations/IFC-166/context_ack.json,VALIDATE:pnpm typecheck,120/240/480,2026-11-15,2026-11-25,0,IFC-039:FS,
IFC-175,Validation,RAG Production Validation - Follow-up to IFC-039,AI Specialist (STOA-Intelligence),IFC-039,FILE:apps/ai-worker/src/chains/rag-context.chain.ts;FILE:apps/ai-worker/src/services/retrieval-service.ts;ENV:Supabase pgvector ready;ENV:OpenAI API configured;ENV:Documents indexed,Validate RAG chain works with real pgvector in production; test RetrievalService integration with live Supabase; verify ACL permissions; test with indexed documents; Follow-up from IFC-039,Backlog,RAG retrieval works in production; <200ms latency; ACL filtering verified; relevance >85%,24,ARTIFACT:artifacts/misc/rag-production-validation.json;EVIDENCE:.specify/sprints/sprint-24/attestations/IFC-175/context_ack.json,VALIDATE:integration-test,180/360/720,2026-11-17,2026-11-28,0,IFC-039:FS,
IFC-167,Platform,Wire workers to pnpm dev startup - Follow-up to IFC-163,DevOps (STOA-Automation),IFC-163,FILE:package.json;FILE:turbo.json;FILE:apps/workers/notifications-worker/package.json;FILE:apps/workers/events-worker/package.json;FILE:apps/workers/ingestion-worker/package.json,Workers auto-start with pnpm dev; all 3 workers running; health checks pass; verified by: pnpm dev starts all services,Completed,All workers start <30s; zero manual startup required,14,ARTIFACT:package.json;ARTIFACT:turbo.json;EVIDENCE:.specify/sprints/sprint-14/attestations/IFC-167/attestation.json,VALIDATE:pnpm typecheck,60/120/240,2026-06-28,2026-07-05,100,IFC-163:FS,
IFC-168,AI/ML,Convert AI worker to BullMQ queue consumer - Follow-up to IFC-005/IFC-085,AI Specialist + Backend Dev (STOA-Intelligence),"IFC-005,IFC-085,IFC-163",FILE:apps/ai-worker/src/index.ts;FILE:apps/workers/shared/src/base-worker.ts;ENV:BullMQ configured;ENV:Redis running,AI worker extends BaseWorker; implements job handlers for scoring and predictions; processes jobs from queue; health endpoint exposed; verified by: pnpm test,Completed,Queue jobs processed <2s; zero dropped jobs; health check passes,14,ARTIFACT:apps/ai-worker/src/index.ts;ARTIFACT:apps/ai-worker/src/jobs/scoring.job.ts;ARTIFACT:apps/ai-worker/src/jobs/prediction.job.ts;EVIDENCE:.specify/sprints/sprint-14/attestations/IFC-168/attestation.json,VALIDATE:pnpm test;VALIDATE:pnpm test:integration,120/240/480,2026-06-30,2026-07-09,100,"IFC-005:FS,IFC-085:FS,IFC-163:FS",
IFC-169,Security,Require Supabase env vars - Follow-up to IFC-006,Security Eng (STOA-Security),IFC-006,FILE:apps/api/src/lib/supabase.ts;FILE:apps/api/src/index.ts;FILE:docs/security/zero-trust-design.md,Remove mock key fallback; fail fast if SUPABASE_URL or SUPABASE_ANON_KEY missing; startup validation added; verified by: pnpm test,Completed,Zero mock keys in production; startup fails without config; auth validates real tokens,12,ARTIFACT:apps/api/src/lib/supabase.ts;ARTIFACT:docs/operations/env-requirements.md;EVIDENCE:.specify/sprints/sprint-12/attestations/IFC-169/attestation.json,VALIDATE:pnpm test;AUDIT:security-review,60/120/240,2026-05-31,2026-06-08,100,IFC-006:FS,
IFC-170,Notifications,Implement Twilio SMS channel - Follow-up to IFC-157,Backend Dev (STOA-Domain),IFC-157,FILE:apps/workers/notifications-worker/src/channels/sms.ts;ENV:Twilio account configured;ENV:TWILIO_ACCOUNT_SID set;ENV:TWILIO_AUTH_TOKEN set,Uncomment Twilio SDK calls; implement real SMS delivery; add delivery status tracking; rate limiting; verified by: pnpm test,Completed,SMS delivery success >95%; delivery status tracked; rate limits enforced,12,ARTIFACT:apps/workers/notifications-worker/src/channels/sms.ts;ARTIFACT:packages/adapters/src/messaging/twilio/client.ts;EVIDENCE:.specify/sprints/sprint-12/attestations/IFC-170/attestation.json;ARTIFACT:docs/architecture/adr/ADR-023-communications-inbox.md;ARTIFACT:docs/planning/prd-communications-inbox.md,VALIDATE:pnpm test,90/180/360,2026-06-02,2026-06-10,100,IFC-157:FS,
IFC-171,Notifications,Implement webhook notification channel - Follow-up to IFC-157,Backend Dev (STOA-Domain),IFC-157,FILE:apps/workers/notifications-worker/src/channels/webhook.ts,Implement HTTP POST delivery; add HMAC signature for outbound webhooks; retry with exponential backoff; DLQ handling; verified by: pnpm test,Completed,Webhook delivery success >99%; signatures valid; retries working,12,ARTIFACT:apps/workers/notifications-worker/src/channels/webhook.ts;ARTIFACT:apps/workers/notifications-worker/src/__tests__/webhook.test.ts;ARTIFACT:packages/adapters/src/webhooks/outbound.ts;EVIDENCE:.specify/sprints/sprint-12/attestations/IFC-171/attestation.json;ARTIFACT:docs/architecture/adr/ADR-023-communications-inbox.md;ARTIFACT:docs/planning/prd-communications-inbox.md,VALIDATE:pnpm test,90/180/360,2026-06-04,2026-06-12,100,IFC-157:FS,
IFC-172,Integration,Complete Microsoft Calendar integration - Follow-up to IFC-138,Backend Dev + Calendar Specialist (STOA-Domain),IFC-138,FILE:packages/adapters/src/calendar/microsoft/client.ts;FILE:packages/adapters/src/calendar/shared/index.ts;ENV:Microsoft Azure app registered;ENV:OAuth credentials obtained,Implement Microsoft Graph API calls for calendar CRUD; OAuth2 with refresh tokens; bidirectional sync; webhook subscriptions; conflict resolution; verified by: pnpm test,Completed,Sync reliability >99%; OAuth flow working; webhooks registered,13,ARTIFACT:packages/adapters/src/calendar/microsoft/client.ts;ARTIFACT:packages/adapters/src/calendar/microsoft/__tests__/client.test.ts;EVIDENCE:.specify/sprints/sprint-13/attestations/IFC-172/attestation.json;ARTIFACT:docs/architecture/adr/ADR-024-scheduling-calendar.md;ARTIFACT:docs/planning/prd-scheduling-calendar.md,VALIDATE:pnpm test;VALIDATE:pnpm test:integration,120/240/480,2026-06-14,2026-06-25,100,IFC-138:FS,
IFC-173,Integration,Complete inbound email parsing endpoint - Follow-up to IFC-144,Backend Dev + Integration Eng (STOA-Domain),IFC-144,FILE:packages/adapters/src/messaging/email/inbound.ts;ENV:Email provider webhook configured,Implement inbound email webhook endpoint; parse email headers and body; extract attachments; create case/conversation records; verified by: pnpm test,Completed,Parse accuracy >99%; attachments extracted; records created correctly,13,ARTIFACT:packages/adapters/src/messaging/email/inbound.ts;ARTIFACT:apps/api/src/modules/email/inbound.router.ts;EVIDENCE:.specify/sprints/sprint-13/attestations/IFC-173/attestation.json;ARTIFACT:docs/architecture/adr/ADR-023-communications-inbox.md;ARTIFACT:docs/planning/prd-communications-inbox.md,VALIDATE:pnpm test,90/180/360,2026-06-16,2026-06-25,100,IFC-144:FS,
IFC-174,AI/ML,Run REAL Ollama benchmarks - Follow-up to IFC-085,AI Specialist (STOA-Intelligence),"IFC-085,IFC-168",FILE:apps/ai-worker/src/chains/scoring.chain.ts;FILE:artifacts/benchmarks/accuracy-benchmarks.json;ENV:Ollama running locally;ENV:AI worker consuming queue,Replace simulated accuracy-benchmarks.json with real measured data; run actual scoring tests with Ollama; document real cost savings; verified by benchmark script,Completed,Real accuracy data captured; benchmark script passes; cost reduction verified,14,ARTIFACT:artifacts/benchmarks/accuracy-benchmarks.json;ARTIFACT:scripts/run-ollama-benchmark.ts;EVIDENCE:.specify/sprints/sprint-14/attestations/IFC-174/attestation.json,VALIDATE:pnpm test,120/240/480,2026-07-03,2026-02-23,100,"IFC-085:FS,IFC-168:FS",
PG-128,AI Settings,FLOW-045: AI Chain Versioning Admin UI - Wire IFC-086 Backend,Frontend Dev + AI Specialist (STOA-Intelligence),IFC-086,IMPLEMENTS:FLOW-045;FILE:docs/planning/prd-ai-chain-versioning.md;FILE:docs/architecture/adr/ADR-028-ai-chain-versioning.md;FILE:.specify/memory/Framework.md;FILE:audit-matrix.yml;FILE:apps/api/src/modules/chain-version/chain-version.router.ts;FILE:packages/application/src/services/ChainVersionService.ts;FILE:packages/domain/src/ai/ChainVersionConstants.ts;FILE:packages/adapters/src/memory/zep/zep-client.ts;FILE:docs/design/sitemap.md;FILE:docs/design/ui-flow-mapping.md;FILE:docs/design/page-registry.md;DESIGN:docs/design/mockups/ai-settings.png,"AI Settings page with chain version management; version list/create/activate/rollback; Zep budget gauge; A/B test config; version comparison; audit log; Response <500ms, Lighthouse >=90; targets: 100% tRPC endpoints wired",Completed,Page loads <500ms; all tRPC endpoints connected; admin actions working; Zep budget visible; audit log functional; Lighthouse >=90,14,ARTIFACT:apps/web/src/app/agent-approvals/ai-settings/page.tsx;ARTIFACT:apps/web/src/components/ai-agents/ai-settings/components/ChainVersionsDashboard.tsx;ARTIFACT:apps/web/src/components/ai-agents/ai-settings/components/ChainVersionsTable.tsx;ARTIFACT:apps/web/src/components/ai-agents/ai-settings/components/ChainVersionEditor.tsx;ARTIFACT:apps/web/src/components/ai-agents/ai-settings/components/VersionComparisonView.tsx;ARTIFACT:apps/web/src/components/ai-agents/ai-settings/components/ZepBudgetGauge.tsx;ARTIFACT:apps/web/src/components/ai-agents/ai-settings/components/VersionAuditLog.tsx;ARTIFACT:apps/web/src/components/ai-agents/ai-settings/hooks/useChainVersions.ts;EVIDENCE:.specify/sprints/sprint-14/attestations/PG-128/attestation.json,GATE:lighthouse-gte-90;VALIDATE:pnpm test,120/240/480,2026-06-28,2026-07-10,100,IFC-086:FS,
IFC-176,AI Foundation,AI Output Review - Validators Layer (Zod schemas for review inputs/outputs),Backend Dev (STOA-Quality),IFC-128,FILE:packages/domain/src/ai/review/index.ts;FILE:packages/validators/src/ai-review.ts,"Zod schemas derived from domain constants; CreateReviewInput, ReviewDecisionInput, ReviewListFilter schemas; exports match domain types; verified by: pnpm test",Completed,100% schema coverage; all domain types have validators; tests passing,3,ARTIFACT:packages/validators/src/ai-review.ts;ARTIFACT:packages/validators/src/__tests__/ai-review.test.ts;EVIDENCE:.specify/sprints/sprint-3/attestations/IFC-176/attestation.json,VALIDATE:pnpm test;GATE:no-placeholder-code,60/120/240,2026-02-02,2026-02-03,100,IFC-128:FS,
IFC-177,AI Foundation,AI Output Review - Application Layer (use cases and ports),Backend Dev (STOA-Quality),"IFC-176,IFC-128",FILE:packages/domain/src/ai/review/index.ts;FILE:packages/validators/src/ai-review.ts;FILE:docs/architecture/hex-boundaries.md,"CreateReviewUseCase, ClaimReviewUseCase, ApproveReviewUseCase, RejectReviewUseCase, ReleaseReviewUseCase, EscalateReviewUseCase; IAIOutputReviewRepository port; verified by: pnpm test",Completed,100% use case coverage; 54+ tests; >90% coverage; ports defined; no domain dependencies on infra; RBAC ai_review resource; HMAC lock tokens,4,ARTIFACT:packages/domain/src/ai/review/AIOutputReviewRepository.ts;ARTIFACT:packages/application/src/ports/repositories/AIOutputReviewRepositoryPort.ts;ARTIFACT:packages/application/src/usecases/ai-review/CreateReviewUseCase.ts;ARTIFACT:packages/application/src/usecases/ai-review/ClaimReviewUseCase.ts;ARTIFACT:packages/application/src/usecases/ai-review/ApproveReviewUseCase.ts;ARTIFACT:packages/application/src/usecases/ai-review/RejectReviewUseCase.ts;ARTIFACT:packages/application/src/usecases/ai-review/ReleaseReviewUseCase.ts;ARTIFACT:packages/application/src/usecases/ai-review/EscalateReviewUseCase.ts;ARTIFACT:packages/application/src/usecases/ai-review/index.ts;SPEC:.specify/sprints/sprint-4/specifications/IFC-177-spec.md;PLAN:.specify/sprints/sprint-4/planning/IFC-177-plan.md;EVIDENCE:.specify/sprints/sprint-4/attestations/IFC-177/attestation.json,VALIDATE:pnpm test;AUDIT:code-review,120/240/480,2026-02-03,2026-02-17,100,"IFC-176:FS,IFC-128:FS",
IFC-178,AI Foundation,AI Output Review - Database Schema (Prisma models),Backend Dev (STOA-Quality),IFC-128,FILE:packages/domain/src/ai/review/index.ts;FILE:packages/db/prisma/schema.prisma;FILE:docs/architecture/adr/ADR-004-multi-tenancy.md,AIOutputReview table with tenant isolation; ReviewAuditLog table; indexes for status/tenant queries; migration script; verified by: pnpm db:migrate,Completed,Schema matches domain model; RLS policies applied; migration runs cleanly,4,ARTIFACT:packages/db/prisma/schema.prisma;ARTIFACT:infra/supabase/migrations/20260204000000_ai_output_review_rls.sql;SPEC:.specify/sprints/sprint-4/specifications/IFC-178-spec.md;PLAN:.specify/sprints/sprint-4/planning/IFC-178-plan.md;EVIDENCE:.specify/sprints/sprint-4/attestations/IFC-178/attestation.json,VALIDATE:pnpm db:migrate;AUDIT:code-review,90/180/360,2026-02-03,2026-02-14,100,IFC-128:FS,
IFC-179,AI Foundation,AI Output Review - Adapters Layer (repository implementation),Backend Dev (STOA-Quality),"IFC-177,IFC-178",FILE:packages/application/src/ports/repositories/AIOutputReviewRepositoryPort.ts;FILE:packages/db/prisma/schema.prisma;FILE:docs/architecture/hex-boundaries.md,PrismaAIOutputReviewRepository implements port; CRUD operations; query filters for status/tenant/SLA; event publishing; verified by: pnpm test,Completed,Repository implements all port methods; queries optimized; tests passing,5,ARTIFACT:packages/adapters/src/repositories/PrismaAIOutputReviewRepository.ts;ARTIFACT:packages/adapters/src/repositories/__tests__/PrismaAIOutputReviewRepository.test.ts;SPEC:.specify/sprints/sprint-5/specifications/IFC-179-spec.md;PLAN:.specify/sprints/sprint-5/planning/IFC-179-plan.md;EVIDENCE:.specify/sprints/sprint-5/attestations/IFC-179/attestation.json,VALIDATE:pnpm test;VALIDATE:pnpm test:integration,120/240/480,2026-02-04,2026-02-05,100,"IFC-177:FS,IFC-178:FS",
IFC-180,AI Foundation,AI Output Review - tRPC Router (API endpoints),Backend Dev (STOA-Quality),IFC-179,FILE:packages/adapters/src/repositories/PrismaAIOutputReviewRepository.ts;FILE:packages/application/src/usecases/ai-review/index.ts;FILE:apps/api/src/trpc.ts,"review.list, review.get, review.claim, review.approve, review.reject, review.escalate, review.stats endpoints; authentication/authorization; verified by: pnpm test",Completed,All endpoints working; auth enforced; response <200ms,5,ARTIFACT:apps/api/src/modules/ai-review/ai-review.router.ts;ARTIFACT:apps/api/src/modules/ai-review/__tests__/ai-review.router.test.ts;SPEC:.specify/sprints/sprint-5/specifications/IFC-180-spec.md;PLAN:.specify/sprints/sprint-5/planning/IFC-180-plan.md;EVIDENCE:.specify/sprints/sprint-5/attestations/IFC-180/attestation.json,VALIDATE:pnpm test;AUDIT:code-review,90/180/360,2026-02-05,2026-02-06,100,IFC-179:FS,
IFC-181,AI Foundation,AI Output Review - Frontend UI (review queue page),Frontend Dev (STOA-Quality),"IFC-180,IFC-149",FILE:apps/api/src/modules/ai-review/ai-review.router.ts;FILE:apps/web/src/app/agent-approvals/page.tsx;FILE:docs/design/UI_DEVELOPMENT_PROMPT.md;FILE:docs/company/brand/DESIGN_SYSTEM_LLM_INDEX.md;DESIGN:docs/design/mockups/ai-review-queue.html;DESIGN:docs/design/mockups/ai-review-queue.png,Review queue page with filters (status/confidence/chain type); claim/approve/reject actions; confidence score visualization; SLA countdown; follows design system (AppHeader+AppSidebar pattern aligned 2026-02-03); Lighthouse >=90; verified by: pnpm test,Completed,Queue renders correctly; actions work; Lighthouse >=90; dark mode supported,6,ARTIFACT:apps/web/src/app/agent-approvals/ai-review/page.tsx;ARTIFACT:apps/web/src/app/agent-approvals/ai-review/[id]/page.tsx;ARTIFACT:apps/web/src/components/ai-review/ReviewQueue.tsx;ARTIFACT:apps/web/src/components/ai-review/ReviewCard.tsx;ARTIFACT:apps/web/src/components/ai-review/index.ts;ARTIFACT:apps/web/src/lib/ai-review/hooks.ts;ARTIFACT:apps/web/src/lib/shared/date-utils.ts;EVIDENCE:.specify/sprints/sprint-6/attestations/IFC-181/attestation.json,VALIDATE:pnpm test;GATE:lighthouse-gte-90,180/360/720,2026-02-07,2026-03-15,100,"IFC-180:FS,IFC-149:FS",
IFC-182,Infrastructure,Home Page tRPC Router - Welcome summary activity feed AI insights pinned items daily goals,Backend Dev (STOA-Domain),"IFC-003,IFC-089",FILE:apps/api/src/router.ts;FILE:apps/api/src/trpc.ts;FILE:packages/validators/src/index.ts;FILE:docs/design/integration-backlog.md;FILE:docs/planning/prd-home-page.md;FILE:docs/specs/HOME-PAGE-SPEC.md,"home.getWelcomeSummary, home.getAIInsights, home.getActivityFeed, home.getDailyGoal, home.getPinnedItems, home.pinItem, home.unpinItem, home.reorderPinnedItems; verified by: pnpm test",Completed,All endpoints <200ms; test coverage >=90%; wired to router.ts,13,ARTIFACT:apps/api/src/modules/home/home.router.ts;ARTIFACT:packages/validators/src/home.ts;ARTIFACT:apps/api/src/modules/home/__tests__/home.router.test.ts;ARTIFACT:docs/planning/prd-home-page.md;SPEC:docs/specs/HOME-PAGE-SPEC.md;EVIDENCE:.specify/sprints/sprint-13/attestations/IFC-182/attestation.json,VALIDATE:pnpm test;GATE:coverage-gte-90,120/240/480,2026-06-14,2026-06-21,100,"IFC-003:FS,IFC-089:FS",
IFC-183,Infrastructure,Notifications tRPC Router - List mark read preferences real-time subscription,Backend Dev (STOA-Domain),"IFC-003,IFC-157",FILE:apps/api/src/router.ts;FILE:apps/api/src/trpc.ts;FILE:packages/validators/src/index.ts;FILE:docs/design/integration-backlog.md,"notifications.list, notifications.getUnreadCount, notifications.markAsRead, notifications.markAllAsRead, notifications.delete, notifications.getPreferences, notifications.updatePreferences, notifications.onNew subscription; verified by: pnpm test",Completed,All endpoints <200ms; real-time latency <100ms; test coverage >=90%,13,ARTIFACT:apps/api/src/modules/notifications/notifications.router.ts;ARTIFACT:packages/validators/src/notifications.ts;ARTIFACT:apps/api/src/modules/notifications/__tests__/notifications.router.test.ts;EVIDENCE:.specify/sprints/sprint-13/attestations/IFC-183/attestation.json,VALIDATE:pnpm test;GATE:coverage-gte-90,120/240/480,2026-02-17,2026-02-18,100,"IFC-003:FS,IFC-157:FS",
PG-129,Core CRM,Authenticated Home Page - Welcome summary activity feed AI insights pinned items goals,CRM FE+BE (STOA-Foundation),"IFC-182,IFC-069,IFC-095",IMPLEMENTS:FLOW-025;IMPLEMENTS:FLOW-047;FILE:docs/architecture/adr/ADR-027-authenticated-home-composition.md;FILE:docs/design/integration-backlog.md;FILE:apps/api/src/modules/home/home.router.ts;FILE:packages/validators/src/home.ts;FILE:apps/api/src/modules/intelligence/intelligence.router.ts;FILE:docs/company/brand/visual-identity.md;FILE:docs/company/brand/style-guide.md;FILE:docs/planning/prd-home-page.md;FILE:docs/specs/HOME-PAGE-SPEC.md,"Response <500ms, Lighthouse >=90, real-time feed working; InsightsSection, FeedSection, GoalSection, PinnedSection, QuickActions components; verified by: pnpm test",Completed,Page loads <500ms; activity feed real-time via WebSocket; AI insights displayed; pins draggable,14,ARTIFACT:apps/web/src/app/(public)/(home)/page.tsx;ARTIFACT:apps/web/src/components/home/AuthenticatedHomePage.tsx;ARTIFACT:apps/web/src/components/home/PublicHomePage.tsx;ARTIFACT:apps/web/src/components/home/HomePageContent.tsx;ARTIFACT:docs/planning/prd-home-page.md;SPEC:docs/specs/HOME-PAGE-SPEC.md;EVIDENCE:.specify/sprints/sprint-14/attestations/PG-129/attestation.json,VALIDATE:pnpm test;GATE:lighthouse-gte-90,180/360/720,2026-06-28,2026-07-08,100,"IFC-182:FS,IFC-069:FS,IFC-095:FS",
PG-130,Core CRM,Notifications Inbox Page - List mark read real-time updates filters,Platform FE+BE (STOA-Foundation),IFC-183,IMPLEMENTS:FLOW-019;FILE:docs/design/integration-backlog.md;FILE:apps/api/src/modules/notifications/notifications.router.ts;FILE:docs/company/brand/visual-identity.md;FILE:docs/company/brand/style-guide.md,"Response <300ms, Lighthouse >=90, real-time notifications via WebSocket; NotificationList, NotificationItem, NotificationFilters, NotificationBell components; infinite scroll pagination; verified by: pnpm test",Completed,Notifications load <300ms; real-time via WebSocket; mark all as read works; filter by type,14,ARTIFACT:apps/web/src/app/notifications/page.tsx;ARTIFACT:apps/web/src/components/notifications/NotificationList.tsx;ARTIFACT:apps/web/src/components/notifications/NotificationItem.tsx;ARTIFACT:apps/web/src/components/notifications/NotificationFilters.tsx;ARTIFACT:apps/web/src/components/notifications/NotificationBell.tsx;EVIDENCE:.specify/sprints/sprint-14/attestations/PG-130/attestation.json,VALIDATE:pnpm test;GATE:lighthouse-gte-90,120/240/480,2026-06-30,2026-02-23,100,IFC-183:FS,
PG-131,Core CRM,Deal Forecast UI Pages - Probability gauge risk factors recommendations history,CRM FE+BE (STOA-Intelligence),"IFC-092,IFC-095",IMPLEMENTS:FLOW-009;FILE:docs/design/integration-backlog.md;FILE:apps/api/src/modules/intelligence/intelligence.router.ts;FILE:apps/api/src/modules/opportunity/opportunity.router.ts;FILE:docs/company/brand/visual-identity.md;FILE:docs/company/brand/style-guide.md,"Response <500ms, Lighthouse >=90; ForecastHeader, ProbabilityGauge, RiskFactorsCard, RecommendedActions, ForecastHistory, ConfidenceIndicator components; verified by: pnpm test",Completed,Forecast loads <500ms; probability gauge accurate; recommendations actionable; history chart shows 30 days,14,ARTIFACT:apps/web/src/app/deals/[id]/forecast/page.tsx;ARTIFACT:apps/web/src/app/deals/forecast/page.tsx;ARTIFACT:apps/web/src/components/deals/forecast/ForecastHeader.tsx;ARTIFACT:apps/web/src/components/deals/forecast/ProbabilityGauge.tsx;ARTIFACT:apps/web/src/components/deals/forecast/RiskFactorsCard.tsx;ARTIFACT:apps/web/src/components/deals/forecast/RecommendedActions.tsx;ARTIFACT:apps/web/src/components/deals/forecast/ForecastHistory.tsx;ARTIFACT:apps/web/src/components/deals/forecast/ConfidenceIndicator.tsx;EVIDENCE:.specify/sprints/sprint-14/attestations/PG-131/attestation.json,VALIDATE:pnpm test;GATE:lighthouse-gte-90,180/360/720,2026-02-22,2026-02-23,100,"IFC-092:FS,IFC-095:FS",
PG-132,Automation,Smart Lead Routing UI - Rules configuration assignment dashboard SLA monitoring,Frontend Dev + Sales Ops (STOA-Domain),IFC-030,FILE:docs/company/brand/visual-identity.md;FILE:docs/company/brand/style-guide.md;FILE:docs/design/UI_DEVELOPMENT_PROMPT.md;FILE:docs/company/brand/DESIGN_SYSTEM_LLM_INDEX.md,"Response <500ms, Lighthouse >=90; RoutingRulesEditor, AssignmentDashboard, SLAMonitor, LeadQueueView, AgentWorkload components; drag-drop rule priority; real-time assignment view; verified by: pnpm test",Completed,Rules editor intuitive; assignments visible in real-time; SLA breaches highlighted; Lighthouse >=90,18,ARTIFACT:apps/web/src/app/settings/routing/page.tsx;ARTIFACT:apps/web/src/components/routing/RoutingRulesEditor.tsx;ARTIFACT:apps/web/src/components/routing/AssignmentDashboard.tsx;ARTIFACT:apps/web/src/components/routing/SLAMonitor.tsx;ARTIFACT:apps/web/src/components/routing/LeadQueueView.tsx;ARTIFACT:apps/web/src/components/routing/AgentWorkload.tsx;EVIDENCE:.specify/sprints/sprint-18/attestations/PG-132/attestation.json,VALIDATE:pnpm test;GATE:lighthouse-gte-90,180/360/720,2026-08-23,2026-09-03,100,IFC-030:FS,
IFC-184,Core CRM,Contact tRPC Router - CRUD search relationship linking timeline integration,Backend Dev (STOA-Domain),"IFC-102,IFC-107,IFC-003",FILE:packages/domain/src/crm/contact/Contact.ts;FILE:packages/adapters/src/repositories/PrismaContactRepository.ts;FILE:apps/api/src/router.ts;FILE:docs/architecture/hex-boundaries.md,"contact.list, contact.get, contact.create, contact.update, contact.delete, contact.search, contact.linkToAccount, contact.linkToLead, contact.getTimeline endpoints; verified by: pnpm test",Completed,All endpoints <200ms; test coverage >=90%; wired to router.ts,4,ARTIFACT:apps/api/src/modules/contact/contact.router.ts;ARTIFACT:apps/api/src/modules/contact/__tests__/contact.router.test.ts;SPEC:.specify/sprints/sprint-4/specifications/IFC-184-spec.md;EVIDENCE:.specify/sprints/sprint-4/attestations/IFC-184/attestation.json,VALIDATE:pnpm test;GATE:coverage-gte-90,90/180/360,2026-02-04,2026-02-15,100,"IFC-102:FS,IFC-107:FS,IFC-003:FS",
IFC-185,Core CRM,Account tRPC Router - CRUD hierarchy contacts opportunities activity feed,Backend Dev (STOA-Domain),"IFC-103,IFC-107,IFC-003",FILE:packages/domain/src/crm/account/Account.ts;FILE:packages/adapters/src/repositories/PrismaAccountRepository.ts;FILE:apps/api/src/router.ts;FILE:docs/architecture/hex-boundaries.md,"account.list, account.get, account.create, account.update, account.delete, account.getContacts, account.getOpportunities, account.getHierarchy, account.getActivity endpoints; verified by: pnpm test",Completed,All endpoints <200ms; test coverage >=90%; wired to router.ts,4,ARTIFACT:apps/api/src/modules/account/account.router.ts;ARTIFACT:apps/api/src/modules/account/__tests__/account.router.test.ts;SPEC:.specify/sprints/sprint-4/specifications/IFC-185-spec.md;PLAN:.specify/sprints/sprint-4/planning/IFC-185-plan.md;EVIDENCE:.specify/sprints/sprint-4/attestations/IFC-185/attestation.json,VALIDATE:pnpm test;GATE:coverage-gte-90,90/180/360,2026-02-04,2026-02-15,100,"IFC-103:FS,IFC-107:FS,IFC-003:FS",
IFC-186,Core CRM,Deal/Opportunity tRPC Router - CRUD pipeline stages probability history products,Backend Dev (STOA-Domain),"IFC-104,IFC-107,IFC-003",FILE:packages/domain/src/crm/opportunity/Opportunity.ts;FILE:packages/adapters/src/repositories/PrismaOpportunityRepository.ts;FILE:apps/api/src/router.ts;FILE:docs/architecture/hex-boundaries.md,"deal.list, deal.get, deal.create, deal.update, deal.delete, deal.moveStage, deal.getHistory, deal.getProducts, deal.getPipeline, deal.getForecast endpoints; verified by: pnpm test",Completed,All endpoints <200ms; test coverage >=90%; pipeline view optimized,5,ARTIFACT:apps/api/src/modules/opportunity/opportunity.router.ts;ARTIFACT:apps/api/src/modules/opportunity/__tests__/opportunity.router.test.ts;SPEC:.specify/sprints/sprint-5/specifications/IFC-186-spec.md;PLAN:.specify/sprints/sprint-5/planning/IFC-186-plan.md;EVIDENCE:.specify/sprints/sprint-5/attestations/IFC-186/attestation.json,VALIDATE:pnpm test;GATE:coverage-gte-90,90/180/360,2026-02-05,2026-02-22,100,"IFC-104:FS,IFC-107:FS,IFC-003:FS",
IFC-187,Core CRM,Task tRPC Router - CRUD assignment scheduling reminders timeline integration,Backend Dev (STOA-Domain),"IFC-105,IFC-107,IFC-003",FILE:packages/domain/src/crm/task/Task.ts;FILE:packages/adapters/src/repositories/PrismaTaskRepository.ts;FILE:apps/api/src/router.ts;FILE:docs/architecture/hex-boundaries.md,"task.list, task.get, task.create, task.update, task.delete, task.assign, task.complete, task.reschedule, task.getReminders, task.getByEntity endpoints; verified by: pnpm test",Completed,All endpoints <200ms; test coverage >=90%; assignee notifications work,5,ARTIFACT:apps/api/src/modules/task/task.router.ts;ARTIFACT:apps/api/src/modules/task/__tests__/task.router.test.ts;EVIDENCE:.specify/sprints/sprint-5/attestations/IFC-187/attestation.json,VALIDATE:pnpm test;GATE:coverage-gte-90,90/180/360,2026-02-15,2026-02-22,100,"IFC-105:FS,IFC-107:FS,IFC-003:FS",
IFC-188,Core CRM,Ticket Domain Entity - Aggregate with SLA priority escalation categories customer linking,Backend Dev (STOA-Domain),"IFC-002,IFC-003",FILE:packages/domain/src/index.ts;FILE:packages/validators/src/index.ts;FILE:packages/domain/src/support/TicketConstants.ts;FILE:docs/architecture/hex-boundaries.md,"Ticket aggregate with TicketId VO, TicketStatus enum, TicketPriority enum, SLAStatus, Category, Assignee, Customer link; Zod validators; repository interface; verified by: pnpm test",Completed,Aggregate follows DDD patterns; validators derive from domain constants; tests passing,4,ARTIFACT:packages/domain/src/crm/ticket/Ticket.ts;ARTIFACT:packages/domain/src/crm/ticket/TicketId.ts;ARTIFACT:packages/domain/src/crm/ticket/TicketEvents.ts;ARTIFACT:packages/domain/src/crm/ticket/TicketRepository.ts;ARTIFACT:packages/domain/src/crm/ticket/index.ts;ARTIFACT:packages/validators/src/__tests__/ticket.test.ts;EVIDENCE:.specify/sprints/sprint-4/attestations/IFC-188/completion.json,VALIDATE:pnpm test;AUDIT:code-review,90/180/360,2026-02-04,2026-02-05,100,"IFC-002:FS,IFC-003:FS",
IFC-189,Core CRM,Ticket tRPC Router - CRUD SLA tracking escalation assignment customer portal,Backend Dev (STOA-Domain),"IFC-188,IFC-107,IFC-003",FILE:packages/domain/src/crm/ticket/Ticket.ts;FILE:packages/adapters/src/repositories/PrismaTicketRepository.ts;FILE:apps/api/src/router.ts;FILE:docs/architecture/hex-boundaries.md,"ticket.list, ticket.get, ticket.create, ticket.update, ticket.close, ticket.escalate, ticket.assign, ticket.getSLAStatus, ticket.getByCustomer endpoints; verified by: pnpm test",Completed,All endpoints <200ms; SLA calculations correct; escalation triggers work,5,ARTIFACT:apps/api/src/modules/ticket/ticket.router.ts;ARTIFACT:apps/api/src/modules/ticket/__tests__/ticket.router.test.ts;ARTIFACT:packages/adapters/src/repositories/PrismaTicketRepository.ts;EVIDENCE:.specify/sprints/sprint-5/attestations/IFC-189/attestation.json,VALIDATE:pnpm test;GATE:coverage-gte-90,120/240/480,2026-02-06,2026-02-07,100,"IFC-188:FS,IFC-107:FS,IFC-003:FS",
IFC-190,Analytics,Analytics tRPC Router - Sales metrics conversion funnels time series exports,Backend Dev (STOA-Intelligence),"ANALYTICS-001,IFC-003,IFC-200",FILE:docs/api/schemas/analytics-event-schema.json;FILE:apps/api/src/router.ts;FILE:docs/planning/prd-analytics-reporting.md;FILE:docs/architecture/adr/ADR-016-analytics-integrity.md,"analytics.getOverview, analytics.getSalesMetrics, analytics.getLeadMetrics, analytics.getConversionFunnel, analytics.getTimeSeriesData, analytics.exportReport endpoints; verified by: pnpm test; must query real database not mock data",Completed,All endpoints <500ms; data from real queries; test coverage >=90%; Stmts 100% Branch 100% Funcs 100% Lines 100%,14,ARTIFACT:apps/api/src/modules/analytics/analytics.router.ts;ARTIFACT:apps/api/src/modules/analytics/__tests__/analytics.router.test.ts;EVIDENCE:.specify/sprints/sprint-14/attestations/IFC-190/attestation.json,VALIDATE:pnpm test;GATE:coverage-gte-90;GATE:real-data-check,120/240/480,2026-07-01,2026-02-22,100,"ANALYTICS-001:FS,IFC-003:FS,IFC-200:FS",
PG-133,Core CRM,Contact List & Detail Pages - Search filters relationship view activity timeline,Frontend Dev (STOA-Domain),IFC-184,FILE:apps/api/src/modules/contact/contact.router.ts;FILE:docs/company/brand/visual-identity.md;FILE:docs/company/brand/style-guide.md;FILE:docs/design/UI_DEVELOPMENT_PROMPT.md;DESIGN:docs/design/mockups/contact-list.png,"Response <500ms, Lighthouse >=90; ContactList, ContactCard, ContactDetail, ContactForm, RelationshipGraph, ActivityTimeline components; verified by: pnpm test",Completed,List loads <500ms; search works; relationships visualized; Lighthouse >=90,5,ARTIFACT:apps/web/src/app/contacts/(list)/page.tsx;ARTIFACT:apps/web/src/app/contacts/[id]/page.tsx;ARTIFACT:apps/web/src/components/contacts/ContactList.tsx;ARTIFACT:apps/web/src/components/contacts/ContactCard.tsx;ARTIFACT:apps/web/src/app/contacts/[id]/page.tsx;ARTIFACT:apps/web/src/components/contacts/ContactForm.tsx;EVIDENCE:.specify/sprints/sprint-5/attestations/PG-133/attestation.json,VALIDATE:pnpm test;GATE:lighthouse-gte-90,180/360/720,2026-02-22,2026-03-03,100,IFC-184:FS,
PG-134,Core CRM,Account List & Detail Pages - Hierarchy view contacts opportunities revenue charts,Frontend Dev (STOA-Domain),IFC-185,IMPLEMENTS:FLOW-046;FILE:docs/planning/prd-account-management.md;FILE:docs/architecture/adr/ADR-026-account-hierarchy.md;FILE:apps/api/src/modules/account/account.router.ts;FILE:docs/company/brand/visual-identity.md;FILE:docs/company/brand/style-guide.md;FILE:docs/design/UI_DEVELOPMENT_PROMPT.md;DESIGN:docs/design/mockups/account-list.png,"Response <500ms, Lighthouse >=90; AccountList, AccountCard, AccountDetail, AccountHierarchy, RevenueChart, ContactsList, OpportunitiesList components; verified by: pnpm test",Completed,List loads <500ms; hierarchy tree works; revenue chart accurate; Lighthouse >=90,5,ARTIFACT:apps/web/src/app/accounts/(list)/page.tsx;ARTIFACT:apps/web/src/app/accounts/(list)/layout.tsx;ARTIFACT:apps/web/src/app/accounts/[id]/page.tsx;ARTIFACT:apps/web/src/components/accounts/AccountCard.tsx;ARTIFACT:apps/web/src/components/accounts/AccountDetail.tsx;ARTIFACT:apps/web/src/components/accounts/AccountHierarchy.tsx;ARTIFACT:apps/web/src/components/accounts/RevenueChart.tsx;ARTIFACT:apps/web/src/components/accounts/AccountContactsList.tsx;ARTIFACT:apps/web/src/components/accounts/AccountOpportunitiesList.tsx;EVIDENCE:.specify/sprints/sprint-5/attestations/PG-134/attestation.json,VALIDATE:pnpm test;GATE:lighthouse-gte-90,180/360/720,2026-02-22,2026-03-03,100,IFC-185:FS,
PG-135,Core CRM,Deal Pipeline Page - Kanban board drag-drop stages value totals filtering,Frontend Dev (STOA-Domain),IFC-186,FILE:apps/api/src/modules/opportunity/opportunity.router.ts;FILE:docs/company/brand/visual-identity.md;FILE:docs/company/brand/style-guide.md;FILE:docs/design/UI_DEVELOPMENT_PROMPT.md;DESIGN:docs/design/mockups/deal-pipeline.png,"Response <500ms, Lighthouse >=90; PipelineBoard, StageColumn, DealCard, DealFilters, ValueSummary, DealQuickView components; drag-drop stage changes; verified by: pnpm test",Completed,Pipeline loads <500ms; drag-drop works; value totals accurate; Lighthouse >=90,6,ARTIFACT:apps/web/src/app/deals/(list)/page.tsx;ARTIFACT:apps/web/src/components/deals/PipelineBoard.tsx;ARTIFACT:apps/web/src/components/deals/StageColumn.tsx;ARTIFACT:apps/web/src/components/deals/DealCard.tsx;ARTIFACT:apps/web/src/components/deals/DealFilters.tsx;ARTIFACT:apps/web/src/components/deals/ValueSummary.tsx;EVIDENCE:.specify/sprints/sprint-6/attestations/PG-135/attestation.json,VALIDATE:pnpm test;GATE:lighthouse-gte-90,180/360/720,2026-02-09,2026-02-15,100,IFC-186:FS,
PG-136,Core CRM,Task Management Page - List calendar view assignments reminders entity linking,Frontend Dev (STOA-Domain),IFC-187,FILE:apps/api/src/modules/task/task.router.ts;FILE:docs/company/brand/visual-identity.md;FILE:docs/company/brand/style-guide.md;FILE:docs/design/UI_DEVELOPMENT_PROMPT.md;DESIGN:docs/design/mockups/task-list.png,"Response <500ms, Lighthouse >=90; TaskList, TaskCard, TaskCalendar, TaskDetail, TaskForm, ReminderConfig components; calendar and list views; verified by: pnpm test",Completed,List/calendar loads <500ms; reminders work; entity links navigable; Lighthouse >=90,6,ARTIFACT:apps/web/src/app/tasks/(list)/page.tsx;ARTIFACT:apps/web/src/app/tasks/(list)/layout.tsx;ARTIFACT:apps/web/src/app/tasks/[id]/page.tsx;ARTIFACT:apps/web/src/components/tasks/TaskList.tsx;ARTIFACT:apps/web/src/components/tasks/TaskCard.tsx;ARTIFACT:apps/web/src/components/tasks/TaskCalendar.tsx;ARTIFACT:apps/web/src/components/tasks/TaskForm.tsx;ARTIFACT:apps/web/src/components/tasks/TaskDetail.tsx;ARTIFACT:apps/web/src/components/tasks/ReminderConfig.tsx;ARTIFACT:apps/web/src/components/sidebar/configs/tasks.ts;EVIDENCE:.specify/sprints/sprint-6/attestations/PG-136/attestation.json,VALIDATE:pnpm test;GATE:lighthouse-gte-90,180/360/720,2026-02-09,2026-03-10,100,IFC-187:FS,
PG-137,Core CRM,Ticket Management Page - List detail SLA indicators escalation customer portal view,Frontend Dev (STOA-Domain),IFC-189,FILE:apps/api/src/modules/ticket/ticket.router.ts;FILE:docs/company/brand/visual-identity.md;FILE:docs/company/brand/style-guide.md;FILE:docs/design/UI_DEVELOPMENT_PROMPT.md;DESIGN:docs/design/mockups/ticket-list.png,"Response <500ms, Lighthouse >=90; TicketList, TicketCard, TicketDetail, SLAIndicator, EscalationAlert, TicketForm, CustomerPortalView components; verified by: pnpm test",Completed,List loads <500ms; SLA indicators accurate; escalation alerts visible; Lighthouse >=90,6,ARTIFACT:apps/web/src/app/tickets/(list)/page.tsx;ARTIFACT:apps/web/src/app/tickets/[id]/page.tsx;ARTIFACT:apps/web/src/components/tickets/TicketList.tsx;ARTIFACT:apps/web/src/components/tickets/TicketCard.tsx;ARTIFACT:apps/web/src/components/tickets/TicketDetail.tsx;ARTIFACT:apps/web/src/components/tickets/SLAIndicator.tsx;EVIDENCE:.specify/sprints/sprint-6/attestations/PG-137/attestation.json,VALIDATE:pnpm test;GATE:lighthouse-gte-90,180/360/720,2026-02-09,2026-02-11,100,IFC-189:FS,
PG-138,Legal,Case List & Detail Pages - Party management deadline tracking document links timeline,Frontend Dev (STOA-Domain),IFC-136,FILE:apps/api/src/modules/legal/cases.router.ts;FILE:docs/company/brand/visual-identity.md;FILE:docs/company/brand/style-guide.md;FILE:docs/design/UI_DEVELOPMENT_PROMPT.md;DESIGN:docs/design/mockups/case-list.png,"Response <500ms, Lighthouse >=90; CaseList, CaseCard, CaseDetail, PartyManager, DeadlineTracker, DocumentLinks, CaseTimeline components; verified by: pnpm test",Completed,List loads <500ms; parties editable; deadlines accurate; documents linked; Lighthouse >=90,7,ARTIFACT:apps/web/src/app/cases/(list)/page.tsx;ARTIFACT:apps/web/src/app/cases/[id]/page.tsx;ARTIFACT:apps/web/src/components/cases/CaseList.tsx;ARTIFACT:apps/web/src/components/cases/CaseDetail.tsx;ARTIFACT:apps/web/src/components/cases/PartyManager.tsx;ARTIFACT:apps/web/src/components/cases/DeadlineTracker.tsx;EVIDENCE:.specify/sprints/sprint-7/attestations/PG-138/attestation.json,VALIDATE:pnpm test;GATE:lighthouse-gte-90,180/360/720,2026-03-15,2026-02-15,100,IFC-136:FS,
PG-139,Legal,Appointment Scheduling Page - Calendar view conflict detection case linking reminders,Frontend Dev (STOA-Domain),IFC-137,FILE:apps/api/src/modules/legal/appointments.router.ts;FILE:docs/company/brand/visual-identity.md;FILE:docs/company/brand/style-guide.md;FILE:docs/design/UI_DEVELOPMENT_PROMPT.md;DESIGN:docs/design/mockups/appointment-calendar.png,"Response <500ms, Lighthouse >=90; AppointmentCalendar, AppointmentForm, ConflictWarning, CaseLinkSelector, ReminderConfig, RecurrenceEditor components; verified by: pnpm test",Completed,Calendar loads <500ms; conflicts highlighted; case links work; reminders configurable; Lighthouse >=90,7,ARTIFACT:apps/web/src/app/calendar/(list)/page.tsx;ARTIFACT:apps/web/src/app/appointments/[id]/page.tsx;ARTIFACT:apps/web/src/components/appointments/AppointmentCalendar.tsx;ARTIFACT:apps/web/src/components/appointments/AppointmentForm.tsx;ARTIFACT:apps/web/src/components/appointments/ConflictWarning.tsx;ARTIFACT:apps/web/src/components/appointments/RecurrenceEditor.tsx;EVIDENCE:.specify/sprints/sprint-7/attestations/PG-139/attestation.json,VALIDATE:pnpm test;GATE:lighthouse-gte-90,180/360/720,2026-03-15,2026-03-25,100,IFC-137:FS,
PG-140,Legal,Document Manager Page - Upload viewer version history ACL management search,Frontend Dev (STOA-Domain),"IFC-152,IFC-153",FILE:apps/api/src/modules/legal/documents.router.ts;FILE:docs/company/brand/visual-identity.md;FILE:docs/company/brand/style-guide.md;FILE:docs/design/UI_DEVELOPMENT_PROMPT.md;DESIGN:docs/design/mockups/document-manager.png,"Response <500ms, Lighthouse >=90; DocumentList, DocumentUpload, DocumentViewer, VersionHistory, ACLManager, DocumentSearch components; verified by: pnpm test",Completed,List loads <500ms; upload works; viewer renders PDFs; versions navigable; search fast; Lighthouse >=90,13,ARTIFACT:apps/web/src/app/documents/(list)/page.tsx;ARTIFACT:apps/web/src/app/documents/[id]/page.tsx;ARTIFACT:apps/web/src/components/documents/DocumentList.tsx;ARTIFACT:apps/web/src/components/documents/DocumentUpload.tsx;ARTIFACT:apps/web/src/components/documents/DocumentViewer.tsx;ARTIFACT:apps/web/src/components/documents/VersionHistory.tsx;EVIDENCE:.specify/sprints/sprint-13/attestations/PG-140/attestation.json,VALIDATE:pnpm test;GATE:lighthouse-gte-90,180/360/720,2026-02-19,2026-02-19,100,"IFC-152:FS,IFC-153:FS",
PG-141,Communications,Email Compose & History Page - Thread view compose attachments templates,Frontend Dev (STOA-Domain),IFC-144,FILE:apps/api/src/modules/email/inbound.router.ts;FILE:docs/company/brand/visual-identity.md;FILE:docs/company/brand/style-guide.md;FILE:docs/design/UI_DEVELOPMENT_PROMPT.md;DESIGN:docs/design/mockups/email-compose.png,"Response <500ms, Lighthouse >=90; EmailList, EmailThread, EmailCompose, AttachmentManager, TemplateSelector, RecipientPicker components; verified by: pnpm test",Completed,List loads <500ms; compose works; attachments upload; templates apply; Lighthouse >=90,11,ARTIFACT:apps/web/src/app/email/page.tsx;ARTIFACT:apps/web/src/app/email/[id]/page.tsx;ARTIFACT:apps/web/src/components/email/EmailList.tsx;ARTIFACT:apps/web/src/components/email/EmailThread.tsx;ARTIFACT:apps/web/src/components/email/EmailCompose.tsx;ARTIFACT:apps/web/src/components/email/AttachmentManager.tsx;EVIDENCE:.specify/sprints/sprint-11/attestations/PG-141/attestation.json,VALIDATE:pnpm test;GATE:lighthouse-gte-90,180/360/720,2026-04-01,2026-04-12,100,IFC-144:FS,
PG-142,AI Intelligence,Sentiment Analysis Dashboard at /agent-approvals/sentiment - Timeline badges trend visualization email sentiment preview,Frontend Dev (STOA-Intelligence),"IFC-039,IFC-181",FILE:apps/ai-worker/src/chains/sentiment.chain.ts;FILE:apps/web/src/components/sidebar/configs/agent-approvals.ts;FILE:docs/design/UI_DEVELOPMENT_PROMPT.md,Page renders at /agent-approvals/sentiment; SentimentDashboard with timeline badges trend charts emotion indicators urgency labels topic tags; reuses SearchFilterBar; Lighthouse >=90; verified by: pnpm test,Completed,Page loads <500ms; badges render correctly; trends accurate; emotion detection visible; Lighthouse >=90; test coverage >=90%,7,ARTIFACT:apps/web/src/app/agent-approvals/sentiment/page.tsx;ARTIFACT:apps/web/src/components/ai-intelligence/SentimentDashboard.tsx;ARTIFACT:apps/web/src/components/ai-intelligence/SentimentTrend.tsx;ARTIFACT:apps/web/src/components/ai-intelligence/__tests__/SentimentDashboard.test.tsx;EVIDENCE:.specify/sprints/sprint-7/attestations/PG-142/attestation.json,VALIDATE:pnpm test;GATE:lighthouse-gte-90,120/240/480,,,100,"IFC-039:FS,IFC-181:FS",
PG-143,AI Intelligence,Churn Risk Dashboard at /agent-approvals/churn-risk - Health scores risk indicators intervention triggers trend charts,Frontend Dev (STOA-Intelligence),"IFC-095,IFC-181",FILE:apps/ai-worker/src/chains/churn-risk.chain.ts;FILE:apps/web/src/components/sidebar/configs/agent-approvals.ts;FILE:docs/design/UI_DEVELOPMENT_PROMPT.md;DESIGN:docs/design/mockups/churn-dashboard.png,Page renders at /agent-approvals/churn-risk; ChurnDashboard with HealthScoreGauge RiskIndicators InterventionAlerts ChurnTrendChart AtRiskCustomerList; Lighthouse >=90; verified by: pnpm test,Completed,Dashboard loads <500ms; health scores accurate; interventions actionable; trends visible; Lighthouse >=90; test coverage >=90%,7,ARTIFACT:apps/web/src/app/agent-approvals/churn-risk/page.tsx;ARTIFACT:apps/web/src/components/ai-intelligence/ChurnDashboard.tsx;ARTIFACT:apps/web/src/components/ai-intelligence/HealthScoreGauge.tsx;ARTIFACT:apps/web/src/components/ai-intelligence/RiskIndicators.tsx;ARTIFACT:apps/web/src/components/ai-intelligence/ChurnTrendChart.tsx;ARTIFACT:apps/web/src/components/ai-intelligence/__tests__/ChurnDashboard.test.tsx;EVIDENCE:.specify/sprints/sprint-7/attestations/PG-143/attestation.json,VALIDATE:pnpm test;GATE:lighthouse-gte-90,180/360/720,,,100,"IFC-095:FS,IFC-181:FS",
PG-144,AI Intelligence,AI Search (RAG) Page at /agent-approvals/ai-search - Universal search bar AI-powered results citations source highlighting,Frontend Dev (STOA-Intelligence),"IFC-156,IFC-155,IFC-181",FILE:apps/ai-worker/src/chains/rag-context.chain.ts;FILE:apps/ai-worker/src/services/retrieval-service.ts;FILE:apps/web/src/components/sidebar/configs/agent-approvals.ts;FILE:docs/design/UI_DEVELOPMENT_PROMPT.md,Page renders at /agent-approvals/ai-search; GlobalSearchBar with AI-powered results CitationDisplay SourceHighlight SearchFilters RelevanceScore; response <1s; Lighthouse >=90; verified by: pnpm test,Completed,Search <1s; AI results accurate; citations linked; sources highlighted; Lighthouse >=90; test coverage >=90%,7,ARTIFACT:apps/web/src/app/agent-approvals/ai-search/page.tsx;ARTIFACT:apps/web/src/components/ai-intelligence/AISearchPage.tsx;ARTIFACT:apps/web/src/components/ai-intelligence/CitationDisplay.tsx;ARTIFACT:apps/web/src/components/ai-intelligence/SourceHighlight.tsx;ARTIFACT:apps/web/src/components/ai-intelligence/__tests__/AISearchPage.test.tsx;EVIDENCE:.specify/sprints/sprint-7/attestations/PG-144/attestation.json,VALIDATE:pnpm test;GATE:lighthouse-gte-90,180/360/720,2026-02-16,2026-02-16,100,"IFC-156:FS,IFC-155:FS,IFC-181:FS",
PG-145,AI Intelligence,Next Best Action Dashboard - NBA recommendations deal insights action cards success metrics Cross-entity scope: refine NextBestAction impact scoring from coarse 3-tier (HIGH/MEDIUM/LOW) to multi-factor model incorporating engagement score sentiment trend and activity recency. Apply refined scoring to NextBestActionCard on Lead and Contact detail pages.,Frontend Dev (STOA-Intelligence),IFC-095,FILE:apps/api/src/modules/intelligence/intelligence.router.ts;FILE:docs/company/brand/visual-identity.md;FILE:docs/company/brand/style-guide.md;FILE:docs/design/UI_DEVELOPMENT_PROMPT.md,"Response <500ms, Lighthouse >=90; NBADashboard, RecommendationCard, ActionPriority, SuccessMetrics, DealInsights, NBATimeline components; verified by: pnpm test; Impact scoring uses multi-factor model; entity detail page NextBestActionCards updated with refined scoring",Backlog,Dashboard loads <500ms; recommendations actionable; deal insights accurate; success metrics tracked; Lighthouse >=90,26,ARTIFACT:apps/web/src/app/analytics/nba/page.tsx;ARTIFACT:apps/web/src/components/nba/NBADashboard.tsx;ARTIFACT:apps/web/src/components/nba/RecommendationCard.tsx;ARTIFACT:apps/web/src/components/nba/ActionPriority.tsx;ARTIFACT:apps/web/src/components/nba/SuccessMetrics.tsx;ARTIFACT:apps/web/src/components/nba/DealInsights.tsx;EVIDENCE:.specify/sprints/sprint-26/attestations/PG-145/context_ack.json,VALIDATE:pnpm test;GATE:lighthouse-gte-90,180/360/720,2026-12-15,2026-12-26,0,IFC-095:FS,
PG-146,AI Intelligence,Drift Detection Dashboard at /agent-approvals/drift - Model performance drift alerts cost tracking error rates,Frontend Dev (STOA-Intelligence),"IFC-117,IFC-197",FILE:apps/ai-worker/src/monitoring/drift-detector.ts;FILE:apps/ai-worker/src/monitoring/index.ts;FILE:apps/web/src/components/sidebar/configs/agent-approvals.ts;FILE:docs/design/UI_DEVELOPMENT_PROMPT.md,Page renders at /agent-approvals/drift; DriftDashboard with ModelPerformanceChart DriftAlerts CostTracker ErrorRateGauge; real-time drift status; Lighthouse >=90; verified by: pnpm test,Completed,Dashboard loads <500ms; drift alerts working; cost tracking accurate; error rates visible; Lighthouse >=90; test coverage >=90%,8,ARTIFACT:apps/web/src/app/agent-approvals/drift/page.tsx;ARTIFACT:apps/web/src/components/ai-monitoring/DriftDashboard.tsx;ARTIFACT:apps/web/src/components/ai-monitoring/DriftAlerts.tsx;ARTIFACT:apps/web/src/components/ai-monitoring/ModelPerformanceChart.tsx;ARTIFACT:apps/web/src/components/ai-monitoring/__tests__/DriftDashboard.test.tsx;EVIDENCE:.specify/sprints/sprint-8/attestations/PG-146/attestation.json,VALIDATE:pnpm test;GATE:lighthouse-gte-90,180/360/720,2026-02-16,2026-02-18,100,"IFC-117:FS,IFC-197:FS",
PG-147,Platform,Workflow List & Status UI - Active workflows execution status step visualization logs,Frontend Dev (STOA-Automation),"IFC-028,IFC-141",FILE:apps/api/src/modules/workflow/workflow.router.ts;FILE:docs/company/brand/visual-identity.md;FILE:docs/company/brand/style-guide.md;FILE:docs/design/UI_DEVELOPMENT_PROMPT.md,"Response <500ms, Lighthouse >=90; WorkflowList, WorkflowDetail, StepVisualization, ExecutionLogs, StatusBadges, WorkflowTriggers components; verified by: pnpm test",Backlog,List loads <500ms; steps visualized; execution logs visible; status updates real-time; Lighthouse >=90,28,ARTIFACT:apps/web/src/app/workflows/page.tsx;ARTIFACT:apps/web/src/app/workflows/[id]/page.tsx;ARTIFACT:apps/web/src/components/workflows/WorkflowList.tsx;ARTIFACT:apps/web/src/components/workflows/WorkflowDetail.tsx;ARTIFACT:apps/web/src/components/workflows/StepVisualization.tsx;ARTIFACT:apps/web/src/components/workflows/ExecutionLogs.tsx;EVIDENCE:.specify/sprints/sprint-28/attestations/PG-147/context_ack.json,VALIDATE:pnpm test;GATE:lighthouse-gte-90,180/360/720,2027-01-15,2027-01-26,0,"IFC-028:FS,IFC-141:FS",
IFC-191,Platform,User Timezone Support - Add timezone field to User model with preference UI and timezone-aware greeting,Backend Dev (STOA-Domain),IFC-182,FILE:packages/db/prisma/schema.prisma;FILE:apps/api/src/modules/home/home.router.ts;FILE:apps/web/src/app/settings/account/page.tsx,User.timezone field added to Prisma schema; migration created; home.getWelcomeSummary greeting uses user timezone via Intl.DateTimeFormat; TimezoneSelector on /settings/account with tRPC persistence; fallback chain: user timezone → UTC; 74 tests passing; user router 100% coverage,Completed,Greeting correct for all timezones; migration reversible; settings UI works; test coverage >=90%,15,ARTIFACT:packages/db/prisma/migrations/*_add_user_timezone/migration.sql;ARTIFACT:apps/web/src/components/settings/TimezoneSelector.tsx;EVIDENCE:.specify/sprints/sprint-15/attestations/IFC-191/attestation.json;SPEC:.specify/sprints/sprint-15/specifications/IFC-191-spec.md;PLAN:.specify/sprints/sprint-15/planning/IFC-191-plan.md,VALIDATE:pnpm test;GATE:coverage-gte-90,60/120/240,2026-02-25,2026-02-25,100,IFC-182:FS,
IFC-192,Core CRM,Contact Activity Tracking - Add lastContactedAt field to Contact model with auto-update on interactions,Backend Dev (STOA-Domain),"IFC-182,IFC-184",FILE:packages/db/prisma/schema.prisma;FILE:packages/domain/src/crm/contact/Contact.ts;FILE:apps/api/src/modules/contact/contact.router.ts,Contact.lastContactedAt field added to Prisma schema; migration applied; field auto-updated on call/email/meeting events via domain event handler; home.getAIInsights generates stale contact warnings (30+ days no contact with open opportunities); verified by: pnpm test,Completed,lastContactedAt updates on interactions; stale contact insight works; migration reversible; test coverage >=90%,15,ARTIFACT:packages/db/prisma/migrations/*_add_contact_last_contacted/migration.sql;ARTIFACT:packages/application/src/services/ContactService.ts;EVIDENCE:.specify/sprints/sprint-15/attestations/IFC-192/attestation.json;SPEC:.specify/sprints/sprint-15/specifications/IFC-192-spec.md;PLAN:.specify/sprints/sprint-15/planning/IFC-192-plan.md,VALIDATE:pnpm test;GATE:coverage-gte-90,90/180/360,2026-02-27,2026-02-27,100,"IFC-182:FS,IFC-184:FS",
IFC-193,Infrastructure,Activity Feed Type Registry - Enum-based mapping from AuditLogEntry.eventType to ActivityFeedType with metadata,Backend Dev (STOA-Domain),IFC-182,FILE:apps/api/src/modules/home/home.router.ts;FILE:packages/domain/src/crm/activity/ActivityTypeRegistry.ts;FILE:packages/validators/src/home.ts,ACTIVITY_TYPE_REGISTRY constant maps all AuditLogEntry.eventType values to ActivityFeedType with icon/label/color metadata; router uses registry instead of string includes(); new event types require only registry entry; verified by: pnpm test,Completed,All event types mapped; registry extensible; no string matching in router; test coverage >=90%,16,ARTIFACT:packages/domain/src/crm/activity/ActivityTypeRegistry.ts;ARTIFACT:packages/domain/src/crm/activity/__tests__/ActivityTypeRegistry.test.ts;EVIDENCE:.specify/sprints/sprint-16/attestations/IFC-193/attestation.json;EVIDENCE:.specify/sprints/sprint-16/attestations/IFC-193/attestation.json;SPEC:.specify/sprints/sprint-16/specifications/IFC-193-spec.md;PLAN:.specify/sprints/sprint-16/planning/IFC-193-plan.md,VALIDATE:pnpm test;GATE:coverage-gte-90,60/120/240,2026-03-08,2026-03-08,100,IFC-182:FS,
IFC-194,Architecture,Router Middleware Standardization - Migrate all routers from manual getTenantId to tenantProcedure,Backend Dev (STOA-Foundation),"IFC-182,IFC-003",FILE:apps/api/src/trpc.ts;FILE:apps/api/src/router.ts;FILE:apps/api/src/modules/home/home.router.ts,All tenant-scoped routers use tenantProcedure from trpc.ts; manual getTenantId/getUserId helpers removed; consistent ctx.tenantId access pattern across all routers; architecture test enforces tenantProcedure usage; verified by: pnpm test,Completed,All routers use tenantProcedure; no manual tenant extraction; architecture test passing; zero functional regressions,16,ARTIFACT:tests/architecture/tenant-procedure-enforcement.test.ts;EVIDENCE:.specify/sprints/sprint-16/attestations/IFC-194/attestation.json;SPEC:.specify/sprints/sprint-16/specifications/IFC-194-spec.md;PLAN:.specify/sprints/sprint-16/planning/IFC-194-plan.md,VALIDATE:pnpm test;GATE:architecture-test-pass,90/180/360,2026-03-10,2026-03-10,100,"IFC-182:FS,IFC-003:FS",
IFC-195,Core CRM,Customizable Daily Goals - Multi-type goal support (revenue calls meetings tasks custom) with user preferences,Backend Dev (STOA-Domain),IFC-182,FILE:apps/api/src/modules/home/home.router.ts;FILE:packages/validators/src/home.ts;FILE:apps/web/src/components/home/AuthenticatedHomePage.tsx,home.getDailyGoal calculates progress for all 5 goal types (revenue/calls/meetings/tasks/custom); home.updateDailyGoal mutation saves goal preferences; user can select goal type and target from settings modal; default remains $5000 revenue; verified by: pnpm test,Completed,All 5 goal types calculate correctly; preferences persist; settings modal works; test coverage >=90%,15,ARTIFACT:apps/api/src/modules/home/home.router.ts;ARTIFACT:apps/web/src/components/home/GoalSettingsModal.tsx;ARTIFACT:packages/validators/src/home.ts;EVIDENCE:.specify/sprints/sprint-15/attestations/IFC-195/attestation.json;EVIDENCE:.specify/sprints/sprint-15/attestations/IFC-195/attestation.json,VALIDATE:pnpm test;GATE:coverage-gte-90,90/180/360,2026-02-27,2026-02-28,100,IFC-182:FS,
IFC-196,Performance,Home Page Response Caching - Redis caching for getWelcomeSummary with event-driven invalidation,Backend Dev (STOA-Foundation),"IFC-182,IFC-075",FILE:apps/api/src/modules/home/home.router.ts;FILE:packages/adapters/src/cache/RedisCacheAdapter.ts,getWelcomeSummary cached in Redis with 5-minute TTL; cache key: tenant:userId:home:summary; invalidated on lead/opportunity/task mutations via domain events; graceful fallback to direct queries when Redis unavailable; verified by: pnpm test,Completed,Cache hit rate >80%; p95 <50ms on cache hit; graceful degradation; invalidation correct; test coverage >=90%,17,ARTIFACT:apps/api/src/modules/home/home.cache.ts;ARTIFACT:apps/api/src/modules/home/__tests__/home.cache.test.ts;EVIDENCE:.specify/sprints/sprint-17/attestations/IFC-196/attestation.json,VALIDATE:pnpm test;GATE:coverage-gte-90,90/180/360,2026-04-13,2026-04-13,100,"IFC-182:FS,IFC-075:FS",
IFC-197,AI Intelligence,AI Monitoring tRPC Router - Expose drift detection latency metrics hallucination checks ROI tracking and agent status via tRPC endpoints,Backend Dev (STOA-Intelligence),"IFC-117,IFC-125",FILE:apps/ai-worker/src/monitoring/index.ts;FILE:apps/ai-worker/src/monitoring/drift-detector.ts;FILE:apps/ai-worker/src/monitoring/latency-monitor.ts;FILE:apps/ai-worker/src/monitoring/hallucination-checker.ts;FILE:apps/ai-worker/src/monitoring/roi-tracker.ts,tRPC router with endpoints: getDriftMetrics getLatencyMetrics getHallucinationReport getROIMetrics getMonitoringStatus getActiveAgents getAgentLogs; all endpoints tenant-isolated; response <200ms; verified by: pnpm test,Completed,Endpoints respond <200ms; all monitoring data accessible via API; tenant isolation enforced; test coverage >=90%,7,ARTIFACT:apps/api/src/modules/ai-monitoring/ai-monitoring.router.ts;ARTIFACT:apps/api/src/modules/ai-monitoring/__tests__/ai-monitoring.router.test.ts;EVIDENCE:.specify/sprints/sprint-7/attestations/IFC-197/attestation.json,VALIDATE:pnpm test;GATE:coverage-gte-90,60/120/240,2026-02-09,2026-02-10,100,"IFC-117:FS,IFC-125:FS",
PG-148,AI Intelligence,Lead Scoring Dashboard at /agent-approvals/lead-scoring - Score distributions model accuracy top leads factor breakdown,Frontend Dev (STOA-Intelligence),"IFC-005,IFC-023,IFC-181",FILE:apps/ai-worker/src/chains/scoring.chain.ts;FILE:packages/ui/src/components/score/ConfidenceIndicator.tsx;FILE:apps/web/src/components/sidebar/configs/agent-approvals.ts;FILE:docs/design/UI_DEVELOPMENT_PROMPT.md,Page renders at /agent-approvals/lead-scoring; score distribution chart; model accuracy metrics; top-scored leads list; factor breakdown per lead; reuses ConfidenceIndicator and ScoreCard components; Lighthouse >=90; verified by: pnpm test,Completed,Page loads <500ms; score data accurate; charts render correctly; reuses existing score components; Lighthouse >=90; test coverage >=90%,7,ARTIFACT:apps/web/src/app/agent-approvals/lead-scoring/page.tsx;ARTIFACT:apps/web/src/components/ai-intelligence/LeadScoringDashboard.tsx;ARTIFACT:apps/web/src/components/ai-intelligence/__tests__/LeadScoringDashboard.test.tsx;EVIDENCE:.specify/sprints/sprint-7/attestations/PG-148/attestation.json,VALIDATE:pnpm test;GATE:lighthouse-gte-90,90/180/360,2026-02-16,2026-02-16,100,"IFC-005:FS,IFC-023:FS,IFC-181:FS",
PG-149,AI Intelligence,Experiments Dashboard at /agent-approvals/experiments - A/B test management experiment results statistical analysis variant comparison,Frontend Dev (STOA-Intelligence),"IFC-025,IFC-181",FILE:apps/api/src/modules/experiment/experiment.router.ts;FILE:apps/ai-worker/src/analytics/statistical-analysis.ts;FILE:apps/web/src/components/sidebar/configs/agent-approvals.ts;FILE:docs/design/UI_DEVELOPMENT_PROMPT.md,Page renders at /agent-approvals/experiments; experiment list with status filters; create/start/stop/complete actions; statistical significance display; variant comparison charts; confidence intervals; verified by: pnpm test,Completed,Page loads <500ms; experiments manageable; statistical results accurate; variant comparison visible; Lighthouse >=90; test coverage >=90%,7,ARTIFACT:apps/web/src/app/agent-approvals/experiments/page.tsx;ARTIFACT:apps/web/src/components/ai-intelligence/ExperimentsDashboard.tsx;ARTIFACT:apps/web/src/components/ai-intelligence/__tests__/ExperimentsDashboard.test.tsx;EVIDENCE:.specify/sprints/sprint-7/attestations/PG-149/attestation.json,VALIDATE:pnpm test;GATE:lighthouse-gte-90,120/240/480,2026-02-16,2026-02-18,100,"IFC-025:FS,IFC-181:FS",
PG-150,AI Intelligence,AI Review History at /agent-approvals/history - Filterable history of all AI output reviews with timeline and audit trail,Frontend Dev (STOA-Intelligence),"IFC-181,IFC-180",FILE:apps/api/src/modules/ai-review/ai-review.router.ts;FILE:apps/web/src/lib/ai-review/hooks.ts;FILE:apps/web/src/components/ai-review/ReviewCard.tsx;FILE:apps/web/src/components/sidebar/configs/agent-approvals.ts;FILE:docs/design/UI_DEVELOPMENT_PROMPT.md,Page renders at /agent-approvals/history; full review history with date range status and output type filters; timeline visualization; audit trail per review; reuses ReviewCard component; verified by: pnpm test,Completed,Page loads <500ms; filters work correctly; timeline renders; audit trail complete; Lighthouse >=90; test coverage >=90%,7,ARTIFACT:apps/web/src/app/agent-approvals/history/page.tsx;ARTIFACT:apps/web/src/components/ai-intelligence/ReviewHistory.tsx;ARTIFACT:apps/web/src/components/ai-intelligence/__tests__/ReviewHistory.test.tsx;EVIDENCE:.specify/sprints/sprint-7/attestations/PG-150/attestation.json,VALIDATE:pnpm test;GATE:lighthouse-gte-90,90/180/360,2026-02-16,2026-02-16,100,"IFC-181:FS,IFC-180:FS",
PG-151,AI Intelligence,Active Agents Dashboard at /agent-approvals/agents - Agent status monitoring active sessions task assignments health indicators,Frontend Dev (STOA-Intelligence),"IFC-021,IFC-139,IFC-197",FILE:apps/api/src/modules/agent/agent.router.ts;FILE:apps/ai-worker/src/agents/crew.ts;FILE:apps/web/src/components/sidebar/configs/agent-approvals.ts;FILE:docs/design/UI_DEVELOPMENT_PROMPT.md,Page renders at /agent-approvals/agents; active agent list with health status; current task assignments; session history; agent type breakdown (qualification email followup NBA); health indicators; verified by: pnpm test,Completed,Page loads <500ms; agent status accurate; task assignments visible; health indicators working; Lighthouse >=90; test coverage >=90%,8,ARTIFACT:apps/web/src/app/agent-approvals/agents/page.tsx;ARTIFACT:apps/web/src/components/ai-monitoring/ActiveAgentsDashboard.tsx;ARTIFACT:apps/web/src/components/ai-monitoring/__tests__/ActiveAgentsDashboard.test.tsx;EVIDENCE:.specify/sprints/sprint-8/attestations/PG-151/attestation.json,VALIDATE:pnpm test;GATE:lighthouse-gte-90,120/240/480,2026-02-18,2026-02-18,100,"IFC-021:FS,IFC-139:FS,IFC-197:FS",
PG-152,AI Intelligence,Agent Logs Viewer at /agent-approvals/logs - Conversation transcripts tool call records searchable log timeline,Frontend Dev (STOA-Intelligence),"IFC-148,IFC-197",FILE:apps/api/src/modules/agent/conversation.router.ts;FILE:apps/web/src/components/sidebar/configs/agent-approvals.ts;FILE:docs/design/UI_DEVELOPMENT_PROMPT.md,Page renders at /agent-approvals/logs; conversation transcript viewer; tool call records with inputs/outputs; searchable log timeline; log level and date range filtering; verified by: pnpm test,Completed,Page loads <500ms; logs searchable; transcripts readable; tool calls detailed; Lighthouse >=90; test coverage >=90%,8,ARTIFACT:apps/web/src/app/agent-approvals/logs/page.tsx;ARTIFACT:apps/web/src/components/ai-monitoring/AgentLogsViewer.tsx;ARTIFACT:apps/web/src/components/ai-monitoring/__tests__/AgentLogsViewer.test.tsx;EVIDENCE:.specify/sprints/sprint-8/attestations/PG-152/attestation.json,VALIDATE:pnpm test;GATE:lighthouse-gte-90,120/240/480,2026-02-17,2026-02-17,100,"IFC-148:FS,IFC-197:FS",
PG-153,AI Intelligence,Latency Monitor Dashboard at /agent-approvals/latency - SLO compliance latency percentiles chain performance phase-level monitoring,Frontend Dev (STOA-Intelligence),"IFC-117,IFC-197",FILE:apps/ai-worker/src/monitoring/latency-monitor.ts;FILE:apps/web/src/components/sidebar/configs/agent-approvals.ts;FILE:docs/design/UI_DEVELOPMENT_PROMPT.md,Page renders at /agent-approvals/latency; SLO compliance gauges (p50 p95 p99); latency percentile charts per chain; phase-level breakdown; historical trends; alert thresholds; verified by: pnpm test,Completed,Page loads <500ms; SLO data accurate; percentiles render correctly; phase breakdown visible; Lighthouse >=90; test coverage >=90%,8,ARTIFACT:apps/web/src/app/agent-approvals/latency/page.tsx;ARTIFACT:apps/web/src/components/ai-monitoring/LatencyMonitorDashboard.tsx;ARTIFACT:apps/web/src/components/ai-monitoring/__tests__/LatencyMonitorDashboard.test.tsx;EVIDENCE:.specify/sprints/sprint-8/attestations/PG-153/attestation.json,VALIDATE:pnpm test;GATE:lighthouse-gte-90,120/240/480,2026-02-17,2026-02-17,100,"IFC-117:FS,IFC-197:FS",
IFC-198,Billing Pages,"Billing Domain Core - Invoice/Receipt aggregates, payment state machine, tax/refund rules",Backend Dev + FinOps (STOA-Domain),"IFC-099,IFC-107",IMPLEMENTS:FLOW-048;FILE:docs/planning/prd-billing-portal.md;FILE:docs/architecture/adr/ADR-029-billing-architecture.md;FILE:docs/planning/prd-erp-connectors.md;FILE:docs/architecture/adr/ADR-019-core-crm-foundation.md;ENV:Billing provider credentials configured,"Invoice and receipt domain models implemented with invariant checks, payment/refund lifecycle rules exposed via application services; artifacts: Invoice.ts, Receipt.ts, BillingDomainService.ts; verified by: pnpm test",Completed,"100% billing state transitions validated, 0 invalid status transitions in tests, p95 billing rule evaluation <50ms",13,ARTIFACT:packages/domain/src/crm/billing/Invoice.ts;ARTIFACT:packages/domain/src/crm/billing/Receipt.ts;ARTIFACT:packages/application/src/services/BillingDomainService.ts;ARTIFACT:packages/application/src/services/__tests__/BillingDomainService.test.ts;EVIDENCE:.specify/sprints/sprint-13/attestations/IFC-198/attestation.json;ARTIFACT:docs/planning/prd-billing-domain.md,VALIDATE:pnpm test;AUDIT:design-review;GATE:billing-invariants-pass,240/480/720,2026-02-09,2026-02-09,100,"IFC-099:FS,IFC-107:FS",
IFC-199,Core CRM,"Document Domain Core - lifecycle, signature state machine, ACL and retention invariants",Backend Dev + Security Eng (STOA-Domain),"IFC-106,IFC-127",FILE:docs/planning/prd-core-crm.md;FILE:docs/architecture/adr/ADR-019-core-crm-foundation.md;ENV:Document storage bucket provisioned,"Document aggregate and signature lifecycle rules implemented with ACL/retention validation, wired through application services; artifacts: Document.ts, DocumentLifecycle.ts, DocumentDomainService.ts; verified by: pnpm test",Backlog,"100% document lifecycle transitions validated, 100% ACL checks covered by tests, p95 document rule evaluation <50ms",29,ARTIFACT:packages/domain/src/crm/document/Document.ts;ARTIFACT:packages/domain/src/crm/document/DocumentLifecycle.ts;ARTIFACT:packages/application/src/services/DocumentDomainService.ts;ARTIFACT:packages/application/src/services/__tests__/DocumentDomainService.test.ts;EVIDENCE:.specify/sprints/sprint-29/attestations/IFC-199/context_ack.json;ARTIFACT:docs/planning/prd-document-domain.md,VALIDATE:pnpm test;AUDIT:design-review;GATE:document-lifecycle-invariants-pass,240/480/720,2026-02-16,2026-02-21,0,"IFC-106:FS,IFC-127:FS",
IFC-200,Analytics,Analytics Adapter Layer - query builders and export pipeline for metrics router,Data Eng + Backend Dev (STOA-Domain),"IFC-096,IFC-106",FILE:docs/planning/prd-analytics-reporting.md;FILE:docs/architecture/adr/ADR-016-analytics-integrity.md;ENV:Analytics warehouse credentials available,"Analytics repository adapters and export pipeline implemented, metrics router uses real data sources; artifacts: PrismaAnalyticsRepository.ts, AnalyticsAggregationService.ts, analytics.router.ts; verified by: pnpm test",Completed,"p95 analytics query latency <300ms, 100% export endpoints use non-mock sources, 0 schema drift failures in analytics tests",13,ARTIFACT:packages/adapters/src/repositories/PrismaAnalyticsRepository.ts;ARTIFACT:packages/application/src/services/AnalyticsAggregationService.ts;ARTIFACT:apps/api/src/modules/analytics/analytics.router.ts;ARTIFACT:apps/api/src/modules/analytics/__tests__/analytics.router.test.ts;EVIDENCE:.specify/sprints/sprint-13/attestations/IFC-200/attestation.json;ARTIFACT:docs/planning/prd-analytics-adapter.md,VALIDATE:pnpm test;GATE:real-data-check;AUDIT:code-review,180/360/540,2026-02-16,2026-02-19,100,"IFC-096:FS,IFC-106:FS",
IFC-201,Settings,"Settings Control Plane Foundations - domain models, adapters, and router for users/teams/roles/permissions/audit/integrations/webhooks/security",Platform BE + Security Eng (STOA-Domain),"IFC-072,IFC-098,IFC-099,IFC-106,IFC-124",FILE:docs/architecture/adr/ADR-009-zero-trust-security.md;FILE:docs/architecture/adr/ADR-008-audit-logging.md;FILE:docs/planning/prd-core-crm.md;ENV:Tenant RBAC policy baseline approved,"Settings domain policies and APIs implemented for IAM, audit, integrations and security controls; artifacts: settings.router.ts, settings-policy.ts, PrismaSettingsRepository.ts; verified by: pnpm test",Backlog,"100% role/permission checks covered by tests, 0 unauthorized settings mutations in integration tests, p95 settings API latency <250ms",25,ARTIFACT:packages/domain/src/settings/SettingsPolicy.ts;ARTIFACT:packages/adapters/src/repositories/PrismaSettingsRepository.ts;ARTIFACT:apps/api/src/modules/settings/settings.router.ts;ARTIFACT:apps/api/src/modules/settings/__tests__/settings.router.test.ts;EVIDENCE:.specify/sprints/sprint-25/attestations/IFC-201/context_ack.json;ARTIFACT:docs/planning/prd-settings-control-plane.md,VALIDATE:pnpm test;GATE:coverage-gte-90;AUDIT:security-review,240/480/720,2026-02-17,2026-02-24,0,"IFC-072:FS,IFC-098:FS,IFC-099:FS,IFC-106:FS,IFC-124:FS",
IFC-202,Core CRM,Activity Feed Stats Endpoint - getStats aggregation with counts by type source and entity over time windows,Backend Dev (STOA-Domain),IFC-069,FILE:apps/api/src/modules/misc/activity-feed.router.ts;FILE:packages/application/src/services/ActivityFeedService.ts;FILE:packages/application/src/ports/repositories/ActivityFeedRepositoryPort.ts,"activityFeed.getStats endpoint returning aggregate counts by type, source, entity type, and configurable time windows (24h, 7d, 30d); repository port extended with getStats method; Prisma adapter implements COUNT queries; unit and router tests; verified by: pnpm test",Completed,Response <200ms; test coverage >=90%; counts accurate vs raw feed data,16,ARTIFACT:apps/api/src/modules/misc/__tests__/activity-feed-stats.router.test.ts;EVIDENCE:.specify/sprints/sprint-16/attestations/IFC-202/attestation.json;EVIDENCE:.specify/sprints/sprint-16/attestations/IFC-202/attestation.json,VALIDATE:pnpm test;GATE:coverage-gte-90,60/120/240,2026-03-10,2026-03-10,100,IFC-069:FS,SPEC:.specify/sprints/sprint-16/specifications/IFC-202-spec.md;PLAN:.specify/sprints/sprint-16/planning/IFC-202-plan.md
IFC-203,Core CRM,Activity Feed Full-Text Search - search endpoint with text query across titles descriptions and actor names,Backend Dev (STOA-Domain),"IFC-069,IFC-155",FILE:apps/api/src/modules/misc/activity-feed.router.ts;FILE:packages/application/src/services/ActivityFeedService.ts;FILE:packages/adapters/src/repositories/PrismaActivityFeedRepository.ts,"activityFeed.search endpoint accepting text query with cursor pagination; repository uses Prisma full-text search (or ILIKE fallback) across activity titles, descriptions, and actor names; tenant-scoped; results ranked by relevance then timestamp; unit and router tests; verified by: pnpm test",Completed,Search response <500ms; test coverage >=90%; relevance ranking correct; tenant isolation enforced,16,ARTIFACT:apps/api/src/modules/misc/__tests__/activity-feed-search.router.test.ts;EVIDENCE:.specify/sprints/sprint-16/attestations/IFC-203/attestation.json,VALIDATE:pnpm test;GATE:coverage-gte-90,90/180/360,2026-03-10,2026-03-10,100,"IFC-069:FS,IFC-155:FS",SPEC:.specify/sprints/sprint-16/specifications/IFC-203-spec.md;PLAN:.specify/sprints/sprint-16/planning/IFC-203-plan.md
IFC-204,Core CRM,Activity Feed Performance Observability - queryDurationMs tracking structured logging and latency alerting,Backend Dev + DevOps (STOA-Quality),IFC-069,FILE:apps/api/src/modules/misc/activity-feed.router.ts;FILE:packages/adapters/src/repositories/PrismaActivityFeedRepository.ts;FILE:infra/monitoring/,"queryDurationMs field added to feed response; repository measures query execution time via performance.now(); structured JSON logging for all feed queries (tenant, duration, source count, cache hit/miss); alert threshold at p95 >500ms; Grafana dashboard panel; unit tests for timing; verified by: pnpm test",Backlog,p95 overhead of timing <5ms; structured logs parseable by log aggregator; test coverage >=90%,20,ARTIFACT:apps/api/src/modules/misc/__tests__/activity-feed-perf.test.ts;EVIDENCE:.specify/sprints/sprint-16/attestations/IFC-204/attestation.json,VALIDATE:pnpm test;GATE:coverage-gte-90,60/120/240,,,0,IFC-069:FS,
IFC-205,Core CRM,Ticket Full-Text Search - add search parameter to ticketQuerySchema and TicketService for subject ticketNumber contactName searching,Backend Dev (STOA-Domain),IFC-189,FILE:packages/validators/src/ticket.ts;FILE:apps/api/src/services/TicketService.ts;FILE:apps/api/src/modules/ticket/ticket.router.ts,search param added to ticketQuerySchema; TicketService filters by subject ticketNumber contactName using ILIKE; search response <500ms; test coverage >=90%; verified by: pnpm test,Completed,Search response <500ms; results match subject/ticketNumber/contactName; test coverage >=90%,6,ARTIFACT:packages/validators/src/ticket.ts;ARTIFACT:apps/api/src/services/TicketService.ts;ARTIFACT:apps/api/src/modules/ticket/__tests__/ticket-search.test.ts;EVIDENCE:.specify/sprints/sprint-6/attestations/IFC-205/attestation.json,VALIDATE:pnpm test;GATE:coverage-gte-90,60/120/240,2026-02-13,2026-02-15,100,IFC-189:FS,
IFC-206,Core CRM,Ticket Stats Enhancement - add SLA status breakdown time window filtering and sortBy sortOrder to ticket query schema,Backend Dev (STOA-Domain),IFC-189,FILE:packages/validators/src/ticket.ts;FILE:apps/api/src/modules/ticket/ticket.router.ts;FILE:apps/api/src/services/TicketService.ts,ticket.stats returns SLA status breakdown counts; ticketQuerySchema supports sortBy and sortOrder params; time window filtering for stats (24h 7d 30d); test coverage >=90%; verified by: pnpm test,Completed,Stats response <200ms; SLA breakdown counts accurate; sort params functional; test coverage >=90%,6,ARTIFACT:apps/api/src/modules/ticket/ticket.router.ts;ARTIFACT:apps/api/src/modules/ticket/__tests__/ticket-stats.test.ts;EVIDENCE:.specify/sprints/sprint-6/attestations/IFC-206/attestation.json,VALIDATE:pnpm test;GATE:coverage-gte-90,60/120/240,2026-02-13,2026-02-15,100,IFC-189:FS,
IFC-207,Core CRM,Ticket Query Performance Tracking - add queryDurationMs to ticket list and stats endpoints using performance.now pattern from timeline router,Backend Dev (STOA-Quality),IFC-189,FILE:apps/api/src/modules/ticket/ticket.router.ts,queryDurationMs field added to ticket list and stats responses; measured via performance.now() wrapping Prisma queries; p95 overhead <5ms; unit tests verify timing field present; verified by: pnpm test,Completed,p95 overhead <5ms; queryDurationMs present in responses; test coverage >=90%,6,ARTIFACT:apps/api/src/modules/ticket/ticket.router.ts;ARTIFACT:apps/api/src/modules/ticket/__tests__/ticket-perf.test.ts;EVIDENCE:.specify/sprints/sprint-6/attestations/IFC-207/attestation.json,VALIDATE:pnpm test;GATE:coverage-gte-90,30/60/120,2026-02-14,2026-02-15,100,IFC-189:FS,
PG-154,Core CRM,Fix View Schedule 404 - Welcome Banner links to /calendar which does not exist,CRM FE (STOA-Foundation),PG-129,FILE:apps/web/src/components/home/AuthenticatedHomePage.tsx,View Schedule button navigates to a valid route; no 404; verified by: navigation test,Completed,Zero 404 errors from home page links,14,ARTIFACT:apps/web/src/app/calendar/(list)/__tests__/page.test.tsx;ARTIFACT:apps/web/src/__tests__/root-proxy.test.ts;EVIDENCE:.specify/sprints/sprint-14/attestations/PG-154/attestation.json,VALIDATE:pnpm --filter @intelliflow/web test --run,15/30/60,2026-02-22,2026-02-23,100,PG-129:FS,
PG-155,Core CRM,Fix 6 broken Quick Action hrefs - /calls/new /emails/compose /calendar/new /tasks/new /deals/new /documents/upload all return 404,CRM FE (STOA-Foundation),PG-129,FILE:apps/web/src/components/home/PinnedItemsSheet.tsx,All 8 Quick Actions navigate to valid routes or show coming-soon modal; route audit confirms zero 404s,Completed,"Zero 404 errors from Quick Actions, all 8 actions functional",14,ARTIFACT:apps/web/src/components/home/PinnedItemsSheet.tsx;ARTIFACT:apps/web/src/components/home/AuthenticatedHomePage.tsx,VALIDATE:pnpm --filter @intelliflow/web test --run,30/60/120,2026-02-19,2026-02-19,100,PG-129:FS,
PG-156,Core CRM,Customizable Daily Goals - settings UI + home.updateDailyGoal mutation + read from User.preferences instead of hardcoded targetValue=5000,CRM FE+BE (STOA-Foundation),PG-129,FILE:apps/api/src/modules/home/home.router.ts;FILE:apps/web/src/components/home/AuthenticatedHomePage.tsx,Users can set daily goal type (revenue/calls/meetings/tasks) and target; goal persists in User.preferences; getDailyGoal reads from preferences; tests cover CRUD,Completed,"Goal settings persist across sessions, 4 goal types configurable",15,ARTIFACT:apps/web/src/components/home/GoalSettingsModal.tsx;ARTIFACT:apps/api/src/modules/home/home.router.ts;EVIDENCE:.specify/sprints/sprint-15/attestations/PG-156/attestation.json;EVIDENCE:.specify/sprints/sprint-15/attestations/PG-156/attestation.json,VALIDATE:pnpm --filter @intelliflow/web typecheck;VALIDATE:pnpm --filter @intelliflow/web test --run,60/120/240,2026-02-28,2026-02-28,100,PG-129:FS,
PG-157,Core CRM,Visible Pin to Home buttons on entity list items and detail page headers - not just hidden in 3-dot MoreActionsButton sheet,CRM FE (STOA-Foundation),PG-129,FILE:apps/web/src/components/shared/entity-action-sheet.tsx;FILE:apps/web/src/hooks/use-entity-pin.ts,Pin/Unpin icon button visible on entity detail headers; uses useEntityPin hook; aria-label for a11y; tests cover pin toggle,Completed,"Pin button visible without opening 3-dot menu, WCAG AA compliant",15,ARTIFACT:apps/web/src/components/home/PinButton.tsx,VALIDATE:pnpm --filter @intelliflow/web typecheck;VALIDATE:pnpm --filter @intelliflow/web test --run,30/60/120,2026-02-28,2026-02-28,100,PG-129:FS,
PG-158,Core CRM,Drag and drop pinned items reorder - backend API exists (home.reorderPinnedItems) needs @dnd-kit frontend integration,CRM FE (STOA-Foundation),PG-129,FILE:apps/web/src/components/home/PinnedItemsSheet.tsx;FILE:apps/api/src/modules/home/home.router.ts,@dnd-kit installed; PinnedSection supports drag-and-drop reorder; calls home.reorderPinnedItems on drop; touch support; tests cover reorder,Completed,"Drag-drop reorder works on desktop and mobile, order persists via API",15,ARTIFACT:apps/web/src/components/home/PinnedItemsSheet.tsx;ARTIFACT:apps/web/src/components/home/DraggablePinnedItem.tsx,VALIDATE:pnpm --filter @intelliflow/web typecheck;VALIDATE:pnpm --filter @intelliflow/web test --run,60/120/180,2026-02-28,2026-02-28,100,PG-129:FS,
PG-159,Core CRM,Stale pin handling - deleted or inaccessible pinned entities should show Item unavailable with unpin option,CRM FE+BE (STOA-Foundation),PG-129,FILE:apps/api/src/modules/home/home.router.ts;FILE:apps/web/src/components/home/AuthenticatedHomePage.tsx,getPinnedItems checks entity existence; missing entities return stub with unavailable flag; UI shows badge with unpin button; ADR-027 requirement verified,Completed,"Stale pins show fallback within 200ms, unpin works on stale items",15,ARTIFACT:apps/api/src/modules/home/home.router.ts;ARTIFACT:apps/web/src/components/home/AuthenticatedHomePage.tsx,VALIDATE:pnpm --filter @intelliflow/web test --run;VALIDATE:pnpm --filter @intelliflow/api test --run,30/60/120,2026-02-28,2026-03-01,100,PG-129:FS,
PG-160,Core CRM,View All AI Insights page - /insights route with getAllInsights endpoint pagination and filtering by insight type,CRM FE+BE (STOA-Foundation),PG-129,FILE:apps/api/src/modules/home/home.router.ts,/insights page with paginated list; getAllInsights endpoint with type filter; View All link navigates correctly; loading/empty states,Completed,"Page loads <500ms, supports 4 insight type filters, cursor pagination",15,ARTIFACT:apps/web/src/app/insights/page.tsx;ARTIFACT:apps/web/src/components/insights/InsightsListPage.tsx,VALIDATE:pnpm --filter @intelliflow/web typecheck;VALIDATE:pnpm --filter @intelliflow/web test --run,60/120/180,2026-02-28,2026-03-01,100,PG-129:FS,
PG-161,Core CRM,Notifications integration on home page - bell icon header badge count IFC-183 Prisma model and notification router,CRM FE+BE (STOA-Foundation),"PG-129,IFC-183",FILE:apps/web/src/components/home/AuthenticatedHomePage.tsx,Bell icon in home header; unread count badge; dropdown with recent notifications; mark-as-read; Notification model + router; tests cover bell and badge,Completed,"Badge updates in real-time, mark-read latency <200ms",16,ARTIFACT:apps/web/src/components/notifications/NotificationBell.tsx;ARTIFACT:apps/api/src/modules/notifications/notifications.router.ts;ARTIFACT:apps/web/src/components/home/NotificationsSummaryWidget.tsx,VALIDATE:pnpm --filter @intelliflow/web typecheck;VALIDATE:pnpm --filter @intelliflow/web test --run,120/240/360,2026-03-10,2026-03-11,100,"PG-129:FS,IFC-183:FS",SPEC:.specify/sprints/sprint-16/specifications/PG-161-spec.md;PLAN:.specify/sprints/sprint-16/planning/PG-161-plan.md;EVIDENCE:.specify/sprints/sprint-16/attestations/PG-161/attestation.json
PG-162,Core CRM,AI Insights from ML model - LangChain chain for generating daily insights with caching confidence scores and action recommendations Cross-entity scope: null-state UX - when AI insight is null on entity detail pages show Run AI Analysis button. Lead detail already done (2026-03-04) apply same pattern to Contact detail. Ensure fallback values visually distinct from real AI data.,AI Specialist (STOA-Intelligence),"PG-129,IFC-095",FILE:apps/ai-worker/src/chains/insight-generation.chain.ts;FILE:apps/api/src/modules/home/home.router.ts,LangChain chain generates daily insights per user; cached 1h TTL; confidence scores; 4 insight types; home.getAIInsights reads from cache; tests with mocked LLM; Null-state indicator on Contact detail; fallback data visually distinguished from real AI output,Completed,"Insight generation <3s, cache hit rate >80%, 4 insight types",16,ARTIFACT:apps/api/src/modules/home/home.router.ts;ARTIFACT:apps/web/src/components/insights/InsightCard.tsx;ARTIFACT:apps/web/src/app/contacts/[id]/page.tsx;ARTIFACT:packages/validators/src/home.ts;ARTIFACT:apps/web/src/app/contacts/[id]/__tests__/page.test.tsx,VALIDATE:pnpm --filter @intelliflow/validators exec vitest run src/__tests__/home.test.ts;VALIDATE:pnpm --filter @intelliflow/api exec vitest run src/modules/home/__tests__/home.router.test.ts;VALIDATE:pnpm --filter @intelliflow/web exec vitest run src/components/home/__tests__/AuthenticatedHomePage.test.tsx src/app/insights/__tests__/page.test.tsx src/app/contacts/[id]/__tests__/page.test.tsx,120/240/480,2026-03-10,2026-03-10,100,"PG-129:FS,IFC-095:FS",
PG-163,Core CRM,Home page integration tests - test home.router endpoints against real database with seed data,QA (STOA-Quality),PG-129,FILE:apps/api/src/modules/home/home.router.ts;FILE:apps/api/src/modules/home/__tests__/home.router.coverage.test.ts,"Integration tests for all 9 home router endpoints; mock-based with full middleware chain; covers auth, pagination, error cases; >90% coverage on home.router.ts",Completed,"Coverage >90% on home router, all 9 endpoints tested, <30s suite",15,ARTIFACT:apps/api/src/modules/home/__tests__/home.router.coverage.test.ts;SPEC:.specify/sprints/sprint-15/specifications/PG-163-spec.md;PLAN:.specify/sprints/sprint-15/planning/PG-163-plan.md,VALIDATE:pnpm --filter @intelliflow/api test --run,60/120/240,2026-03-01,2026-03-01,100,PG-129:FS,
PG-164,Core CRM,Home page E2E tests - 5 Playwright scenarios: public page auth redirect insight click quick action pin/unpin flow,QA (STOA-Quality),"PG-129,PG-155",FILE:tests/e2e/home/home-page.spec.ts;FILE:apps/web/src/components/home/AuthenticatedHomePage.tsx,"5 Playwright E2E scenarios passing; covers auth, navigation, interactions; CI integrated; screenshots on failure; <60s total",Completed,"5 E2E scenarios passing, <60s runtime, CI integrated",15,ARTIFACT:tests/e2e/home/home-page.spec.ts;SPEC:.specify/sprints/sprint-15/specifications/PG-164-spec.md;PLAN:.specify/sprints/sprint-15/planning/PG-164-plan.md;ARTIFACT:tests/e2e/global-teardown.ts,VALIDATE:pnpm test:e2e -- --grep home,60/120/240,2026-03-07,2026-03-08,100,"PG-129:FS,PG-155:FS",
PG-165,Core CRM,Update PRD checkboxes for home page - mark completed acceptance criteria and annotate deferred items with task references,Tech Lead (STOA-Foundation),PG-129,FILE:docs/planning/prd-home-page.md,All 51 PRD checkboxes reviewed; 38 completed items marked [x]; 13 deferred items annotated with task references (PG-156 to PG-164); PRD reflects implementation state,Completed,All checkboxes accurately reflect implementation state,14,ARTIFACT:docs/planning/prd-home-page.md,VALIDATE:pnpm --filter @intelliflow/web typecheck;VALIDATE:pnpm --filter @intelliflow/web test --run,15/30/60,2026-02-22,2026-02-23,100,PG-129:FS,
PG-166,Core CRM,Lighthouse audit on authenticated home page - verify NFR targets TTI <1s Performance >=90 Accessibility >=90,QA (STOA-Quality),PG-129,FILE:apps/web/src/components/home/AuthenticatedHomePage.tsx,"Lighthouse CI audit on / route; Performance >=90, Accessibility >=90, TTI <1s; results saved to artifacts; ADR-027 verification confirmed",Completed,"Lighthouse Performance >=90, Accessibility >=90, TTI <1s",19,ARTIFACT:artifacts/benchmarks/home-page-lighthouse.json,VALIDATE:npx lighthouse http://localhost:3000 --output json,30/60/120,2026-09-06,2026-09-08,100,PG-129:FS,
PG-167,Core CRM,Analytics tracking plan for home page - define and implement business metrics events for section interactions,CRM FE (STOA-Foundation),PG-129,FILE:apps/web/src/components/home/AuthenticatedHomePage.tsx,"Analytics events for quick action clicks, insight interactions, feed scrolls, pin/unpin, goal views; tracking utility integrated; event schema documented",Completed,"All 6 home sections emit analytics events, schema documented",16,ARTIFACT:docs/analytics/home-page-tracking-plan.md;ARTIFACT:apps/web/src/lib/analytics.ts;SPEC:.specify/sprints/sprint-16/specifications/PG-167-spec.md;PLAN:.specify/sprints/sprint-16/planning/PG-167-plan.md;ATTESTATION:.specify/sprints/sprint-16/attestations/PG-167/attestation.json,VALIDATE:pnpm --filter @intelliflow/web typecheck,30/60/120,2026-03-10,2026-03-11,100,PG-129:FS,
PG-168,Core CRM,Monitoring and Sentry error tracking for home route - error boundaries breadcrumbs performance spans,CRM FE (STOA-Quality),PG-129,FILE:apps/web/src/components/home/AuthenticatedHomePage.tsx,Sentry error boundary wrapping home sections; breadcrumbs for section loads; performance spans for each tRPC query; error alerts configured,Backlog,"All 6 sections have error boundaries, performance spans for 8 queries",20,ARTIFACT:apps/web/src/components/home/HomeErrorBoundary.tsx,VALIDATE:pnpm --filter @intelliflow/web typecheck;VALIDATE:pnpm --filter @intelliflow/web test --run,30/60/120,,,0,PG-129:FS,
PG-169,Developer Pages,Developer Guides Page,DevRel (STOA-Foundation),PG-032,FILE:apps/web/src/app/(developer)/docs/page.tsx;FILE:docs/docusaurus.config.js;ENV:guides content available,"Response <200ms, Lighthouse >=90, guides listed and categorized; artifacts: page.tsx, guides-list.tsx",Completed,"Guides listed, categorized by topic, links to Docusaurus guides",15,ARTIFACT:apps/web/src/app/(developer)/docs/guides/page.tsx;ARTIFACT:apps/web/src/components/developer/guides-list.tsx;EVIDENCE:.specify/sprints/sprint-15/attestations/PG-169/attestation.json,GATE:lighthouse-gte-90;VALIDATE:pnpm --filter @intelliflow/web typecheck;VALIDATE:pnpm --filter @intelliflow/web test --run,50/120/240,2026-03-01,2026-03-01,100,PG-032:FS,
PG-170,Developer Pages,Architecture Docs Page,DevRel (STOA-Foundation),PG-032,FILE:apps/web/src/app/(developer)/docs/page.tsx;FILE:docs/architecture/adr/README.md;ENV:ADR content exists,"Response <200ms, Lighthouse >=90, ADRs listed and searchable; artifacts: page.tsx, adr-list.tsx",Completed,"Architecture docs indexed, 43 ADRs linked, DDD context map shown",15,ARTIFACT:apps/web/src/app/(developer)/docs/architecture/page.tsx;ARTIFACT:apps/web/src/components/developer/adr-list.tsx;EVIDENCE:.specify/sprints/sprint-15/attestations/PG-170/attestation.json;SPEC:.specify/sprints/sprint-15/specifications/PG-170-spec.md;PLAN:.specify/sprints/sprint-15/planning/PG-170-plan.md,GATE:lighthouse-gte-90;VALIDATE:pnpm --filter @intelliflow/web typecheck;VALIDATE:pnpm --filter @intelliflow/web test --run,50/120/240,2026-03-01,2026-03-01,100,PG-032:FS,
PG-171,Developer Pages,Integration Resources Page,DevRel (STOA-Foundation),"PG-032,PG-034",FILE:apps/web/src/app/(developer)/docs/page.tsx;ENV:webhook docs ready,"Response <200ms, Lighthouse >=90, integrations documented; artifacts: page.tsx, integration-list.tsx",Completed,"Integrations listed, webhook + SDK + auth links working",15,ARTIFACT:apps/web/src/app/(developer)/docs/integrations/page.tsx;ARTIFACT:apps/web/src/components/developer/integration-list.tsx;EVIDENCE:.specify/sprints/sprint-15/attestations/PG-171/attestation.json,GATE:lighthouse-gte-90;VALIDATE:pnpm --filter @intelliflow/web typecheck;VALIDATE:pnpm --filter @intelliflow/web test --run,50/120/240,2026-02-20,2026-02-20,100,"PG-032:FS,PG-034:FS",
PG-172,Billing Pages,Billing Ghost Pages - Usage Plans Upgrade Cancel and Settings,Platform BE (STOA-Foundation),"PG-025,PG-030",IMPLEMENTS:FLOW-048;FILE:docs/planning/prd-billing-portal.md;FILE:docs/architecture/adr/ADR-029-billing-architecture.md;FILE:.specify/memory/Framework.md;FILE:audit-matrix.yml;FILE:apps/web/src/components/sidebar/configs/billing.ts;FILE:apps/web/src/components/billing/billing-portal.tsx;FILE:docs/design/navigation-reachability-audit.md;DESIGN:docs/design/mockups/billing-portal.png,Pages at /billing/usage (usage metrics vs plan limits with progress bars) /billing/plans (3-tier comparison grid Starter/Professional/Enterprise) /billing/upgrade (proration preview and confirmation) /billing/cancel (retention offer reason selection period-end behaviour) /billing/settings (billing address contact tax fields); all sidebar and billing-portal.tsx in-page links resolve; Lighthouse >=90; tests passing; verified by: pnpm test,Completed,All 5 billing ghost routes resolve; usage bars accurate; upgrade shows proration; cancel period-end confirmed; Lighthouse >=90,16,ARTIFACT:apps/web/src/app/billing/usage/page.tsx;ARTIFACT:apps/web/src/app/billing/plans/page.tsx;ARTIFACT:apps/web/src/app/billing/upgrade/page.tsx;ARTIFACT:apps/web/src/app/billing/cancel/page.tsx;ARTIFACT:apps/web/src/app/billing/settings/page.tsx;ARTIFACT:apps/web/src/components/billing/usage-dashboard.tsx;ARTIFACT:apps/web/src/components/billing/plan-comparison.tsx;ARTIFACT:apps/web/src/components/billing/upgrade-flow.tsx;ARTIFACT:apps/web/src/components/billing/cancel-flow.tsx;ARTIFACT:apps/web/src/components/billing/__tests__/usage-dashboard.test.tsx;ARTIFACT:apps/web/src/components/billing/__tests__/plan-comparison.test.tsx;ARTIFACT:apps/web/src/components/billing/__tests__/upgrade-flow.test.tsx;ARTIFACT:apps/web/src/components/billing/__tests__/cancel-flow.test.tsx;ARTIFACT:apps/web/src/components/billing/__tests__/billing-settings.test.tsx;ARTIFACT:apps/web/src/components/billing/billing-shared.tsx;ARTIFACT:apps/web/src/components/billing/billing-settings.tsx;EVIDENCE:.specify/sprints/sprint-16/attestations/PG-172/attestation.json;EVIDENCE:.specify/sprints/sprint-16/attestations/PG-172/attestation.json;SPEC:.specify/sprints/sprint-16/specifications/PG-172-spec.md;PLAN:.specify/sprints/sprint-16/planning/PG-172-plan.md,GATE:lighthouse-gte-90;VALIDATE:pnpm test,180/360/720,2026-03-10,2026-03-10,100,"PG-025:FS,PG-030:FS",
PG-173,Support,Ticket Configuration Pages - SLA Policies Types and Automations,Frontend Dev (STOA-Domain),"PG-137,IFC-189,IFC-093",FILE:apps/web/src/components/sidebar/configs/tickets.ts;FILE:apps/api/src/modules/ticket/ticket.router.ts;FILE:packages/domain/src/crm/ticket/Ticket.ts;FILE:packages/domain/src/support/TicketConstants.ts;FILE:.specify/memory/Framework.md;FILE:audit-matrix.yml;FILE:docs/design/navigation-reachability-audit.md;DESIGN:docs/design/mockups/tickets-config.png,Pages at /tickets/sla-policies (SLA rule list with priority and time targets CRUD) /tickets/types (ticket category list with custom field definitions) /tickets/automations (trigger-condition-action rule builder for auto-assignment and status transitions); sidebar Configuration section links resolve; Lighthouse >=90; verified by: pnpm test,Completed,All 3 ticket config routes resolve; SLA rules CRUD working; types editable; automations rule engine renders; 96 total tests pass (57 frontend + 16 backend + 23 validators),16,ARTIFACT:apps/web/src/app/tickets/(list)/sla-policies/page.tsx;ARTIFACT:apps/web/src/app/tickets/types/page.tsx;ARTIFACT:apps/web/src/app/tickets/automations/page.tsx;ARTIFACT:apps/web/src/components/tickets/SLAPolicyManager.tsx;ARTIFACT:apps/web/src/components/tickets/TicketTypeManager.tsx;ARTIFACT:apps/web/src/components/tickets/AutomationRuleBuilder.tsx;ARTIFACT:apps/web/src/components/tickets/ticket-config-shared.tsx;ARTIFACT:apps/web/src/components/tickets/__tests__/SLAPolicyManager.test.tsx;ARTIFACT:apps/web/src/components/tickets/__tests__/TicketTypeManager.test.tsx;ARTIFACT:apps/web/src/components/tickets/__tests__/AutomationRuleBuilder.test.tsx;ARTIFACT:packages/validators/src/sla-policy.ts;ARTIFACT:packages/validators/src/ticket-category.ts;ARTIFACT:packages/validators/src/__tests__/ticket-config-validators.test.ts;ARTIFACT:apps/api/src/modules/ticket/ticket-config.router.ts;ARTIFACT:apps/api/src/modules/ticket/__tests__/ticket-config.router.test.ts;EVIDENCE:.specify/sprints/sprint-16/attestations/PG-173/attestation.json;SPEC:.specify/sprints/sprint-16/specifications/PG-173-spec.md;PLAN:.specify/sprints/sprint-16/planning/PG-173-plan.md,GATE:lighthouse-gte-90;VALIDATE:pnpm test,120/240/480,2026-03-10,2026-03-10,100,"PG-137:FS,IFC-189:FS,IFC-093:FS",
PG-174,Notifications,Notification Configuration Pages - Channels and Quiet Hours,Frontend Dev (STOA-Domain),IFC-157,FILE:apps/web/src/components/sidebar/configs/notifications.ts;FILE:apps/web/src/app/notifications/settings/page.tsx;FILE:.specify/memory/Framework.md;FILE:audit-matrix.yml;FILE:docs/design/navigation-reachability-audit.md;DESIGN:docs/design/mockups/notifications-config.png,Pages at /notifications/channels (delivery channel list with enable/disable toggles and per-channel config for email SMS push webhook) and /notifications/quiet-hours (weekly schedule grid with time-range pickers and day selectors for suppression windows); sidebar Configuration links resolve; Lighthouse >=90; verified by: pnpm test,Completed,Both notification config routes resolve; channels enable/disable toggles; quiet-hours schedule saves; Lighthouse >=90,16,ARTIFACT:apps/web/src/app/notifications/channels/page.tsx;ARTIFACT:apps/web/src/app/notifications/quiet-hours/page.tsx;ARTIFACT:apps/web/src/components/notifications/ChannelManager.tsx;ARTIFACT:apps/web/src/components/notifications/QuietHoursScheduler.tsx;ARTIFACT:apps/web/src/components/notifications/__tests__/ChannelManager.test.tsx;ARTIFACT:apps/web/src/components/notifications/__tests__/QuietHoursScheduler.test.tsx;SPEC:.specify/sprints/sprint-16/specifications/PG-174-spec.md;EVIDENCE:.specify/sprints/sprint-16/attestations/PG-174/attestation.json,GATE:lighthouse-gte-90;VALIDATE:pnpm test,90/180/360,2026-03-10,2026-03-12,100,IFC-157:FS,
PG-175,Core CRM,Deals Trash Page - Soft-deleted deals list with restore and permanent delete,Frontend Dev (STOA-Domain),PG-135,FILE:apps/web/src/components/sidebar/configs/deals.ts;FILE:apps/api/src/modules/opportunity/opportunity.router.ts;FILE:packages/adapters/src/repositories/PrismaOpportunityRepository.ts;FILE:.specify/memory/Framework.md;FILE:audit-matrix.yml;FILE:docs/design/navigation-reachability-audit.md,Page at /deals/trash showing soft-deleted deals list with deal name value stage-at-deletion date; restore action (reverts deletedAt) and permanent delete with confirmation dialog; follows /deals data-table pattern; sidebar trash link resolves; Lighthouse >=90; verified by: pnpm test,Completed,Deals trash page resolves; restore working; permanent delete with confirm dialog; data-table pattern; Lighthouse >=90,16,ARTIFACT:apps/web/src/app/deals/(list)/trash/page.tsx;ARTIFACT:apps/web/src/components/deals/TrashList.tsx;ARTIFACT:apps/web/src/components/deals/__tests__/TrashList.test.tsx;EVIDENCE:.specify/sprints/sprint-16/attestations/PG-175/attestation.json;SPEC:.specify/sprints/sprint-16/specifications/PG-175-spec.md;PLAN:.specify/sprints/sprint-16/planning/PG-175-plan.md,GATE:lighthouse-gte-90;VALIDATE:pnpm test,60/120/240,2026-03-18,,100,PG-135:FS,
PG-176,Governance,Governance Quality Report Sub-Pages - Lighthouse Coverage and Performance views,Frontend Dev (STOA-Quality),PG-015,FILE:apps/web/src/components/sidebar/configs/governance.ts;FILE:apps/web/src/app/governance/quality-reports/page.tsx;FILE:.specify/memory/Framework.md;FILE:audit-matrix.yml;FILE:docs/design/navigation-reachability-audit.md;DESIGN:docs/design/mockups/quality-reports-detail.png,Pages at /governance/quality-reports/lighthouse (Lighthouse scores by URL with category breakdown and historical trend) /governance/quality-reports/coverage (test coverage by package with statements branches functions lines) /governance/quality-reports/performance (API response time and load test results); each renders focused report type with back-link to quality-reports list; sidebar Quality links resolve; Lighthouse >=90; verified by: pnpm test,Completed,All 3 quality report sub-routes resolve; each shows focused report data; back-navigation works; Lighthouse >=90,16,ARTIFACT:apps/web/src/app/governance/quality-reports/lighthouse/page.tsx;ARTIFACT:apps/web/src/app/governance/quality-reports/coverage/page.tsx;ARTIFACT:apps/web/src/app/governance/quality-reports/performance/page.tsx;ARTIFACT:apps/web/src/components/governance/LighthouseReportView.tsx;ARTIFACT:apps/web/src/components/governance/CoverageReportView.tsx;ARTIFACT:apps/web/src/components/governance/PerformanceReportView.tsx;ARTIFACT:apps/web/src/components/governance/__tests__/LighthouseReportView.test.tsx;ARTIFACT:apps/web/src/components/governance/__tests__/CoverageReportView.test.tsx;ARTIFACT:apps/web/src/components/governance/__tests__/PerformanceReportView.test.tsx;EVIDENCE:.specify/sprints/sprint-16/attestations/PG-176/attestation.json;SPEC:.specify/sprints/sprint-16/specifications/PG-176-spec.md;PLAN:.specify/sprints/sprint-16/planning/PG-176-plan.md,GATE:lighthouse-gte-90;VALIDATE:pnpm test,90/180/360,2026-03-15,,100,PG-015:FS,
PG-177,Analytics,Analytics Saved Report Pages - Weekly Monthly and Quarterly views,Frontend Dev (STOA-Foundation),IFC-068,FILE:apps/web/src/components/sidebar/configs/analytics.ts;FILE:apps/web/src/app/analytics/(list)/page.tsx;FILE:.specify/memory/Framework.md;FILE:audit-matrix.yml;FILE:docs/design/navigation-reachability-audit.md;DESIGN:docs/design/mockups/analytics-saved-reports.png,Pages at /analytics/saved/weekly (last 7 days metrics: revenue leads tickets closed with trend indicators) /analytics/saved/monthly (last 30 days revenue breakdown by product and region) /analytics/saved/quarterly (Q4 performance summary with YoY comparison); sidebar Saved Reports links resolve; Lighthouse >=90; verified by: pnpm test,Completed,All 3 saved report routes resolve; weekly/monthly/quarterly data renders; period selector works; Lighthouse >=90,16,ARTIFACT:apps/web/src/app/analytics/(list)/saved/weekly/page.tsx;ARTIFACT:apps/web/src/app/analytics/(list)/saved/monthly/page.tsx;ARTIFACT:apps/web/src/app/analytics/(list)/saved/quarterly/page.tsx;ARTIFACT:apps/web/src/components/analytics/SavedReportView.tsx;ARTIFACT:apps/web/src/components/analytics/__tests__/SavedReportView.test.tsx;EVIDENCE:.specify/sprints/sprint-16/attestations/PG-177/attestation.json,GATE:lighthouse-gte-90;VALIDATE:pnpm test,90/180/360,2026-03-16,2026-03-16,100,IFC-068:FS,
PG-178,Settings,Module Settings Pages - 11 per-module configuration pages at /settings/[module],Frontend Dev (STOA-Foundation),"PG-104,IFC-076",FILE:apps/web/src/components/sidebar/configs/leads.ts;FILE:apps/web/src/components/sidebar/configs/contacts.ts;FILE:apps/web/src/components/sidebar/configs/accounts.ts;FILE:apps/web/src/components/sidebar/configs/deals.ts;FILE:apps/web/src/components/sidebar/configs/tickets.ts;FILE:apps/web/src/components/sidebar/configs/documents.ts;FILE:apps/web/src/components/sidebar/configs/analytics.ts;FILE:apps/web/src/components/sidebar/configs/appointments.ts;FILE:apps/web/src/components/sidebar/configs/cases.ts;FILE:apps/web/src/components/sidebar/configs/tasks.ts;FILE:apps/web/src/components/ModulePaywall.tsx;FILE:apps/web/src/app/settings/account/page.tsx;FILE:.specify/memory/Framework.md;FILE:audit-matrix.yml;FILE:docs/design/navigation-reachability-audit.md;DESIGN:docs/design/mockups/module-settings.png;DESIGN:docs/design/mockups/lead-settings.html;DESIGN:docs/design/mockups/lead-settings.png,Pages at /settings/leads (scoring thresholds assignment auto-qual) /settings/contacts (duplicate detection required fields tags) /settings/accounts (hierarchy industry custom fields) /settings/deals (pipeline stages win-loss reasons scoring) /settings/tickets (default SLA auto-close notification triggers) /settings/documents (file types size limits antivirus retention) /settings/reports (default range currency scheduled delivery) /settings/billing (billing address tax ID invoice contact) /settings/appointments (duration buffer calendar integration) /settings/cases (case prefix default priority auto-assign) /settings/tasks (due-date offset reminder templates); all settingsHref and ModulePaywall links resolve; follows settings/account pattern; Lighthouse >=90; verified by: pnpm test,Completed,All 11 module settings routes resolve; form fields render and save; breadcrumb navigation works; Lighthouse >=90,16,ARTIFACT:apps/web/src/app/settings/leads/page.tsx;ARTIFACT:apps/web/src/app/settings/leads/LeadSettingsContent.tsx;ARTIFACT:apps/web/src/app/settings/leads/components/LeadStagesTab.tsx;ARTIFACT:apps/web/src/app/settings/leads/components/ScoringRulesTab.tsx;ARTIFACT:apps/web/src/app/settings/leads/components/CustomFieldsTab.tsx;ARTIFACT:apps/web/src/app/settings/leads/components/AutomationTab.tsx;ARTIFACT:apps/web/src/components/settings/ModuleSettingsLayout.tsx;ARTIFACT:apps/web/src/components/settings/__tests__/ModuleSettingsLayout.test.tsx;ARTIFACT:apps/api/src/modules/lead/lead-settings.router.ts;ARTIFACT:packages/validators/src/lead-settings.ts;EVIDENCE:.specify/sprints/sprint-16/attestations/PG-178/attestation.json,GATE:lighthouse-gte-90;VALIDATE:pnpm test,240/480/960,2026-03-11,2026-03-11,100,"PG-104:FS,IFC-076:FS",SPEC:.specify/sprints/sprint-16/specifications/PG-178-spec.md;PLAN:.specify/sprints/sprint-16/planning/PG-178-plan.md
DOC-002,Documentation,"Update sitemap.md to reflect actual 101 page.tsx files, add app/sitemap.ts XML generator, app/robots.ts, reconcile against navigation-reachability-audit.md",DevRel (STOA-Foundation),,FILE:docs/design/sitemap.md;FILE:docs/design/navigation-reachability-audit.md;FILE:.specify/memory/Framework.md;FILE:audit-matrix.yml,sitemap.md updated to 101+ pages; app/sitemap.ts generates XML sitemap; app/robots.ts exists; route count matches navigation-reachability-audit.md; verified by: pnpm test,Completed,Sitemap reflects 101+ actual routes; XML sitemap accessible at /sitemap.xml; robots.txt accessible at /robots.txt,14,ARTIFACT:docs/design/sitemap.md;ARTIFACT:apps/web/src/app/sitemap.ts;ARTIFACT:apps/web/src/app/robots.ts,VALIDATE:pnpm test,60/120/240,2026-02-23,2026-02-23,100,,
DOC-003,Documentation,"Update PAGE_MAP_AND_FLOWS.md to reflect 103 pages and current flows, verify auth diagrams, update API integration checklist, reconcile with audit",DevRel (STOA-Foundation),DOC-002,FILE:docs/design/PAGE_MAP_AND_FLOWS.md;FILE:docs/design/navigation-reachability-audit.md;FILE:.specify/memory/Framework.md;FILE:audit-matrix.yml,PAGE_MAP_AND_FLOWS.md updated to 103 pages; flow table current; auth diagrams verified; integration checklist reflects actual state; verified by: manual review + TC-31 automated parity test,Completed,Page count matches actual routes (103); all flows documented; integration status accurate; cross-doc consistency verified,14,ARTIFACT:docs/design/PAGE_MAP_AND_FLOWS.md,VALIDATE:pnpm lint,60/120/240,2026-02-23,2026-02-24,100,DOC-002:FS,
DOC-004,Documentation,"Update ui-flow-mapping.md cross-reference matrix to 103 routes, verify API router procedure counts (39 routers, 366 procedures), update implementation and backend integration status",DevRel (STOA-Foundation),DOC-002,FILE:docs/design/ui-flow-mapping.md;FILE:docs/design/navigation-reachability-audit.md;FILE:.specify/memory/Framework.md;FILE:audit-matrix.yml,ui-flow-mapping.md reflects 103 routes; 39 API routers with 366 procedures verified; implementation status accurate; backend integration status current; verified by: manual review + spot-checks,Completed,Route count matches actual (103); procedure counts verified (366); no stale status entries; 12/12 AC passed,14,ARTIFACT:docs/design/ui-flow-mapping.md,VALIDATE:pnpm lint,90/180/360,2026-02-23,2026-02-24,100,DOC-002:FS,
DOC-005,Documentation,"Complete overhaul of page-registry.md from 8 routes to all 101 routes with task ID, KPI targets, code file path, component breakdown, API router, E2E test path, RACI assignments",DevRel (STOA-Foundation),DOC-002,FILE:docs/design/page-registry.md;FILE:docs/design/navigation-reachability-audit.md;FILE:docs/design/ui-flow-mapping.md;FILE:.specify/memory/Framework.md;FILE:audit-matrix.yml,page-registry.md covers all 101 routes; status reflects verified state; KPI targets for each page; RACI assignments updated; component breakdowns current; verified by: manual review,Completed,All 103 routes registered; 0 stale status entries; KPI targets defined for all pages,14,ARTIFACT:docs/design/page-registry.md,VALIDATE:pnpm lint,120/240/480,2026-02-23,2026-02-24,100,DOC-002:FS,
DOC-006,Documentation,"Create unified IA reference combining reachability audit route inventory with flow mapping user journey context, linking routes to flows to components to APIs to nav layers",DevRel (STOA-Foundation),"DOC-002,DOC-003,DOC-004,DOC-005",FILE:docs/design/navigation-reachability-audit.md;FILE:docs/design/ui-flow-mapping.md;FILE:docs/design/PAGE_MAP_AND_FLOWS.md;FILE:docs/design/page-registry.md;FILE:.specify/memory/Framework.md;FILE:audit-matrix.yml,Unified IA reference doc created combining route inventory with user journey context; links routes to flows to components to APIs to nav layers; cross-references all 4 source documents; verified by: manual review,Completed,Single reference covering 103 routes with journey context; no conflicting data across source docs,14,ARTIFACT:docs/design/information-architecture.md,VALIDATE:pnpm lint,120/240/480,2026-02-24,2026-02-24,100,"DOC-002:FS,DOC-003:FS,DOC-004:FS,DOC-005:FS",
DOC-007,Documentation,"Conduct full accessibility compliance gap assessment: Lighthouse a11y audit on all 27 URLs, document WCAG 2.1 AA conformance level per route, identify all Level A and AA failures, produce gap report with remediation priorities",QA (STOA-Quality),,FILE:docs/company/brand/accessibility-patterns.md;FILE:lighthouserc.js;FILE:.specify/memory/Framework.md;FILE:audit-matrix.yml,Accessibility gap report produced; Lighthouse audit run on all 27 URLs; WCAG failures categorized by level (A/AA) and severity; remediation priority list created; verified by: pnpm run lighthouse,Completed,All 26 URLs audited; all WCAG 2.1 AA failures documented; remediation plan with priorities,14,ARTIFACT:docs/compliance-and-governance/compliance/accessibility-gap-assessment.md,VALIDATE:pnpm lint,210/240/360,2026-02-23,2026-02-23,100,,
DOC-008,Documentation,"Create VPAT 2.5 document, WCAG 2.1 AA conformance statement, axe-core/pa11y test suite, enforce accessibility in CI (error not warn), accessibility ADR, screen reader testing plan",QA (STOA-Security),DOC-007,FILE:docs/compliance-and-governance/compliance/accessibility-gap-assessment.md;FILE:docs/company/brand/accessibility-patterns.md;FILE:lighthouserc.js;FILE:docs/architecture/adr/template.md;FILE:.specify/memory/Framework.md;FILE:audit-matrix.yml,VPAT document created following ITI VPAT 2.5 template; WCAG conformance statement published; axe-core test suite added; lighthouserc.js accessibility as error; ADR for accessibility architecture created; screen reader testing plan documented; verified by: pnpm test,Completed,VPAT covers 50 WCAG 2.1 A+AA criteria; conformance statement internal Sprint 14 (public deferred Sprint 17); axe-core 8 tests in CI; lighthouse accessibility ≥0.9,14,ARTIFACT:docs/compliance-and-governance/compliance/vpat-2.5.md;ARTIFACT:docs/compliance-and-governance/compliance/wcag-conformance-statement.md;ARTIFACT:tests/a11y/axe-core.spec.ts;ARTIFACT:tests/a11y/vitest.config.ts;ARTIFACT:tests/a11y/setup.ts;ARTIFACT:docs/architecture/adr/ADR-038-accessibility-architecture.md,VALIDATE:pnpm test;GATE:lighthouse-accessibility-gte-90,180/360/720,2026-02-23,2026-02-24,100,DOC-007:FS,
DOC-009,Documentation,"Create content audit framework and perform initial audit: quantitative URL inventory (103 routes with HTTP status, response time, title, meta), qualitative content review, SEO audit for public pages, stale content detection",DevRel (STOA-Foundation),"DOC-002,DOC-005",FILE:docs/design/navigation-reachability-audit.md;FILE:docs/design/page-registry.md;FILE:.specify/memory/Framework.md;FILE:audit-matrix.yml,Content audit framework created; initial audit covering all 103 routes; quantitative metrics captured; qualitative review for each page; SEO audit for public pages; stale content identified; verified by: manual review,Completed,All 104 routes audited; 25 public pages scored for SEO (avg 56/100); 28 ghost links classified; 3 critical legal page gaps; stale content identified; 14 test cases pass,14,ARTIFACT:docs/design/content-audit.md;ARTIFACT:artifacts/reports/content-audit-results.json,VALIDATE:pnpm lint,120/240/480,2026-02-24,2026-02-24,100,"DOC-002:FS,DOC-005:FS",
DOC-010,Documentation,Create route reconciliation script comparing conformance-statement.md routes against apps/web/src/app/ directory tree,PM (STOA-Automation),DOC-008,FILE:docs/compliance-and-governance/compliance/wcag-conformance-statement.md;FILE:apps/web/src/app/layout.tsx,Route reconciliation TypeScript script created; scans conformance-statement.md route list vs actual app router directories; reports added/removed/missing routes; exits non-zero on drift; integrated as CI check; verified by: script execution with intentional drift,Completed,Detects route drift within 1 CI run; zero false positives on current routes; 41 tests; 93%+ coverage; CI wired in pr-checks.yml,15,ARTIFACT:tools/scripts/a11y-route-reconcile.ts;ARTIFACT:tools/scripts/a11y-route-reconcile.test.ts,VALIDATE:npx tsx tools/scripts/a11y-route-reconcile.ts,30/60/120,2026-02-27,2026-02-28,100,DOC-008:FS,
DOC-011,Documentation,Add compliance-check Section 11 requiring VPAT/conformance review when PG-*/IFC-* UI tasks add or modify routes,PM (STOA-Automation),DOC-008,FILE:.claude/skills/compliance-check/SKILL.md;FILE:docs/compliance-and-governance/compliance/vpat-2.5.md;FILE:docs/compliance-and-governance/compliance/wcag-conformance-statement.md,compliance-check skill updated with Section 11 (Accessibility Doc Gate); detects new/modified routes in task artifacts; blocks completion if VPAT/conformance docs not updated; verified by: dry-run on a PG-* task with new route,Completed,Gate triggers on 100% of route-adding UI tasks; zero false negatives; DR-001 PG-032→SKIP; DR-002 /insights→FAIL; 41 regression tests pass,15,ARTIFACT:.claude/skills/compliance-check/references/accessibility-doc-gate.md;ARTIFACT:.claude/skills/compliance-check/SKILL.md,AUDIT:code-review,30/60/120,2026-03-01,2026-03-01,100,DOC-008:FS,
DOC-012,Documentation,Establish quarterly accessibility documentation review cadence with recurring sprint task template,PM (STOA-Automation),DOC-008,FILE:docs/compliance-and-governance/compliance/vpat-2.5.md;FILE:docs/compliance-and-governance/compliance/wcag-conformance-statement.md;FILE:docs/compliance-and-governance/compliance/accessibility-gap-assessment.md,"Review template created with checklist (VPAT accuracy, conformance scope, route coverage, known limitations, AT testing schedule); first quarterly review scheduled in Sprint_plan.csv; cadence documented in project governance; verified by: template completeness review",Completed,Review template covers all 5 accessibility doc areas; cadence is every 4 sprints,15,ARTIFACT:docs/compliance-and-governance/compliance/quarterly-a11y-review-template.md,VALIDATE:pnpm lint,20/40/80,2026-03-01,2026-03-01,100,DOC-008:FS,
DOC-013,Documentation,Amend ADR-038 with Documentation Maintenance section mandating accessibility doc updates when scope changes,PM (STOA-Automation),DOC-008,FILE:docs/architecture/adr/ADR-038-accessibility-architecture.md,"ADR-038 amended with Documentation Maintenance section defining: triggers for updates (new routes, component changes, WCAG scope changes), responsible party, review frequency, update verification process; linked to DOC-010/011/012 as enforcement mechanisms; verified by: ADR review",Completed,ADR covers all 4 update trigger categories; links to enforcement tasks,15,ARTIFACT:docs/architecture/adr/ADR-038-accessibility-architecture.md;EVIDENCE:.specify/sprints/sprint-15/specifications/DOC-013-spec.md;EVIDENCE:.specify/sprints/sprint-15/planning/DOC-013-plan.md,VALIDATE:pnpm lint,15/30/60,2026-03-02,2026-03-02,100,DOC-008:FS,
PG-179,Public Pages,Press Release Detail Page - dynamic /press/[id] route for individual press releases linked from /press index page (content audit finding F-004),CRM FE (STOA-Foundation),PG-007,FILE:apps/web/src/app/(public)/press/page.tsx;FILE:artifacts/reports/content-audit-results.json,Page at /press/[id] renders individual press release with title date body and back-link to /press index; generateMetadata for SEO; OG tags for social sharing; Lighthouse >=90; /press index links resolve without 404; verified by: pnpm test,Completed,Response <200ms; Lighthouse >=90; SEO score >=80; zero 404 from /press links,15,ARTIFACT:apps/web/src/app/(public)/press/[id]/page.tsx;ARTIFACT:apps/web/src/components/press/PressReleaseDetail.tsx;ARTIFACT:apps/web/src/components/press/__tests__/PressReleaseDetail.test.tsx;EVIDENCE:.specify/sprints/sprint-15/specifications/PG-179-spec.md;EVIDENCE:.specify/sprints/sprint-15/planning/PG-179-plan.md,VALIDATE:pnpm test;GATE:lighthouse-gte-90,60/120/240,2026-03-01,2026-03-01,100,PG-007:FS,
IFC-208,SEO,Lighthouse SEO CI enforcement and og:image - change lighthouserc.js SEO assertion from warn to error and add og:image meta tag to root layout (content audit findings F-005 F-006),DevOps (STOA-Foundation),DOC-009,FILE:lighthouserc.js;FILE:apps/web/src/app/layout.tsx;FILE:artifacts/reports/content-audit-results.json,lighthouserc.js SEO assertions use level error not warn; og:image meta tag defined in root layout metadata; all 25 public pages inherit og:image for social sharing previews; Lighthouse CI blocks on SEO regression; verified by: pnpm test && pnpm run lighthouse,Backlog,SEO assertion level = error; og:image present on all 25 public routes; Lighthouse SEO >=0.9,21,ARTIFACT:lighthouserc.js;ARTIFACT:apps/web/src/app/layout.tsx;ARTIFACT:public/og-image.png,VALIDATE:pnpm test;VALIDATE:pnpm run lighthouse;GATE:lighthouse-gte-90,30/60/120,,,0,DOC-009:FS,
IFC-209,SEO,"Fix sitemap.ts defects - replace new Date() lastModified with actual file modification timestamps, add all 6 blog post slugs, add dynamic route entries for /careers/[id] and /lp/[slug] (content audit findings F-007 F-008 F-009)",CRM FE (STOA-Foundation),"DOC-002,DOC-009",FILE:apps/web/src/app/sitemap.ts;FILE:artifacts/reports/content-audit-results.json,sitemap.ts uses statSync or build-time timestamps for lastModified instead of new Date(); all 6 blog post slugs included in sitemap; dynamic routes /careers/[id] and /lp/[slug] generate sitemap entries from data source; verified by: pnpm test,Completed,All routes have accurate lastModified; blog coverage 2/2 slugs (detail pages); dynamic routes included; zero crawl-budget waste; 100% coverage on sitemap.ts,15,ARTIFACT:apps/web/src/app/sitemap.ts;ARTIFACT:apps/web/src/app/__tests__/sitemap-fixes.test.ts,VALIDATE:pnpm test;GATE:coverage-gte-90,60/120/240,2026-03-02,2026-03-03,100,"DOC-002:FS,DOC-009:FS",SPEC:.specify/sprints/sprint-15/specifications/IFC-209-spec.md;PLAN:.specify/sprints/sprint-15/planning/IFC-209-plan.md
IFC-210,SEO,"Fill SEO metadata gaps on public pages - add description OG and Twitter tags to /pricing, complete OG tags on /about and /features, add layout-level metadata for auth-flow pages (content audit findings F-010 F-011 F-012)",CRM FE (STOA-Foundation),DOC-009,FILE:apps/web/src/app/(public)/pricing/page.tsx;FILE:apps/web/src/app/(public)/about/page.tsx;FILE:apps/web/src/app/(public)/features/page.tsx;FILE:apps/web/src/app/(public)/login/layout.tsx;FILE:artifacts/reports/content-audit-results.json,/pricing has description OG and Twitter card metadata; /about and /features have complete og:description og:url and twitter:title twitter:description; auth-flow layout provides base metadata for login signup and reset pages; all public page SEO scores >=75; verified by: pnpm test,Completed,Public pages avg SEO score >=75 (up from 56); all public pages have description + OG + Twitter tags,15,ARTIFACT:apps/web/src/app/(public)/pricing/layout.tsx;ARTIFACT:apps/web/src/app/(public)/about/page.tsx;ARTIFACT:apps/web/src/app/(public)/features/page.tsx;ARTIFACT:apps/web/src/app/(public)/login/layout.tsx,VALIDATE:pnpm test;GATE:lighthouse-gte-90,60/120/240,2026-03-02,2026-03-03,100,DOC-009:FS,SPEC:.specify/sprints/sprint-15/specifications/IFC-210-spec.md;PLAN:.specify/sprints/sprint-15/planning/IFC-210-plan.md;EVIDENCE:.specify/sprints/sprint-15/attestations/IFC-210/attestation.json
DOC-014,Documentation,"Automated content audit script - TypeScript CLI that scans page.tsx files, resolves metadata chains, calculates SEO scores, detects ghost links, and regenerates content-audit-results.json; integrates as CI check on PR modifying app routes",PM (STOA-Automation),DOC-009,FILE:artifacts/reports/content-audit-results.json;FILE:docs/design/content-audit.md;FILE:apps/web/src/app/sitemap.ts;FILE:apps/web/src/__tests__/content-audit-schema.test.ts,Script at tools/scripts/content-audit.ts scans all page.tsx files enumerates routes resolves metadata chain calculates SEO scores per rubric in content-audit.md detects ghost links against navigation-reachability-audit.md and regenerates content-audit-results.json; output passes all 14 existing test cases; exits non-zero if route count drifts or new findings detected; CI workflow triggers on PR modifying apps/web/src/app/**/page.tsx or layout.tsx; verified by: npx tsx tools/scripts/content-audit.ts && pnpm test,Completed,Script regenerates JSON matching schema; 14 existing tests pass on output; CI runs on route-modifying PRs; <30s execution time,15,ARTIFACT:tools/scripts/content-audit.ts;ARTIFACT:.github/workflows/content-audit.yml;ARTIFACT:tools/scripts/__tests__/content-audit.test.ts,VALIDATE:npx tsx tools/scripts/content-audit.ts;VALIDATE:pnpm test;GATE:coverage-gte-90,120/240/480,2026-03-07,2026-03-07,100,DOC-009:FS,
DOC-015,Documentation,Docs Integrity Reconciliation - Regenerate and sync conflicting design-document route totals from filesystem source of truth,PM + DevRel (STOA-Automation),"DOC-014,IFC-209,IFC-210",FILE:apps/project-tracker/docs/metrics/_global/Tabela .txt;FILE:apps/web/src/app;FILE:docs/design/sitemap.md;FILE:docs/design/page-registry.md;FILE:docs/design/PAGE_MAP_AND_FLOWS.md;FILE:docs/design/ui-flow-mapping.md;FILE:docs/design/navigation-reachability-audit.md;FILE:docs/design/information-architecture.md;FILE:docs/design/content-audit.md,"All conflicting route and summary totals are regenerated from apps/web/src/app/**/page.tsx and synchronized across sitemap.md, page-registry.md, PAGE_MAP_AND_FLOWS.md, ui-flow-mapping.md, navigation-reachability-audit.md, information-architecture.md, and content-audit.md; stale references (68/101/103/118 mismatches) are removed or explicitly reconciled; each updated doc includes canonical counting rule and verification timestamp; verified by: npx tsx tools/scripts/content-audit.ts && pnpm lint",Backlog,Cross-doc total mismatch count = 0; canonical route count matches filesystem (currently 119); stale total references removed from target docs; doc lint passes,18,ARTIFACT:docs/design/sitemap.md;ARTIFACT:docs/design/page-registry.md;ARTIFACT:docs/design/PAGE_MAP_AND_FLOWS.md;ARTIFACT:docs/design/ui-flow-mapping.md;ARTIFACT:docs/design/navigation-reachability-audit.md;ARTIFACT:docs/design/information-architecture.md;ARTIFACT:docs/design/content-audit.md;EVIDENCE:.specify/sprints/sprint-18/attestations/DOC-015/context_ack.json,VALIDATE:npx tsx tools/scripts/content-audit.ts;VALIDATE:pnpm lint;GATE:docs-route-count-consistency,90/180/360,,,0,"DOC-014:FS,IFC-209:FS,IFC-210:FS",
DOC-016,Documentation,Docs Integrity CI Gate - Automated cross-document route-total drift detection and PR enforcement,PM (STOA-Automation),"DOC-014,DOC-015",FILE:tools/scripts/content-audit.ts;FILE:docs/design/content-audit.md;FILE:docs/design/sitemap.md;FILE:docs/design/page-registry.md;FILE:docs/design/PAGE_MAP_AND_FLOWS.md;FILE:docs/design/ui-flow-mapping.md;FILE:docs/design/navigation-reachability-audit.md;FILE:docs/design/information-architecture.md,TypeScript CLI docs-integrity-audit validates canonical route totals and key summary aggregates across target design docs; CI workflow runs on app route and docs changes and fails on any drift; tests cover mismatch scenarios and false-positive guardrails; verified by: npx tsx tools/scripts/docs-integrity-audit.ts && pnpm test,Backlog,CI detection rate = 100% for injected mismatches; false positives <=1%; script execution <30s; test coverage >=90%,18,ARTIFACT:tools/scripts/docs-integrity-audit.ts;ARTIFACT:tools/scripts/__tests__/docs-integrity-audit.test.ts;ARTIFACT:.github/workflows/docs-integrity.yml;ARTIFACT:docs/design/content-audit.md;EVIDENCE:.specify/sprints/sprint-18/attestations/DOC-016/context_ack.json,VALIDATE:npx tsx tools/scripts/docs-integrity-audit.ts;VALIDATE:pnpm test;GATE:coverage-gte-90;GATE:docs-integrity-pass,60/120/240,,,0,"DOC-014:FS,DOC-015:FS",
IFC-211,Core CRM,Goal Settings RBAC - Role-based permissions for daily goal management (manager team goals and admin org defaults),Backend Dev (STOA-Domain),"IFC-195,IFC-098",FILE:apps/api/src/modules/home/home.router.ts;FILE:apps/api/src/security/rbac.ts;FILE:apps/api/src/security/types.ts;FILE:packages/db/prisma/schema.prisma;FILE:docs/planning/prd-home-page.md,Manager can set goals for team members via targetUserId param; admin can define org-wide default goals; self-service respects RBAC boundaries; goal resource type added to RBAC permission matrix; audit trail logs goal changes; verified by: pnpm test,Backlog,RBAC enforced on all goal endpoints; manager team-goal override works; admin defaults applied for new users; audit log captures goal changes; test coverage >=90%,18,ARTIFACT:apps/api/src/modules/home/home.router.ts;ARTIFACT:apps/api/src/modules/home/__tests__/home-rbac.test.ts;ARTIFACT:apps/api/src/security/types.ts;EVIDENCE:.specify/sprints/sprint-18/attestations/IFC-211/context_ack.json,VALIDATE:pnpm test;GATE:coverage-gte-90,120/240/480,,,0,"IFC-195:FS,IFC-098:FS",
IFC-212,AI/ML,Wire API container to QueueAIService for BullMQ-backed lead scoring,Backend Dev + AI Specialist (STOA-Intelligence),"IFC-015,IFC-125,IFC-168",FILE:apps/api/src/container.ts;FILE:apps/api/src/modules/leads/LeadService.ts;FILE:apps/api/src/modules/leads/AIServicePort.ts;FILE:apps/ai-worker/src/queue/jobs/scoring.job.ts;FILE:apps/ai-worker/src/queue/ai-consumer.ts;FILE:docs/architecture/adr/ADR-031-ai-worker-container.md;FILE:docs/architecture/adr/ADR-036-bullmq-task-processing.md;ENV:REDIS_URL configured;ENV:AI worker queue processing enabled,API container resolves QueueAIService for lead scoring requests; GuardrailsAIService remains decorator over queue-backed provider; lead scoring jobs are enqueued with correlation metadata and consumed by ai-scoring worker contract; retry and failure handling follow BullMQ defaults; verified by: pnpm test --filter api;pnpm test --filter ai-worker,Backlog,Enqueue success rate >=99%; scoring completion SLA P95 <=30s; queue failure rate <1%; test coverage >=90%,18,ARTIFACT:apps/api/src/services/queue/QueueAIService.ts;ARTIFACT:apps/api/src/container.ts;ARTIFACT:apps/api/src/modules/leads/__tests__/LeadService.queue-ai.test.ts;ARTIFACT:apps/ai-worker/src/queue/jobs/scoring.job.ts;EVIDENCE:.specify/sprints/sprint-18/attestations/IFC-212/context_ack.json,VALIDATE:pnpm test --filter api;VALIDATE:pnpm test --filter ai-worker;GATE:coverage-gte-90,90/180/360,,,0,"IFC-015:FS,IFC-125:FS,IFC-168:FS",
IFC-213,Integrations,Replace Math.random connector health checks with adapter-backed health checks in integrations router,Backend Dev + Integrations Eng (STOA-Domain),IFC-099,FILE:apps/api/src/modules/integrations/integrations.router.ts;FILE:packages/adapters/src/index.ts;ENV:Connector credentials configured per provider;ENV:OAuth connector health tokens configured,integrations router health endpoints use adapter checkConnection/getAccessToken instead of Math.random; unknown status is returned when health check credentials are missing; deterministic tests replace flaky retry loops; verified by: pnpm vitest run apps/api/src/modules/integrations/__tests__/integrations.router.test.ts,Completed,0 random health checks in integrations router; deterministic integration router tests; health summary includes unknown status for unconfigured connectors,14,ARTIFACT:apps/api/src/modules/integrations/integrations.router.ts;ARTIFACT:apps/api/src/modules/integrations/__tests__/integrations.router.test.ts,VALIDATE:pnpm vitest run apps/api/src/modules/integrations/__tests__/integrations.router.test.ts;VALIDATE:pnpm --filter api exec eslint src/modules/integrations/integrations.router.ts src/modules/integrations/__tests__/integrations.router.test.ts,30/60/120,2026-03-04,2026-03-04,100,IFC-099:FS,
IFC-214,AI/ML,Redis-backed AI Monitoring State Bridge - Replace process-local singleton reads with shared Redis telemetry store,Backend Dev + AI Specialist (STOA-Intelligence),"IFC-015,IFC-168,IFC-197",FILE:apps/api/src/modules/ai-monitoring/ai-monitoring.router.ts;FILE:apps/ai-worker/src/monitoring/chain-monitor.ts;FILE:apps/ai-worker/src/monitoring/index.ts;FILE:packages/platform/src/queues/queue-factory.ts;FILE:docs/compliance-and-governance/governance/risk-register.md;FILE:docs/architecture/adr/ADR-036-bullmq-task-processing.md;ENV:REDIS_URL configured;ENV:API and ai-worker share Redis,"ai-worker publishes tenant-scoped monitoring snapshots to Redis and aiMonitoring router reads Redis-backed metrics (getStatus/getDriftMetrics/getLatencyMetrics/getHallucinationReport/getROIMetrics) instead of in-process singletons; cache-poisoning mitigations enforced (key namespacing, schema validation, TTL/versioning); Redis outage fallback returns safe empty payloads; cross-process integration test verifies worker writes are visible to API; verified by: pnpm test --filter api;pnpm test --filter ai-worker",Backlog,Cross-process metric consistency >=99%; Redis read p95 <50ms; malformed payload acceptance = 0; test coverage >=90%,18,ARTIFACT:apps/api/src/modules/ai-monitoring/ai-monitoring.redis-store.ts;ARTIFACT:apps/api/src/modules/ai-monitoring/ai-monitoring.router.ts;ARTIFACT:apps/api/src/modules/ai-monitoring/__tests__/ai-monitoring.redis.integration.test.ts;ARTIFACT:apps/ai-worker/src/monitoring/redis-monitoring-publisher.ts;ARTIFACT:apps/ai-worker/src/monitoring/__tests__/redis-monitoring-publisher.test.ts;SPEC:.specify/sprints/sprint-18/specifications/IFC-214-spec.md;PLAN:.specify/sprints/sprint-18/planning/IFC-214-plan.md;EVIDENCE:.specify/sprints/sprint-18/attestations/IFC-214/context_ack.json,VALIDATE:pnpm test --filter api;VALIDATE:pnpm test --filter ai-worker;AUDIT:security-review;GATE:coverage-gte-90,120/240/480,,,0,"IFC-015:FS,IFC-168:FS,IFC-197:FS",
IFC-215,AI/ML,AI Monitoring Payload Fidelity - Replace tokenCost model and hallucination placeholders with real chain metadata,AI Specialist + Backend Dev (STOA-Intelligence),"IFC-117,IFC-197,IFC-214",FILE:apps/ai-worker/src/monitoring/chain-monitor.ts;FILE:apps/ai-worker/src/chains/scoring.chain.ts;FILE:apps/ai-worker/src/utils/cost-tracker.ts;FILE:apps/ai-worker/src/monitoring/hallucination-checker.ts;FILE:apps/api/src/modules/ai-monitoring/ai-monitoring.router.ts;FILE:docs/architecture/adr/ADR-022-ai-features-quality.md;ENV:LLM token usage callbacks enabled,"chain-monitor records actual model id tokenCost and hallucinationFlags from runtime chain metadata (no hardcoded 'default', 0, [] placeholders); Redis/API metric schema exposes populated fields with null-safe fallback semantics; unit and integration tests cover populated and fallback scenarios; verified by: pnpm test --filter ai-worker;pnpm test --filter api",Backlog,Placeholder values in scoring path = 0; metric completeness >=95%; token-cost variance <=1%; test coverage >=90%,18,ARTIFACT:apps/ai-worker/src/monitoring/chain-monitor.ts;ARTIFACT:apps/ai-worker/src/chains/scoring.chain.ts;ARTIFACT:apps/ai-worker/src/utils/cost-tracker.ts;ARTIFACT:apps/ai-worker/src/monitoring/__tests__/chain-monitor.metrics-fidelity.test.ts;ARTIFACT:apps/api/src/modules/ai-monitoring/__tests__/ai-monitoring.router.test.ts;SPEC:.specify/sprints/sprint-18/specifications/IFC-215-spec.md;PLAN:.specify/sprints/sprint-18/planning/IFC-215-plan.md;EVIDENCE:.specify/sprints/sprint-18/attestations/IFC-215/context_ack.json,VALIDATE:pnpm test --filter ai-worker;VALIDATE:pnpm test --filter api;GATE:coverage-gte-90;GATE:no-hardcoded-predictions,60/120/240,,,0,"IFC-117:FS,IFC-197:FS,IFC-214:FS",
A11Y-REVIEW-001,Documentation,Execute first quarterly accessibility documentation review using template,QA (STOA-Quality),DOC-012,FILE:docs/compliance-and-governance/compliance/quarterly-a11y-review-template.md,All 5 review sections completed with evidence; sign-off block filled; conformance statement updated if needed; review archived at docs/compliance-and-governance/compliance/quarterly-a11y-reviews/sprint-20-review.md; verified by: template completeness review,Backlog,All 5 review sections PASS; all FILL markers completed with evidence; documents updated as needed,20,ARTIFACT:docs/compliance-and-governance/compliance/quarterly-a11y-reviews/sprint-20-review.md,VALIDATE:pnpm lint,20/40/80,,,0,DOC-012:FS,
IFC-216,Core CRM,Entity Detail File Upload/Download Wiring  -  Wire file upload and download handlers on entity detail pages (Lead Contact Deal). Upload: file picker to upload mutation to Supabase Storage. Download: presigned URL to browser download. Follows IFC-094 (Pattern 1  -  infra-only). Resolves WIRE-IFC-094-001.,Backend Dev (STOA-Domain),IFC-094,FILE:apps/web/src/app/leads/[id]/page.tsx;FILE:apps/web/src/app/contacts/[id]/page.tsx;FILE:apps/web/src/app/deals/[id]/page.tsx;FILE:apps/web/src/components/documents/DocumentUpload.tsx;ENV:Supabase Storage bucket configured,Upload/download working on 3 entity detail pages; presigned URLs; file size validation; tenant isolation; tests >=90%,Backlog,Upload <2s for <10MB; download URL generation <200ms; test coverage >=90%,23,ARTIFACT:apps/web/src/app/leads/[id]/page.tsx;ARTIFACT:apps/web/src/app/contacts/[id]/page.tsx;ARTIFACT:apps/web/src/app/deals/[id]/page.tsx;EVIDENCE:.specify/sprints/sprint-23/attestations/IFC-216/context_ack.json,VALIDATE:pnpm --filter @intelliflow/web typecheck;VALIDATE:pnpm --filter @intelliflow/web test --run;GATE:coverage-gte-90,60/120/240,,,0,IFC-094:FS,
IFC-217,Core CRM,Entity Detail Email Compose Wiring  -  Wire existing EmailCompose component into Compose buttons on Lead and Contact detail pages. Pre-fill recipient. Open as Sheet overlay. Connect to email send API via EmailServiceAdapter. Follows IFC-144 and PG-141 (Pattern 1 + Pattern 2). Resolves WIRE-IFC-144-001 and WIRE-PG-141-001.,Frontend Dev (STOA-Quality),"IFC-144,PG-141",FILE:apps/web/src/components/email/EmailCompose.tsx;FILE:apps/web/src/app/leads/[id]/page.tsx;FILE:apps/web/src/app/contacts/[id]/page.tsx,Compose button opens EmailCompose on Lead + Contact detail; sends via API; success toast; tests >=90%,Backlog,Compose open <300ms; test coverage >=90%,22,ARTIFACT:apps/web/src/app/leads/[id]/page.tsx;ARTIFACT:apps/web/src/app/contacts/[id]/page.tsx;EVIDENCE:.specify/sprints/sprint-22/attestations/IFC-217/context_ack.json,VALIDATE:pnpm --filter @intelliflow/web typecheck;VALIDATE:pnpm --filter @intelliflow/web test --run;GATE:coverage-gte-90,60/120/240,,,0,"IFC-144:FS,PG-141:FS",
IFC-218,AI Foundation,Similar Entity API (pgvector)  -  Build lead.getSimilar and contact.getSimilar tRPC queries using pgvector embedding similarity. Top 5 matches exclude self tenant-isolated. Wire to Lead detail sidebar (replace empty state) and Contact detail sidebar. Follows IFC-039 (Pattern 1  -  infra-only). Resolves WIRE-IFC-039-001.,AI Specialist (STOA-Intelligence),IFC-039,FILE:apps/api/src/modules/lead/lead.router.ts;FILE:apps/api/src/modules/contact/contact.router.ts;FILE:packages/db/prisma/schema.prisma;ENV:pgvector extension enabled,getSimilar returns top 5 with name/company/score; wired to 2 detail sidebars; tenant-isolated; tests >=90%,Backlog,Query <500ms; top match relevance >0.7; test coverage >=90%,20,ARTIFACT:apps/api/src/modules/lead/lead.router.ts;ARTIFACT:apps/api/src/modules/contact/contact.router.ts;ARTIFACT:apps/web/src/app/leads/[id]/page.tsx;EVIDENCE:.specify/sprints/sprint-20/attestations/IFC-218/context_ack.json,VALIDATE:pnpm --filter api typecheck;VALIDATE:pnpm --filter api test --run;GATE:coverage-gte-90,90/180/360,,,0,IFC-039:FS,
IFC-219,Core CRM,Activity Feed Interactions (Reactions + Comments)  -  Add ActivityReaction and ActivityComment models to Prisma schema. tRPC mutations: addReaction removeReaction addComment. Wire into Lead and Contact detail activity action buttons. Remove hardcoded [] arrays. Follows IFC-069 (Pattern 2  -  scope oversight). Resolves WIRE-IFC-069-001.,Backend Dev (STOA-Domain),IFC-069,FILE:packages/db/prisma/schema.prisma;FILE:apps/api/src/modules/misc/timeline.router.ts;FILE:apps/web/src/app/leads/[id]/page.tsx;FILE:apps/web/src/app/contacts/[id]/page.tsx,Reactions + comments persisted; action buttons functional on Lead + Contact; Prisma migration; real-time via WS; tests >=90%,Backlog,Reaction add <100ms; comment add <200ms; test coverage >=90%,20,ARTIFACT:packages/db/prisma/schema.prisma;ARTIFACT:apps/api/src/modules/misc/timeline.router.ts;EVIDENCE:.specify/sprints/sprint-20/attestations/IFC-219/context_ack.json,VALIDATE:pnpm --filter api typecheck;VALIDATE:pnpm --filter api test --run;GATE:coverage-gte-90,90/180/360,,,0,IFC-069:FS,
IFC-220,AI Foundation,AI Insight Null-State UX (Contact)  -  Add Run AI Analysis button when aiInsight is null on Contact detail page. Lead detail already done 2026-03-04. Pattern: amber dashed-border banner + button wired to scoreWithAI mutation. Invalidate query on success. Follows IFC-095 (Pattern 2  -  scope oversight). Resolves WIRE-IFC-095-001.,Frontend Dev (STOA-Quality),IFC-095,FILE:apps/web/src/app/contacts/[id]/page.tsx;FILE:apps/web/src/app/leads/[id]/page.tsx,Contact detail shows Run AI Analysis when no insight; triggers mutation; refreshes; matches Lead pattern; tests >=90%,Completed,Mutation completes <3s; test coverage >=90%,16,ARTIFACT:apps/web/src/app/contacts/[id]/page.tsx;EVIDENCE:.specify/sprints/sprint-16/attestations/IFC-220/attestation.json,VALIDATE:pnpm --filter @intelliflow/web typecheck;VALIDATE:pnpm --filter @intelliflow/web test --run;GATE:coverage-gte-90,30/60/120,2026-03-12,2026-03-12,100,IFC-095:FS,
IFC-221,Core CRM,Email Open Tracking Integration  -  Real email open/click tracking. Backend: tracking pixel endpoint recording opens; click-through URL wrapper; EmailTracking model. Frontend: replace activity-derived open rate with real data on Lead and Contact detail. Inject pixel + wrap links on outbound send. Follows IFC-144 and IFC-099 (Pattern 1  -  infra-only). Resolves WIRE-IFC-099-001.,Backend Dev (STOA-Domain),"IFC-144,IFC-099",FILE:apps/api/src/modules/email/inbound.router.ts;FILE:packages/db/prisma/schema.prisma;FILE:apps/web/src/app/leads/[id]/page.tsx;FILE:apps/web/src/app/contacts/[id]/page.tsx,Tracking pixel injected; opens recorded; click-through tracked; real open rate on entity detail; privacy-compliant; tests >=90%,Backlog,Pixel response <50ms; tracking accuracy >95%; test coverage >=90%,22,ARTIFACT:apps/api/src/modules/email/tracking.router.ts;ARTIFACT:packages/db/prisma/schema.prisma;EVIDENCE:.specify/sprints/sprint-22/attestations/IFC-221/context_ack.json,VALIDATE:pnpm --filter api typecheck;VALIDATE:pnpm --filter api test --run;GATE:coverage-gte-90,60/120/240,,,0,"IFC-144:FS,IFC-099:FS",
IFC-222,Notifications,Implement real Twilio SMS SDK calls (Resolves R-006),Backend Dev (STOA-Domain),IFC-170,FILE:apps/workers/notifications-worker/src/channels/sms.ts,Real Twilio SDK calls replace mock logic; verified by: pnpm test,Completed,SMS delivery uses real Twilio API,14,ARTIFACT:apps/workers/notifications-worker/src/channels/sms.ts;EVIDENCE:.specify/sprints/sprint-14/attestations/IFC-222/context_ack.json;SPEC:.specify/sprints/sprint-14/specifications/IFC-222-spec.md;PLAN:.specify/sprints/sprint-14/planning/IFC-222-plan.md;ATTESTATION:.specify/sprints/sprint-14/attestations/IFC-222/attestation.json,VALIDATE:pnpm test,60/120/240,2026-03-06,2026-03-06,100,IFC-170:FS,
IFC-223,Notifications,Wire actual Email Outbound Adapter (Resolves R-018) [2026-06-09 audit: shipped as Completed but was MOCK in prod — container.ts had no resend branch; actually wired to Resend via #363/#360 + activated on Railway api service],Backend Dev (STOA-Domain),IFC-157,FILE:packages/adapters/src/messaging/email/outbound.ts,Email outbound connects to real SMTP/API provider; verified by: pnpm test,Completed,Emails dispatch to external provider,14,ARTIFACT:packages/adapters/src/messaging/email/outbound.ts;EVIDENCE:.specify/sprints/sprint-14/attestations/IFC-223/context_ack.json;SPEC:.specify/sprints/sprint-14/specifications/IFC-223-spec.md;PLAN:.specify/sprints/sprint-14/planning/IFC-223-plan.md;ATTESTATION:.specify/sprints/sprint-14/attestations/IFC-223/attestation.json,VALIDATE:pnpm test,60/120/240,2026-03-06,2026-03-07,100,IFC-157:FS,
IFC-224,Calendar Integration,Implement Calendar Webhook Ingestion Routes (Resolves R-008),Backend Dev (STOA-Domain),IFC-138,FILE:packages/adapters/src/index.ts,Webhooks endpoints configured to receive external calendar events; verified by: pnpm test,Completed,External calendar syncs arrive via webhook,14,ARTIFACT:apps/api/src/modules/calendar/calendar-webhook.service.ts;EVIDENCE:.specify/sprints/sprint-14/attestations/IFC-224/context_ack.json;SPEC:.specify/sprints/sprint-14/specifications/IFC-224-spec.md;PLAN:.specify/sprints/sprint-14/planning/IFC-224-plan.md;ATTESTATION:.specify/sprints/sprint-14/attestations/IFC-224/attestation.json,VALIDATE:pnpm test,120/240/480,2026-03-07,2026-03-07,100,IFC-138:FS,
IFC-225,Core CRM,Convert Lead UX Fix - Backend requires QUALIFIED status but Convert button always visible. Fix: (1) Disable/hide button for non-QUALIFIED leads with guidance tooltip. (2) Add confirmation dialog before conversion. (3) Add createAccount option to conversion flow. (4) Handle conversion errors gracefully. Page: leads/[id]/page.tsx line 1169.,Frontend Dev (STOA-Quality),,FILE:apps/web/src/app/leads/[id]/page.tsx;FILE:apps/api/src/modules/lead/lead.router.ts,Convert button hidden/disabled for non-QUALIFIED leads; confirmation dialog shown; createAccount option available; error handling for failed conversions; tests >=90%,Completed,Convert UX matches backend requirements; no silent failures,16,ARTIFACT:apps/web/src/app/leads/[id]/page.tsx;EVIDENCE:.specify/sprints/sprint-16/attestations/IFC-225/context_ack.json,VALIDATE:pnpm --filter web typecheck;VALIDATE:pnpm --filter web test --run;GATE:coverage-gte-90,30/60/120,2026-03-12,2026-03-12,100,,
IFC-226,Core CRM,"Lead Detail Null-State UX - Fix engagement/churn/sentiment showing raw 'Unknown' string when aiInsight is null. Replace with styled 'Not analyzed' state with visual distinction from real AI data. Page: leads/[id]/page.tsx lines 588, 2258.",Frontend Dev (STOA-Quality),,FILE:apps/web/src/app/leads/[id]/page.tsx,Engagement/churn/sentiment show styled 'Not analyzed' state (not raw 'Unknown'); visual distinction between fallback and real AI data; tests >=90%,Completed,No raw 'Unknown' strings rendered; CTA present in empty states,16,ARTIFACT:apps/web/src/app/leads/[id]/page.tsx;EVIDENCE:.specify/sprints/sprint-16/attestations/IFC-226/context_ack.json;SPEC:.specify/sprints/sprint-16/specifications/IFC-226-spec.md;PLAN:.specify/sprints/sprint-16/planning/IFC-226-plan.md,VALIDATE:pnpm --filter web typecheck;VALIDATE:pnpm --filter web test --run;GATE:coverage-gte-90,30/60/120,2026-03-15,2026-03-16,100,,
IFC-227,Core CRM,Company-to-Account Navigation Link - Lead detail page shows company name as plain <span> in profile card (line 1352) and info panel (line 1656). Replace with Next.js Link component navigating to /accounts/[accountId]. Requires accountId in lead transform/query. Apply same pattern to Contact and Deal detail pages.,Frontend Dev (STOA-Quality),,FILE:apps/web/src/app/leads/[id]/page.tsx;FILE:apps/web/src/app/contacts/[id]/page.tsx;FILE:apps/web/src/app/deals/[id]/page.tsx,"Company name is clickable Link to /accounts/[accountId] on Lead, Contact, Deal detail pages; accountId included in API response; graceful fallback when no account linked; tests >=90%",Completed,Company names are navigable links; no broken links when accountId is null,18,ARTIFACT:apps/web/src/app/leads/[id]/page.tsx;ARTIFACT:apps/web/src/app/contacts/[id]/page.tsx;EVIDENCE:.specify/sprints/sprint-18/attestations/IFC-227/context_ack.json,VALIDATE:pnpm --filter web typecheck;VALIDATE:pnpm --filter web test --run;GATE:coverage-gte-90,30/60/120,,,0,,
IFC-228,Core CRM,"Lead Owner Reassignment UI - Owner card on Lead detail (lines 1468-1487) is read-only. Add reassignment capability for MANAGER/ADMIN roles: user picker dropdown, reassign mutation via lead.update, audit trail entry. Apply RBAC check to show/hide reassign button. Extend to Contact and Account detail pages.",Frontend Dev (STOA-Quality),IFC-095,FILE:apps/web/src/app/leads/[id]/page.tsx;FILE:apps/api/src/modules/lead/lead.router.ts;FILE:apps/api/src/security/rbac.ts,MANAGER/ADMIN can reassign lead owner via user picker; reassignment creates audit entry; RBAC enforced; regular users see read-only; tests >=90%,Backlog,Reassignment completes <500ms; RBAC correctly enforced,20,ARTIFACT:apps/web/src/app/leads/[id]/page.tsx;EVIDENCE:.specify/sprints/sprint-20/attestations/IFC-228/context_ack.json,VALIDATE:pnpm --filter web typecheck;VALIDATE:pnpm --filter web test --run;GATE:coverage-gte-90,30/60/120,,,0,IFC-095:FS,
IFC-229,Core CRM,"Lead Detail Map View - Current map section (lines 1453-1465) is a gradient placeholder with non-functional 'View Map' button. Options: (A) Integrate Mapbox/Leaflet with geocoded address, (B) Link to Google Maps in new tab, (C) Remove placeholder entirely if map not in MVP scope. Needs product decision.",Frontend Dev (STOA-Quality),,FILE:apps/web/src/app/leads/[id]/page.tsx,Map section either shows real map from geocoded address OR links to external map OR placeholder removed; no non-functional UI elements remain; tests >=90%,Backlog,Map renders within 2s or external link works; no broken UI,20,ARTIFACT:apps/web/src/app/leads/[id]/page.tsx;EVIDENCE:.specify/sprints/sprint-20/attestations/IFC-229/context_ack.json,VALIDATE:pnpm --filter web typecheck;VALIDATE:pnpm --filter web test --run;GATE:coverage-gte-90,30/60/120,,,0,,
IFC-230,Core CRM,"Unify Lead Create/Edit Form - Create page (leads/(list)/new/page.tsx, 1029 lines) and Edit page (leads/[id]/edit/page.tsx, 464 lines) share no components. Issues: different API clients (trpc vs api), different field sets (BANT only in create but silently dropped), different styling, different validation, no auth guard on create. Fix: extract shared LeadForm component, unify API client, include all fields in both views, consistent styling.",Frontend Dev (STOA-Quality),,FILE:apps/web/src/app/leads/[id]/edit/page.tsx;FILE:apps/web/src/app/leads/(list)/new/page.tsx,Shared LeadForm component used by both create and edit; consistent field set (BANT fields not silently dropped); unified API client; consistent styling; auth guard on create; tests >=90%,Backlog,Shared component reduces total LOC by >=30%; no silently dropped fields,18,ARTIFACT:apps/web/src/components/leads/LeadForm.tsx;ARTIFACT:apps/web/src/app/leads/[id]/edit/page.tsx;ARTIFACT:apps/web/src/app/leads/(list)/new/page.tsx;EVIDENCE:.specify/sprints/sprint-18/attestations/IFC-230/context_ack.json,VALIDATE:pnpm --filter web typecheck;VALIDATE:pnpm --filter web test --run;GATE:coverage-gte-90,60/120/240,,,0,,
IFC-231,Core CRM,"Lead List Saved Views and Filter Persistence - Sidebar view params (?view=my, ?view=starred, ?segment=hot) are completely ignored by LeadsPageClient (no useSearchParams call). Fix: (1) Wire URL params to filter state, (2) Add saved views CRUD (name, filters, columns, sort), (3) Column visibility picker UI exposing DataTable VisibilityState, (4) Persist filter/sort/view selection in localStorage or user preferences.",Frontend Dev (STOA-Quality),,FILE:apps/web/src/app/leads/(list)/page.tsx;FILE:apps/web/src/components/sidebar/configs/index.ts,URL params filter lead list correctly; saved views can be created/edited/deleted; column picker toggles visibility; filter/sort state persists across navigation; tests >=90%,Backlog,View switch <300ms; filter persistence verified across navigation,22,ARTIFACT:apps/web/src/app/leads/(list)/page.tsx;EVIDENCE:.specify/sprints/sprint-22/attestations/IFC-231/context_ack.json,VALIDATE:pnpm --filter web typecheck;VALIDATE:pnpm --filter web test --run;GATE:coverage-gte-90,60/120/240,,,0,,
IFC-232,Core CRM,Sidebar Broken Links Cleanup - 1 remaining broken navigation link: /deals/trash has no page.tsx (sidebar config deals.ts links to it but route 404s). Original 17 broken nav links and 6 settings links resolved by PG-025/PG-045/PG-174 and other sprint work. Fix: create trash/deleted-deals page at apps/web/src/app/deals/trash/page.tsx OR remove the sidebar item from deals.ts if soft-delete is not yet supported.,Frontend Dev (STOA-Quality),,FILE:apps/web/src/components/sidebar/configs/deals.ts;FILE:apps/web/src/app/deals/(list)/page.tsx,/deals/trash route resolves to a valid page (placeholder or functional); zero 404 errors from sidebar navigation; tests >=90%,Completed,Zero 404 errors from deals sidebar navigation; /deals/trash accessible,16,ARTIFACT:apps/web/src/app/deals/(list)/trash/page.tsx;EVIDENCE:.specify/sprints/sprint-16/attestations/IFC-232/attestation.json;SPEC:.specify/sprints/sprint-16/specifications/IFC-232-spec.md;PLAN:.specify/sprints/sprint-16/planning/IFC-232-plan.md,VALIDATE:pnpm --filter web typecheck;VALIDATE:pnpm --filter web test --run;GATE:coverage-gte-90,30/60/120,2026-04-11,2026-04-11,100,,
IFC-233,Core CRM,"Wire Unused Backend tRPC Endpoints - ~20 built but unused tRPC procedures. Lead: convertToDeal, getHotLeads, getReadyForQualification, bulkScore. Contact: getByEmail, linkToAccount, unlinkFromAccount, search, linkToLead, unlinkFromLead, getTimeline, logActivity. Opportunity: create, getById, getHistory, getProducts, getPipeline, stats. Account: create, update. Task: stats, assign, reschedule. Wire each to appropriate frontend UI or remove if not needed.",Full Stack Dev (STOA-Domain),,FILE:apps/api/src/modules/lead/lead.router.ts;FILE:apps/api/src/modules/contact/contact.router.ts;FILE:apps/api/src/modules/opportunity/opportunity.router.ts;FILE:apps/api/src/modules/account/account.router.ts;FILE:apps/api/src/modules/task/task.router.ts,All listed tRPC procedures either wired to frontend UI or explicitly removed with justification; no dead backend code; tests >=90%,Backlog,Zero unused tRPC procedures remain; all wired endpoints have frontend consumers,20,ARTIFACT:apps/web/src/app/leads/[id]/page.tsx;ARTIFACT:apps/web/src/app/contacts/[id]/page.tsx;EVIDENCE:.specify/sprints/sprint-20/attestations/IFC-233/context_ack.json,VALIDATE:pnpm --filter web typecheck;VALIDATE:pnpm --filter api typecheck;VALIDATE:pnpm --filter web test --run;GATE:coverage-gte-90,60/120/240,,,0,,
IFC-234,Core CRM,"Settings Pages Wiring - 4 settings pages with hardcoded data and inert buttons. Team: hardcoded 4-person array, inert Invite/Remove/Role buttons. Integrations: hardcoded provider list, inert Connect/Disconnect buttons. Notifications: hardcoded const, no useState, no onClick on toggles. Account: profile name/email has no save mutation, 3 security buttons (Change Password, Enable 2FA, Download Data) have no onClick. Wire all to real tRPC mutations and queries.",Frontend Dev (STOA-Quality),,FILE:apps/web/src/app/settings/team/page.tsx;FILE:apps/web/src/app/settings/integrations/page.tsx;FILE:apps/web/src/app/settings/notifications/page.tsx;FILE:apps/web/src/app/settings/account/page.tsx,Team page loads real users from API with working Invite/Remove/Role; Integrations shows real connection status; Notifications toggles persist via mutation; Account profile saves name/email; security buttons functional; tests >=90%,Backlog,All settings pages load real data; mutations complete <500ms; no hardcoded arrays,18,ARTIFACT:apps/web/src/app/settings/team/page.tsx;ARTIFACT:apps/web/src/app/settings/integrations/page.tsx;ARTIFACT:apps/web/src/app/settings/notifications/page.tsx;ARTIFACT:apps/web/src/app/settings/account/page.tsx;EVIDENCE:.specify/sprints/sprint-18/attestations/IFC-234/context_ack.json,VALIDATE:pnpm --filter web typecheck;VALIDATE:pnpm --filter web test --run;GATE:coverage-gte-90,60/120/240,,,0,,
IFC-235,Core CRM,"Lead Detail AI Chat Panel - Add AI chat panel to Lead detail page for entity-scoped conversations. Backend: conversation.router.ts is fully built with 13 endpoints but NOT registered in router.ts - register it. Frontend: build LeadChatPanel component using conversation API with contextType=LEAD, contextId=leadId. Similar to dashboard TeamChatWidget but with real API calls (TeamChatWidget is decorative with hardcoded messages). ConversationRecord/MessageRecord Prisma models exist.",Full Stack Dev (STOA-Domain),IFC-069,FILE:apps/api/src/modules/agent/conversation.router.ts;FILE:apps/api/src/router.ts;FILE:apps/web/src/app/leads/[id]/page.tsx;FILE:apps/web/src/components/dashboard/widgets/TeamChatWidget.tsx,conversation router registered in router.ts; LeadChatPanel component sends/receives messages via API; entity-scoped to current lead; message history persisted; streaming responses; tests >=90%,Backlog,Message send <500ms; chat history loads <1s; real AI responses not hardcoded,22,ARTIFACT:apps/web/src/components/leads/LeadChatPanel.tsx;ARTIFACT:apps/api/src/router.ts;EVIDENCE:.specify/sprints/sprint-22/attestations/IFC-235/context_ack.json,VALIDATE:pnpm --filter web typecheck;VALIDATE:pnpm --filter api typecheck;VALIDATE:pnpm --filter web test --run;GATE:coverage-gte-90,60/120/240,,,0,IFC-069:FS,
IFC-236,Core CRM,Recent Activity Empty State CTA - Overview tab shows generic 'No activities yet' with no call to action. Add 'Log your first activity' CTA button linking to Activity tab textarea. Apply same pattern to Contact detail page. Page: leads/[id]/page.tsx line 1600.,Frontend Dev (STOA-Quality),,FILE:apps/web/src/app/leads/[id]/page.tsx,Recent Activity empty state has 'Log your first activity' CTA; CTA navigates to Activity tab; applied to Contact detail; tests >=90%,Completed,CTA visible on empty state; click navigates correctly,16,ARTIFACT:apps/web/src/app/leads/[id]/page.tsx;ARTIFACT:apps/web/src/app/contacts/[id]/page.tsx;EVIDENCE:.specify/sprints/sprint-16/attestations/IFC-236/attestation.json;SPEC:.specify/sprints/sprint-16/specifications/IFC-236-spec.md;PLAN:.specify/sprints/sprint-16/planning/IFC-236-plan.md,VALIDATE:pnpm --filter web typecheck;VALIDATE:pnpm --filter web test --run;GATE:coverage-gte-90,15/30/60,2026-03-12,2026-03-12,100,,
IFC-237,Core CRM,Lead Router Security - Tenant Isolation & Domain Bypass. Fix 4 CRITICAL/MEDIUM security issues: (1) scoreWithAI fire-and-forget uses raw ctx.prisma instead of prismaWithTenant - cross-tenant data leak risk [S2]. (2) logActivity $transaction uses raw ctx.prisma - may bypass tenant middleware [S3]. (3) bulkUpdateStatus uses direct Prisma updateMany bypassing Lead.changeStatus() domain validation - skips status transition rules and domain events [S4]. (4) getHotLeads/getReadyForQualification pass userId as ownerId without explicit tenantId [S9]. Fix: Replace ctx.prisma with prismaWithTenant in all cases. Route bulkUpdateStatus through domain model. Add explicit tenantId to hot/ready queries.,Backend Dev (STOA-Domain),,,All lead router procedures use prismaWithTenant; bulkUpdateStatus routes through Lead.changeStatus(); getHotLeads has explicit tenantId; tenant isolation integration tests pass; no raw ctx.prisma in lead router,Completed,0 raw ctx.prisma calls in lead.router.ts; tenant isolation test coverage >=90%,16,ARTIFACT:apps/api/src/modules/lead/lead.router.ts;SPEC:.specify/sprints/sprint-16/specifications/IFC-237-spec.md;PLAN:.specify/sprints/sprint-16/planning/IFC-237-plan.md,VALIDATE:pnpm --filter @intelliflow/api test --run;VALIDATE:pnpm --filter @intelliflow/api typecheck;GATE:coverage-gte-90,4/6/8,2026-03-12,2026-03-12,100,,Continuous
IFC-238,Core CRM,"Lead Detail Status Type Fix + Auth Guard. Fix 2 CRITICAL issues: (1) LeadStatus type union at leads/[id]/page.tsx line 139 omits NEGOTIATING - runtime crash when lead has this status [S1]. (2) leads/(list)/new/page.tsx missing useRequireAuth() hook - unauthenticated users can access create lead form [F1]. Also fix trpc vs api import inconsistency in create page [F8]. Fix: Add NEGOTIATING to LeadStatus type, add useRequireAuth() to create page, standardize import.",Frontend Dev (STOA-Quality),,,LeadStatus includes all Prisma LeadStatusEnum values; create page has auth guard; no runtime crash for NEGOTIATING leads; trpc import standardized to api; tests >=90%,Completed,0 missing status values in LeadStatus type; auth guard present on /leads/new,16,ARTIFACT:apps/web/src/app/leads/[id]/page.tsx;ARTIFACT:apps/web/src/app/leads/(list)/new/page.tsx;SPEC:.specify/sprints/sprint-16/specifications/IFC-238-spec.md;PLAN:.specify/sprints/sprint-16/planning/IFC-238-plan.md;EVIDENCE:.specify/sprints/sprint-16/attestations/IFC-238/attestation.json,TypeScript compilation + component tests,1/2/3,2026-03-18,2026-03-19,100,,Continuous
IFC-239,Core CRM,"Lead Router Data Integrity Fixes. Fix 5 HIGH issues: (1) update procedure ambiguous status field handling - may silently drop or bypass domain validation [S5]. (2) Score tier thresholds inconsistent - domain LeadScore uses 80/50 but router stats query uses 70/40 [S6]. (3) sortBy accepts arbitrary strings with no enum validation - Prisma orderBy injection risk [S7]. (4) leadListResponseSchema expects 'data' key but router returns 'leads' [W4]. (5) leadResponseSchema missing Lead 360 fields (aiInsight, activities, notes, files, tasks) [D5]. Fix: Explicitly handle status in update, unify thresholds, add sortBy enum, fix schema keys.",Backend Dev (STOA-Domain),,,update procedure explicitly handles status via domain model; score thresholds unified (single source of truth); sortBy validated against enum; response schemas match actual API output; tests >=90%,Completed,0 schema mismatches; sortBy restricted to enum values; single threshold source,16,apps/api/src/modules/lead/lead.router.ts; packages/validators/src/lead.ts; packages/domain/src/crm/lead/LeadScore.ts,Unit tests + schema validation tests,3/5/7,2026-04-06,2026-04-06,100,,Continuous
IFC-240,Core CRM,"Lead Audit Logging. Add audit log entries to all 20 lead router procedures using SecurityAuditService. GDPR-relevant operations (delete, bulkDelete, convert, export) MUST have audit trail. Include: actor (userId), action, entityType (Lead), entityId, tenantId, timestamp, metadata (old/new values for mutations). Integrate with existing audit infrastructure at apps/api/src/security/audit/.",Backend Dev (STOA-Security),,,All 20 lead procedures emit audit entries; delete/convert/bulk ops have before/after snapshots; audit entries queryable via audit API; GDPR compliance verified; tests >=90%,Backlog,20/20 procedures with audit logging; 100% GDPR-relevant ops covered,18,apps/api/src/modules/lead/lead.router.ts; apps/api/src/security/audit/,Audit log integration tests,4/6/8,,,0,,Continuous
IFC-241,Core CRM,"Lead Router Dead Code & Missing Events Cleanup. Fix 4 MEDIUM/LOW issues: (1) scoreWithAI notification variables at lines 517-527 set but never referenced - dead code [S10]. (2) LeadRoutedEvent defined in domain but never published by any procedure or service [S11]. (3) Only 3 of ~10 lead event types trigger notifications [W10]. (4) Lead notifications processed synchronously, not queued via BullMQ [W11]. Fix: Remove dead notification code, publish LeadRoutedEvent from routing logic, add notification handlers for remaining event types, enqueue via BullMQ.",Backend Dev (STOA-Domain),,,Dead code removed; LeadRoutedEvent published when lead routing occurs; >=8 event types have notification handlers; notifications enqueued via BullMQ; tests >=90%,Backlog,0 dead code blocks; >=8/10 events with notification handlers,20,apps/api/src/modules/lead/lead.router.ts; packages/domain/src/crm/lead/LeadEvents.ts; apps/workers/notifications-worker/,Event publishing + notification tests,4/6/8,,,0,,Continuous
IFC-242,Core CRM,"Lead Create Form Fixes - BANT Drop, Revenue Mapping, Validation. Fix 3 HIGH issues: (1) BANT fields (Budget, Authority, Need, Timeline) collected in create form but silently dropped on submit - never sent to API [F3]. (2) annualRevenue mapped to estimatedValue - semantic mismatch between company annual revenue and deal estimated value [F4]. (3) Edit form uses 'as any' cast with no client-side Zod validation - no inline field errors [F9]. Fix: Send BANT to API (add to createLeadSchema if needed), map annualRevenue correctly, add Zod resolver to edit form, remove as any.",Frontend Dev (STOA-Quality),,,BANT fields persisted on create; annualRevenue and estimatedValue are distinct fields; edit form uses zodResolver with inline errors; no 'as any' casts; sourceOther sent to API; tests >=90%,Backlog,BANT fields round-trip verified; 0 'as any' casts in lead forms,18,apps/web/src/app/leads/(list)/new/page.tsx; apps/web/src/app/leads/[id]/edit/page.tsx; packages/validators/src/lead.ts,Form submission tests + API contract tests,3/5/7,,,0,,Continuous
IFC-243,Core CRM,"Lead Frontend Consistency - StatusBadge, Toast, window.prompt. Fix 3 MEDIUM issues: (1) window.prompt() used for note input at line 1951 - blocks UI, no multi-line, poor UX [F5]. Replace with Dialog/Sheet component. (2) Two different StatusBadge implementations - inline LeadStatusBadge vs shared component with different color schemes [F6]. Consolidate to shared component. (3) Two Toast patterns - sonner toast.success() vs shadcn useToast() used inconsistently across lead pages [F7]. Standardize to one pattern.",Frontend Dev (STOA-Quality),,,Note input uses Dialog component with textarea; single StatusBadge component shared across lead pages; single Toast pattern across all lead pages; tests >=90%,Backlog,0 window.prompt() calls; 1 StatusBadge implementation; 1 Toast pattern,20,apps/web/src/app/leads/[id]/page.tsx; apps/web/src/components/shared/,Component tests + visual regression,2/3/5,,,0,,Continuous
IFC-244,Core CRM,"Dashboard Widget Real Data - ActiveLeads, TotalLeads, Analytics. Fix 3 HIGH/MEDIUM issues: (1) ActiveLeadsWidget fully hardcoded with static '1,240' and 'vs 1,100 last month' [F2]. (2) TotalLeadsWidget shows hardcoded '+12%' trend [W6]. (3) Analytics page for leads uses sample data arrays, no API queries [W7]. Fix: Wire ActiveLeadsWidget to lead.stats API, compute real trend from monthly comparison, wire Analytics page to real lead data endpoints.",Frontend Dev (STOA-Quality),,,ActiveLeadsWidget shows real count from API; TotalLeadsWidget trend computed from actual monthly data; Analytics page queries real lead data; no hardcoded numeric values; tests >=90%,Backlog,0 hardcoded values in dashboard widgets; real data verified against API,20,apps/web/src/components/dashboard/widgets/ActiveLeadsWidget.tsx; apps/web/src/components/dashboard/widgets/TotalLeadsWidget.tsx; apps/web/src/app/analytics/(list)/page.tsx,Widget integration tests + API contract verification,3/4/6,,,0,,Continuous
IFC-245,Core CRM,"Lead Activity Timeline Unification. Fix HIGH issue: logActivity creates LeadActivity records but these are NOT fed into the unified TimelineEvent system (IFC-069). Lead activities exist in a parallel silo [W1]. Also fix: No email-to-lead association - inbound emails not linked to leads by sender address [W2]. Fix: Create TimelineEvent adapter for LeadActivity, add email-to-lead matching in inbound parser, ensure lead detail 'All Sources' toggle shows unified data.",Backend Dev (STOA-Domain),IFC-069:FS,,LeadActivity records appear in unified timeline; inbound emails matched to leads by sender; lead detail All Sources view shows real unified data; tests >=90%,Backlog,LeadActivity → TimelineEvent mapping verified; email-to-lead match rate >0,20,apps/api/src/modules/lead/lead.router.ts; apps/api/src/modules/misc/timeline.ts; apps/api/src/modules/email/inbound.router.ts,Timeline integration tests + email matching tests,4/6/8,,,0,,Continuous
IFC-246,AI Foundation,"Domain Model Lead 360 Alignment. Fix 4 HIGH issues: (1) Lead.toJSON() omits aiInsight, activities, notes, files, tasks relations - domain events carry incomplete snapshots [D1]. (2) qualify() only allows from NEW/CONTACTED but UI doesn't reflect this constraint [D2]. (3) LeadScoringChain throws unhandled error for unknown AI_PROVIDER [D3]. (4) AI scoring prompt only receives basic lead data, ignores activity count, engagement history, note count [D4]. Fix: Extend toJSON, expose allowed transitions, add provider fallback, enrich scoring prompt.",AI Specialist (STOA-Intelligence),,,Lead.toJSON() includes 360 fields; qualify() exposes valid-from-status list; LeadScoringChain gracefully handles unknown providers; scoring prompt includes 360 context; tests >=90%,Backlog,toJSON() includes 5 relation fields; scoring prompt includes >=3 360 data points,20,packages/domain/src/crm/lead/Lead.ts; packages/domain/src/crm/lead/LeadScore.ts; apps/ai-worker/src/chains/,Domain model tests + scoring chain tests,3/5/7,,,0,,Continuous
IFC-247,Core CRM,"Lead Detail Page Tests. Lead detail page (2200+ lines) has ZERO component tests [T1]. Also untested: addNote procedure [T4] and logActivity procedure [T5] added 2026-03-04. Write comprehensive tests: (1) Component render tests for all tabs (Overview, Activity, AI Insights, Lead IQ, Notes, Files, Emails, Tasks). (2) Mutation tests for addNote and logActivity. (3) Error state tests (404, 500, retry). (4) AI insight null-state rendering. (5) Activity feed toggle. Must cover 2026-03-04 wiring fixes.",Frontend Dev (STOA-Quality),,,Lead detail page test file exists with >=20 test cases; addNote mutation tested; logActivity mutation tested; error states tested; AI insight null-state tested; coverage >=90% for tested paths,Backlog,>=20 test cases; coverage >=90% for leads/[id]/page.tsx,18,apps/web/src/app/leads/[id]/__tests__/page.test.tsx,vitest run with coverage,4/6/8,,,0,,Continuous
IFC-248,Core CRM,"Lead List & Create Page Tests. Two major pages with ZERO tests: (1) Lead list page with filtering, sorting, bulk operations, saved views [T2]. (2) Lead create page (1029 lines) with BANT fields, source handling, validation [T3]. Also test: (3) Role-based filtering (ADMIN sees all, others see own) [T7]. (4) Bulk operations UI (score, convert, archive, delete) [T8]. Write component tests covering happy path, error states, and edge cases.",Frontend Dev (STOA-Quality),,,"Lead list test file with >=15 cases (filter, sort, bulk ops, role-based); Lead create test file with >=10 cases (BANT, validation, submission); coverage >=90%",Backlog,>=25 total test cases across 2 files; coverage >=90%,18,apps/web/src/app/leads/(list)/__tests__/page.test.tsx; apps/web/src/app/leads/(list)/new/__tests__/page.test.tsx,vitest run with coverage,4/6/8,,,0,,Continuous
IFC-249,Core CRM,"Lead Edit Page Tests + E2E. Fix remaining test gaps: (1) Edit page onSuccess/onError callbacks untested, as any cast hides type errors [T9]. (2) No E2E tests for complete lead CRUD flow (create -> view -> edit -> delete) [T6]. Write: (1) Edit page component tests with mutation mocking. (2) Playwright E2E test for full lead lifecycle. E2E should cover: create lead with required fields, view on detail page, edit fields, archive/delete.",Frontend Dev (STOA-Quality),,,Edit page test file with >=8 cases; Playwright E2E test for lead CRUD lifecycle; edit page mutation callbacks covered; coverage >=90%,Backlog,>=8 edit page tests; 1 E2E test with >=5 assertions,20,apps/web/src/app/leads/[id]/edit/__tests__/page.test.tsx; tests/e2e/lead-crud.spec.ts,vitest run + playwright test,4/6/8,,,0,,Continuous
IFC-250,Core CRM,"Lead Event Pipeline - Persistent Outbox + Webhooks. Fix HIGH/LOW issues: (1) InMemoryEventBus loses all events on server restart - no persistent outbox pattern [W3]. (2) No webhook handlers for lead events - external systems cannot subscribe [W9]. Fix: Implement transactional outbox pattern for lead domain events (LeadCreatedEvent, LeadQualifiedEvent, etc.). Add webhook dispatch for lead events. Ensure event ordering and at-least-once delivery.",Backend Dev (STOA-Domain),,,Lead events persisted to outbox table; outbox processor dispatches to webhook subscribers; events survive server restart; at-least-once delivery guaranteed; webhook payload schema documented; tests >=90%,Backlog,0 events lost on restart; webhook delivery latency <5s,22,apps/api/src/container.ts; apps/api/src/webhooks/handler.ts; packages/db/prisma/schema.prisma,Outbox integration tests + webhook delivery tests,6/8/12,,,0,,Continuous
IFC-251,Core CRM,"Lead CSV Import/Export. Add bulk import and export for leads [W8]. Import: CSV upload with validation, duplicate detection, field mapping UI, error report. Export: CSV and JSON formats, filtered export (current view), all-fields export. Common CRM feature needed for data migration and reporting. Also cleanup: Prisma schema backslash comments to standard // format [S12].",Frontend Dev (STOA-Quality),,,CSV import with validation UI and error report; CSV/JSON export with filter support; Prisma comments standardized; import handles duplicates gracefully; tests >=90%,Backlog,Import handles >=1000 rows; export completes <5s for 10K leads,24,apps/web/src/app/leads/(list)/; apps/api/src/modules/lead/lead.router.ts,Import/export integration tests,6/8/12,,,0,,Continuous
IFC-252,Core CRM,Contact Router Security — Tenant Isolation Fixes. CRITICAL: (1) search procedure has no createTenantWhereClause — cross-tenant search by name/email (R-02). (2) logActivity transaction uses raw ctx.prisma with no tenantId in WHERE — cross-tenant update (R-03). (3) bulkEmail/bulkExport no tenant filter — email exfiltration via guessed UUIDs (R-04). (4) stats ignores typedCtx tenant — no tenantId boundary (R-05). (5) getById/getByEmail double-fetch through unscoped domain repo (R-06). Cross-ref: R-01 (prismaWithTenant raw) is cross-cutting and shared with IFC-237. Audit: docs/audit/contact-detail-wiring-audit.md §15.,Backend Dev (STOA-Domain),,FILE:docs/audit/contact-detail-wiring-audit.md,All contact router procedures use createTenantWhereClause; logActivity transaction uses prismaWithTenant; search/bulkEmail/bulkExport tenant-scoped; getById/getByEmail cross-check tenantId; tests >=90%,Completed,Zero cross-tenant data leaks in contact procedures,16,ARTIFACT:apps/api/src/modules/contact/contact.router.ts,VALIDATE:pnpm test --filter @intelliflow/api,120/240/480,2026-03-12,2026-03-12,100,,
IFC-253,Core CRM,Contact Detail NaN Fix + Auth Guard + Status Enum. CRITICAL: (1) NaN% division by zero — emailsOpened/emailsSent at line 1319 renders 'NaN%' when emailsSent=0 (F-01). (2) Create contact page missing useRequireAuth() — unauthenticated access (F-07). (3) Status enum truncated to 3 values in ContactList/ContactCard (ACTIVE/INACTIVE/ARCHIVED) but create form allows 6 values — unknown status crashes detail page statusConfig (F-08). Audit: docs/audit/contact-detail-wiring-audit.md §16.,Frontend Dev (STOA-Quality),,FILE:docs/audit/contact-detail-wiring-audit.md,Open Rate handles 0/0 gracefully; create page has useRequireAuth; ContactStatusBadge handles all 5 domain statuses with fallback; tests >=90%,Completed,No NaN renders; auth guard on create; no crash on unknown status,16,ARTIFACT:apps/web/src/app/contacts/[id]/page.tsx;ARTIFACT:apps/web/src/app/contacts/(list)/new/page.tsx;ARTIFACT:apps/web/src/components/contacts/ContactCard.tsx;ARTIFACT:apps/web/src/components/contacts/ContactList.tsx;ARTIFACT:apps/web/src/app/contacts/[id]/page.tsx,VALIDATE:pnpm test --filter @intelliflow/web,60/120/240,,,100,2026-03-12,2026-03-13
IFC-254,Core CRM,"Contact Router Data Integrity Fixes. (1) Raw SQL in getTimeline has no tenant filter and .catch(() => []) swallows errors (R-09). (2) sortBy accepts arbitrary strings — enum whitelist needed (R-10). (3) filterOptions ignores status input (R-12). (4) contactListResponseSchema uses 'data' key but router returns 'contacts' (D-03). (5) phone non-nullable in response schema but mapper returns null (D-08/R-14). Audit: docs/audit/contact-detail-wiring-audit.md §15,§18.",Backend Dev (STOA-Domain),,FILE:docs/audit/contact-detail-wiring-audit.md,getTimeline has tenant filter and proper error handling; sortBy uses enum whitelist; filterOptions respects input; schema keys match router response; phone schema nullable; tests >=90%,Completed,Zero data integrity issues in contact router,16,ARTIFACT:apps/api/src/modules/contact/contact.router.ts;ARTIFACT:packages/validators/src/contact.ts,VALIDATE:pnpm test --filter @intelliflow/api,60/120/240,2026-03-15,2026-03-16,100,SPEC:.specify/sprints/sprint-16/specifications/IFC-254-spec.md;PLAN:.specify/sprints/sprint-16/planning/IFC-254-plan.md,
IFC-255,Core CRM,"Contact Audit Logging. (1) Zero audit logging in all 14 contact router procedures — no ctx.security.auditLogger calls (R-07). (2) Audit event handler PascalCase keys (ContactCreated/Updated/Deleted) don't match domain dot-notation (contact.created/updated) — 5 event types unmapped (D-06). Violates IFC-098 audit requirement. Audit: docs/audit/contact-detail-wiring-audit.md §15,§18.",Backend Dev (STOA-Domain),,FILE:docs/audit/contact-detail-wiring-audit.md,All contact CRUD procedures emit audit events; event handler maps all 8 contact event types; audit trail for create/update/delete/bulk ops; tests >=90%,Backlog,14/14 contact procedures emit audit events,18,ARTIFACT:apps/api/src/modules/contact/contact.router.ts;ARTIFACT:apps/api/src/security/audit-event-handler.ts,VALIDATE:pnpm test --filter @intelliflow/api,120/240/480,,,0,,
IFC-256,Core CRM,"Contact Detail Hardcoded Tabs — Tickets & Documents. (1) Tickets tab fully hardcoded with 'TKT-1234' and static timestamp (F-02, F-21). ContactWithRelations has no tickets relation. Tab badge hardcoded to 0. (2) Documents tab hardcoded with 2 static PDFs — apiContact.documents data exists in interface but is completely ignored (F-03). Need: wire tickets via TicketService query, wire documents from apiContact.documents or file infrastructure. Audit: docs/audit/contact-detail-wiring-audit.md §5,§9,§16.",Frontend Dev (STOA-Quality),,FILE:docs/audit/contact-detail-wiring-audit.md,Tickets tab shows real data from API (or proper empty state); Documents tab renders apiContact.documents; tab badges dynamic; no hardcoded data; tests >=90%,Completed,Zero hardcoded data in Tickets and Documents tabs,18,ARTIFACT:apps/web/src/app/contacts/[id]/page.tsx,VALIDATE:pnpm test --filter @intelliflow/web,120/240/480,2026-06-10,2026-06-10,100,,
IFC-257,Core CRM,"Contact Detail Action Button Wiring. 18 buttons without onClick handlers: Email (1133), Log Call (1139), Log Activity submit (1426), Add Deal (1872), Create Ticket (1917), Upload (1958), Add Note (2007, 2214), View Map (1341), Play Recording (969), Download (1039), Reply/React/Add Note/Share activity actions (1076-1099), toolbar buttons (1410/1415/1420). Zero useMutation calls on entire page (F-04, F-05, F-06, F-23). Need: add logActivity mutation, wire compose/call to existing components, wire action buttons. Audit: docs/audit/contact-detail-wiring-audit.md §11,§16.",Frontend Dev (STOA-Quality),,FILE:docs/audit/contact-detail-wiring-audit.md,Log Activity wired to mutation; Email opens EmailCompose sheet; Add Note wired to addNote mutation; Add Deal navigates to deals/new; activity action buttons functional or removed; tests >=90%,In Progress,>=12 buttons wired to real actions; >=2 useMutation calls on page,18,ARTIFACT:apps/web/src/app/contacts/[id]/page.tsx,VALIDATE:pnpm test --filter @intelliflow/web,240/480/960,2026-06-13,2026-06-13,80,,
IFC-258,Core CRM,"Contact Frontend Consistency — Avatars, Owner Title, Confidence. (1) Default avatars are Unsplash stranger photos — replace with initials-based generated avatar (F-09). (2) Owner title hardcoded 'Account Executive' — map from owner.role like lead detail (F-16). (3) Confidence hardcoded 0.85 for churnRisk and nextBestAction — use API data (F-17). (4) quietPeriodAlert always null (F-22). (5) ContactForm duplicated between create and edit (F-24). Audit: docs/audit/contact-detail-wiring-audit.md §16.",Frontend Dev (STOA-Quality),,FILE:docs/audit/contact-detail-wiring-audit.md,Avatar uses initials fallback; owner title from role; confidence from API; shared ContactForm component; tests >=90%,Backlog,Zero hardcoded fallback values in contact detail,20,ARTIFACT:apps/web/src/app/contacts/[id]/page.tsx;ARTIFACT:apps/web/src/components/contacts/ContactForm.tsx,VALIDATE:pnpm test --filter @intelliflow/web,120/240/480,,,0,,
IFC-259,Core CRM,"Contact Dead UI Fields & Unused Components. (1) location/timezone always empty (F-10). (2) isOnline/isVIP always false — dead badges (F-11). (3) tags always empty array (F-12). (4) ContactDetail.tsx component unused by page — 597 lines with tests but never imported (F-14). (5) ContactCard.tsx unused by list page (F-28). (6) emailsOpened always 0 (F-20). Decision needed: wire to real data, show placeholder states, or remove dead UI. Audit: docs/audit/contact-detail-wiring-audit.md §16.",Frontend Dev (STOA-Quality),,FILE:docs/audit/contact-detail-wiring-audit.md,Dead UI fields either wired to real data or removed with proper empty states; unused components either integrated or deleted; tests >=90%,Backlog,Zero dead UI fields rendering fake values,20,ARTIFACT:apps/web/src/app/contacts/[id]/page.tsx;ARTIFACT:apps/web/src/components/contacts/ContactDetail.tsx;ARTIFACT:apps/web/src/components/contacts/ContactCard.tsx,VALIDATE:pnpm test --filter @intelliflow/web,120/240/480,,,0,,
IFC-260,Core CRM,"Contact Domain Model Fixes. (1) reconstitute() silently substitutes unknown@unknown.com for invalid emails — should Result.fail or throw (D-01). (2) mergeContacts no cross-tenant check — linkToLead correctly checks but merge doesn't (D-02). (3) No ContactDeletedEvent — deleteContact publishes no events, audit handler has mapping but event never emitted (D-04). (4) No ContactEmailChangedEvent — old email not captured in generic ContactUpdatedEvent (D-05). (5) Tags update always emits event without deep equality check (D-07). Audit: docs/audit/contact-detail-wiring-audit.md §18.",Backend Dev (STOA-Domain),,FILE:docs/audit/contact-detail-wiring-audit.md,reconstitute throws on invalid email; mergeContacts checks tenantId; ContactDeletedEvent and ContactEmailChangedEvent added; tags uses deep equality; tests >=90%,Backlog,Domain model passes all invariant tests; zero silent data corruption,20,ARTIFACT:packages/domain/src/crm/contact/Contact.ts;ARTIFACT:packages/domain/src/crm/contact/ContactEvents.ts;ARTIFACT:packages/application/src/services/ContactService.ts,VALIDATE:pnpm test --filter @intelliflow/domain --filter @intelliflow/application,120/240/480,,,0,,
IFC-261,Core CRM,"Contact Event Pipeline — Worker Handlers + Event Types. (1) Zero contact event handlers in events worker (W-02). (2) Only 2/8 contact event types in DOMAIN_EVENT_TYPES — missing deleted, account_associated, account_disassociated, converted_from_lead, linked_to_lead, interacted (W-04). (3) No webhook routing for contact events (W-05). (4) No notifications for contact events (W-11). Cross-ref: W-01 (InMemoryEventBus) shared with IFC-250. Audit: docs/audit/contact-detail-wiring-audit.md §17.",Backend Dev (STOA-Domain),,FILE:docs/audit/contact-detail-wiring-audit.md,Events worker has handlers for all 8 contact event types; DOMAIN_EVENT_TYPES updated; webhook routing for contact events; notification handlers for key events; tests >=90%,Backlog,8/8 contact event types handled; webhook delivery <500ms,22,ARTIFACT:apps/workers/events-worker/src/main.ts;ARTIFACT:apps/workers/events-worker/src/outbox/event-dispatcher.ts,VALIDATE:pnpm test --filter @intelliflow/events-worker,120/240/480,,,0,,
IFC-262,Core CRM,Contact Merge & Duplicate Detection Wiring. (1) mergeContacts deletes secondary without re-parenting all child records — orphaned opportunities/tasks (W-03). (2) findPotentialDuplicates exists in service but no tRPC procedure exposes it (W-09). (3) mergeContacts exists but no router procedure wraps it (W-10). (4) mergeContacts no cross-tenant check between primary and secondary (W-12). (5) associateWithAccount inside mergeContacts causes double-save and potential double event emission (W-13). Audit: docs/audit/contact-detail-wiring-audit.md §17.,Backend Dev (STOA-Domain),,FILE:docs/audit/contact-detail-wiring-audit.md,Merge re-parents all child records before deleting secondary; tRPC procedures for findDuplicates and mergeContacts; cross-tenant check; no double-save; UI merge workflow; tests >=90%,Backlog,Zero orphaned records after merge; duplicate detection accuracy >80%,22,ARTIFACT:apps/api/src/modules/contact/contact.router.ts;ARTIFACT:packages/application/src/services/ContactService.ts,VALIDATE:pnpm test --filter @intelliflow/api --filter @intelliflow/application,240/480/960,,,0,,
IFC-263,Core CRM,Contact Email & AI Integration. (1) No email-to-contact matching — inbound emails not linked to contacts by sender address (W-06). (2) No automated AI insight triggering — contact create/update doesn't trigger scoring like lead does (W-07). (3) No contact routing rules — leads have routing but contacts don't (W-14). Audit: docs/audit/contact-detail-wiring-audit.md §17.,Backend Dev (STOA-Domain),,FILE:docs/audit/contact-detail-wiring-audit.md,Inbound emails matched to contacts by sender address; contact mutations trigger AI scoring; basic contact routing rules; tests >=90%,Backlog,Email-contact match rate >90%; AI scoring triggered on create/update,22,ARTIFACT:apps/api/src/modules/contact/contact.router.ts;ARTIFACT:apps/api/src/modules/email/inbound.router.ts,VALIDATE:pnpm test --filter @intelliflow/api,120/240/480,,,0,,
IFC-264,Core CRM,Contact Bulk Import & Service Layer Fixes. (1) No CSV upload or bulk create for contacts (W-08). (2) listContacts service returns empty array as default when no ownerId/accountId — latent bug for future callers (W-15). (3) getContactStatistics returns empty for undefined ownerId (W-16). Audit: docs/audit/contact-detail-wiring-audit.md §17.,Backend Dev (STOA-Domain),,FILE:docs/audit/contact-detail-wiring-audit.md,CSV import endpoint for contacts; listContacts supports findAll with pagination; getContactStatistics handles ADMIN role; tests >=90%,Backlog,Bulk import handles >=1000 contacts; <5s for 500 row CSV,24,ARTIFACT:apps/api/src/modules/contact/contact.router.ts;ARTIFACT:packages/application/src/services/ContactService.ts,VALIDATE:pnpm test --filter @intelliflow/api,120/240/480,,,0,,
IFC-265,Core CRM,"Contact Detail Page Tests. (1) Contact detail page (2242 lines) has ZERO page-level tests (T-01). (2) Tenant isolation NEVER tested in 2878 lines of router tests (T-04). (3) logActivity missing activity type coverage in tests (T-06). (4) getById relations (activities, notes, opportunities, aiInsight) not asserted (T-07). (5) Tab content rendering not verified in component tests (T-08). Audit: docs/audit/contact-detail-wiring-audit.md §19.",Frontend Dev (STOA-Quality),,FILE:docs/audit/contact-detail-wiring-audit.md,Contact detail page test file with >=20 tests; router tests for tenant isolation; logActivity type coverage; getById relation assertions; tab content verification; coverage >=90%,Backlog,Contact detail page test coverage >=90%,18,ARTIFACT:apps/web/src/app/contacts/[id]/__tests__/page.test.tsx;ARTIFACT:apps/api/src/modules/contact/__tests__/contact.router.tenant.test.ts,VALIDATE:pnpm test --filter @intelliflow/web --filter @intelliflow/api,240/480/960,,,0,,
IFC-266,Core CRM,"Contact List/Create Page Tests + E2E. (1) Contact list page has ZERO page tests (T-02). (2) Contact create page has ZERO page tests — auth guard gap F-07 would be caught (T-03). (3) Bulk selection (select all, bulk email, bulk export) untested (T-05). (4) Contract tests missing for bulkEmail, bulkExport, bulkDelete (T-09). (5) No E2E Playwright tests for contact CRUD flow (T-10). Audit: docs/audit/contact-detail-wiring-audit.md §19.",Frontend Dev (STOA-Quality),,FILE:docs/audit/contact-detail-wiring-audit.md,List page test file with >=10 tests; create page test file with auth guard test; bulk operation tests; contract tests for bulk procedures; E2E create-view-edit-delete flow; coverage >=90%,Backlog,Contact page test coverage >=90%; E2E CRUD flow passing,18,ARTIFACT:apps/web/src/app/contacts/(list)/__tests__/page.test.tsx;ARTIFACT:tests/e2e/contact-crud.spec.ts,VALIDATE:pnpm test --filter @intelliflow/web && npx playwright test,240/480/960,,,0,,
IFC-267,Core CRM,"Account Detail No-Op Action Buttons. Wire 6 non-functional buttons: (1) Create Deal button no onClick (F-05, AccountDetail.tsx:229). (2) Add Contact button no onClick in overview (F-06, AccountDetail.tsx:233). (3-4) Add Contact buttons no onClick in contacts tab header and empty state (F-07/F-08, AccountContactsList.tsx:61,85). (5-6) Create Opportunity buttons no onClick in opportunities tab header and empty state (F-10/F-11, AccountOpportunitiesList.tsx:68,116). Each button should open the appropriate create form or association dialog with accountId pre-filled. Audit: docs/audit/account-detail-wiring-audit.md sections 3-5.",Frontend Dev (STOA-Quality),,FILE:docs/audit/account-detail-wiring-audit.md,All 6 buttons navigate to create form or open association dialog with accountId pre-filled; Create Deal opens deal create with account pre-selected; Add Contact opens contact association or create sheet; Create Opportunity opens opportunity create with account; tests >=90%,Completed,6/6 buttons functional; create forms pre-fill accountId; ContactAddSheet 100/97/100/100% coverage; OpportunityCreateSheet 100/93/100/100% coverage; 109 tests passing,16,ARTIFACT:apps/web/src/components/accounts/AccountDetail.tsx;ARTIFACT:apps/web/src/components/accounts/AccountContactsList.tsx;ARTIFACT:apps/web/src/components/accounts/AccountOpportunitiesList.tsx;ARTIFACT:apps/web/src/components/accounts/OpportunityCreateSheet.tsx;ARTIFACT:apps/web/src/components/accounts/ContactAddSheet.tsx;EVIDENCE:.specify/sprints/sprint-16/attestations/IFC-267/attestation.json,VALIDATE:pnpm test --filter @intelliflow/web,60/120/240,2026-03-12,2026-03-12,100,,
IFC-268,Core CRM,Account Owner Display & Assignment. (1) Owner card shows literal 'Owner Assigned' and 'Account Manager' text instead of actual owner name/title — ownerId exists but owner relation not included in getById (F-01). (2) No owner assignment UI or mutation (F-02). Fix: include owner relation in getById query; display real owner name and role; add owner assignment combobox or dialog with user search mutation. Audit: docs/audit/account-detail-wiring-audit.md section 2.,Frontend Dev (STOA-Quality),,FILE:docs/audit/account-detail-wiring-audit.md;SPEC:.specify/sprints/sprint-16/specifications/IFC-268-spec.md;PLAN:.specify/sprints/sprint-16/planning/IFC-268-plan.md,Owner card displays real owner name and role from API; owner assignment UI with user search; account.update supports ownerId change; tests >=90%,Completed,Owner name renders from API data; 144 tests passing (39 domain + 76 backend + 29 frontend); 0 lint errors,16,ARTIFACT:apps/web/src/components/accounts/AccountDetail.tsx;ARTIFACT:apps/api/src/modules/account/account.router.ts;EVIDENCE:.specify/sprints/sprint-16/attestations/IFC-268/attestation.json,VALIDATE:pnpm test --filter @intelliflow/web --filter @intelliflow/api,120/240/480,2026-03-18,2026-03-19,100,,
IFC-269,Core CRM,"Account Backend Tenant Isolation & Security. (1) CRITICAL: filterOptions uses raw ctx.prisma instead of prismaWithTenant for user lookup — tenant data leak (B-01, account.router.ts:445). (2) PrismaAccountRepository has NO tenantId filter on any method — single-layer defense (B-02). (3) existsByName blocks same name across all tenants — should be per-tenant (B-03). (4) sortBy parameter unsanitized — potential Prisma orderBy injection (B-04). (5) TOCTOU window in update/delete without transaction (B-05). (6) Zero audit logging on all account mutations (B-07). Audit: docs/audit/account-detail-wiring-audit.md sections 11-12.",Backend Dev (STOA-Domain),,FILE:docs/audit/account-detail-wiring-audit.md,filterOptions uses prismaWithTenant; repository methods include tenantId filter; existsByName scoped per-tenant; sortBy validated against allowlist; update/delete wrapped in transaction; auditLogger.log on create/update/delete/setParent; tests >=90%,Completed,Zero cross-tenant data leaks; audit log entries for all mutations,16,ARTIFACT:apps/api/src/modules/account/account.router.ts;ARTIFACT:packages/adapters/src/repositories/PrismaAccountRepository.ts,VALIDATE:pnpm test --filter @intelliflow/api --filter @intelliflow/adapters,120/240/480,2026-04-06,,100,,
IFC-270,Core CRM,Account Router Missing Procedures & Update Fix. (1) Update procedure silently drops revenue/employees/industry/parentAccountId fields accepted by schema (B-08). (2) accountListResponseSchema uses 'data' key but router returns 'accounts' — mismatch (B-09). (3) No updateRevenue procedure — domain Account.updateRevenue() unreachable via API (B-10). (4) No updateEmployeeCount procedure (B-11). (5) No categorizeIndustry procedure (B-12). (6) mapAccountToResponse returns raw WebsiteUrl value object instead of string (B-13). Audit: docs/audit/account-detail-wiring-audit.md section 12.,Backend Dev (STOA-Domain),,FILE:docs/audit/account-detail-wiring-audit.md,Update procedure passes all accepted fields to service; schema key matches router response; updateRevenue/updateEmployeeCount/categorizeIndustry procedures added; WebsiteUrl serialized to string; tests >=90%,Completed,All schema fields persist on update; 3 new procedures functional,18,ARTIFACT:apps/api/src/modules/account/account.router.ts;ARTIFACT:packages/validators/src/account.ts;ARTIFACT:packages/application/src/services/AccountService.ts,VALIDATE:pnpm test --filter @intelliflow/api --filter @intelliflow/validators,120/240/480,2026-06-12,2026-06-13,100,,
IFC-271,Core CRM,Account Domain Model Fixes. (1) No AccountDeletedEvent — deletions produce no domain event; audit handler has mapping but event never emitted (D-01). (2) Account.toJSON() omits tenantId (B-15). (3) updateAccountInfo return value (Result) discarded by service — silent validation failures (B-16). (4) user!.userId non-null assertion in router (B-06). Audit: docs/audit/account-detail-wiring-audit.md sections 11-13.,Backend Dev (STOA-Domain),,FILE:docs/audit/account-detail-wiring-audit.md,AccountDeletedEvent defined and emitted on delete; toJSON includes tenantId; updateAccountInfo Result checked and errors propagated; non-null assertion replaced with proper null check; tests >=90%,Backlog,Delete emits event; zero silent failures,18,ARTIFACT:packages/domain/src/crm/account/Account.ts;ARTIFACT:packages/domain/src/crm/account/AccountEvents.ts;ARTIFACT:packages/application/src/services/AccountService.ts,VALIDATE:pnpm test --filter @intelliflow/domain --filter @intelliflow/application,60/120/240,,,0,,
IFC-272,Core CRM,"Account Event Pipeline — Worker Handlers + Event Types. (1) Zero account event handlers in events worker (W-01). (2) Zero account event types in DOMAIN_EVENT_TYPES map (W-02). (3) Audit handler has 3 account event mappings (Created/Updated/Deleted) but events never reach it because worker has no handlers and dispatcher has no types (W-03). Add event handlers for AccountCreated, AccountUpdated, AccountDeleted (requires IFC-271), AccountRevenueUpdated, AccountHierarchyUpdated, AccountIndustryCategorized to events worker. Register all types in DOMAIN_EVENT_TYPES. Cross-ref: W-01/W-02 pattern shared with Contact (IFC-261). Audit: docs/audit/account-detail-wiring-audit.md section 14.",Backend Dev (STOA-Domain),IFC-271:FS,FILE:docs/audit/account-detail-wiring-audit.md,Events worker has handlers for all 6 account event types; DOMAIN_EVENT_TYPES updated; audit handler receives events; tests >=90%,Backlog,6/6 event types handled; audit trail populated for account mutations,22,ARTIFACT:apps/workers/events-worker/src/main.ts;ARTIFACT:apps/workers/events-worker/src/outbox/event-dispatcher.ts,VALIDATE:pnpm test --filter @intelliflow/events-worker,120/240/480,,,0,,
IFC-273,Core CRM,"Account List Page Type Safety & Filter Enums. (1) serverStats cast to any loses type safety (L-01, AccountsPageClient.tsx:154). (2) Double unsafe cast for withOpportunities stat (L-02, AccountsPageClient.tsx:206-208). (3) AccountTier type and getAccountTier() duplicated locally in AccountCard.tsx instead of using domain enum (L-04). (4) Contact status filter uses hardcoded inline option values instead of ContactStatus domain enum (F-09, AccountContactsList.tsx:81-83). (5) Opportunity stage filter uses hardcoded inline strings instead of OpportunityStage domain enum (F-12, AccountOpportunitiesList.tsx:109-114). Audit: docs/audit/account-detail-wiring-audit.md sections 4-5, 15.",Frontend Dev (STOA-Quality),,FILE:docs/audit/account-detail-wiring-audit.md,Stats query properly typed without any cast; AccountTier uses domain enum; filter dropdowns derive options from domain enums; tests >=90%,Backlog,Zero any casts in account pages; filter options from domain enums,18,ARTIFACT:apps/web/src/app/accounts/(list)/AccountsPageClient.tsx;ARTIFACT:apps/web/src/components/accounts/AccountCard.tsx;ARTIFACT:apps/web/src/components/accounts/AccountContactsList.tsx;ARTIFACT:apps/web/src/components/accounts/AccountOpportunitiesList.tsx,VALIDATE:pnpm test --filter @intelliflow/web,60/120/240,,,0,,
IFC-274,Core CRM,Account Activity Timeline — Replace Stub Data. AccountService.getAccountActivity() (lines 748-785) returns synthetic/stub activities with hardcoded descriptions and broken cursor pagination — not real Activity model records (F-13). Replace with real activity feed from ActivityFeed component or Activity model queries. Should use same pattern as Lead/Contact activity tabs. Audit: docs/audit/account-detail-wiring-audit.md section 6.,Backend Dev (STOA-Domain),,FILE:docs/audit/account-detail-wiring-audit.md,Account activity tab shows real Activity model records; pagination works correctly; no synthetic data; matches Lead/Contact activity pattern; tests >=90%,Backlog,Real activity records displayed; pagination cursor works; <500ms query time,20,ARTIFACT:apps/api/src/modules/account/account.router.ts;ARTIFACT:packages/application/src/services/AccountService.ts;ARTIFACT:apps/web/src/components/accounts/AccountDetail.tsx,VALIDATE:pnpm test --filter @intelliflow/api --filter @intelliflow/web,120/240/480,,,0,,
IFC-275,Core CRM,Account Create & Edit Forms. (1) No account create form page — router has create procedure but no frontend consumer (F-16). Create page at accounts/(list)/new/page.tsx with form for all account fields. (2) No account edit form — Edit button navigates but lands on 404 (F-17). Create edit form page or inline edit mode using router update procedure. Both forms should validate with accountSchema. Audit: docs/audit/account-detail-wiring-audit.md section 10.,Frontend Dev (STOA-Quality),IFC-270:FS,FILE:docs/audit/account-detail-wiring-audit.md,Account create form page at accounts/(list)/new/page.tsx; edit form accessible from detail page; both forms validate and submit via tRPC mutations; success navigation and error handling; auth guard on both pages; tests >=90%,Backlog,Create and edit forms submit successfully; validation errors displayed,20,ARTIFACT:apps/web/src/app/accounts/(list)/new/page.tsx;ARTIFACT:apps/web/src/components/accounts/AccountForm.tsx,VALIDATE:pnpm test --filter @intelliflow/web,120/240/480,,,0,,
IFC-276,Core CRM,Account Contract Test + Test Gaps. (1) Accounts is the ONLY entity without a contract test file (T-01). (2) No-op buttons untested — 6 CRITICAL no-op buttons have no click behavior tests (T-02). (3) Tenant isolation untested in router tests (T-03). (4) No E2E Playwright tests for account CRUD flow (T-04). (5) Owner display untested — tests don't verify owner name/title rendering (T-05). Audit: docs/audit/account-detail-wiring-audit.md section 19.,Frontend Dev (STOA-Quality),IFC-267:FS;IFC-268:FS,FILE:docs/audit/account-detail-wiring-audit.md,Account contract test file created; button click tests verify navigation/dialog; router tests verify tenant isolation; E2E create-view-edit-delete flow; owner rendering tests; coverage >=90%,Backlog,Contract test passing; E2E CRUD flow passing; >=90% coverage,20,ARTIFACT:apps/api/src/__tests__/contract/account.contract.test.ts;ARTIFACT:apps/web/src/components/accounts/__tests__/AccountDetail.buttons.test.tsx;ARTIFACT:tests/e2e/account-crud.spec.ts,VALIDATE:pnpm test --filter @intelliflow/api --filter @intelliflow/web && npx playwright test,240/480/960,,,0,,
IFC-277,Core CRM,"Account Service Dead Code & Minor Fixes. (1) calculateAccountHealth() unreachable from router — decide: wire (D-02). (2) getAccountWithContext() unreachable from router — decide: wire (D-03). (3) Revenue NaN risk — Number(revenue) on non-numeric string renders '$NaNM' (F-14). (4) Health bar arbitrary scale — no documented max value (F-15). (5) Contact firstName[0] undefined risk in AccountContactsList (F-18). (6) findAncestors N+1 query pattern (B-14). (7) Merge/Archive toast stubs referencing IFC-044 (F-03/F-04). Audit: docs/audit/account-detail-wiring-audit.md sections 9, 13, 16-17.",Backend Dev (STOA-Domain),,FILE:docs/audit/account-detail-wiring-audit.md,Dead code either wired to router procedures or removed; revenue NaN guarded with fallback; health bar has documented max; firstName fallback for empty string; findAncestors uses recursive CTE; tests >=90%,Backlog,Zero dead code methods; zero NaN renders; hierarchy query O(1),24,ARTIFACT:packages/application/src/services/AccountService.ts;ARTIFACT:apps/web/src/components/accounts/AccountDetail.tsx;ARTIFACT:packages/adapters/src/repositories/PrismaAccountRepository.ts,VALIDATE:pnpm test --filter @intelliflow/application --filter @intelliflow/web --filter @intelliflow/adapters,120/240/480,,,0,,
IFC-278,Core CRM,"Deal Detail Page — Replace SAMPLE_DEAL with Real API Data. CRITICAL: Entire deal detail page (deals/[id]/page.tsx 792 lines) is 100% hardcoded with SAMPLE_DEAL constant (lines 116-150) — zero API calls. The dealId from useParams() is captured but never used for data fetch (line 684). Must: (1) Replace SAMPLE_DEAL with trpc.opportunity.getById query using dealId param. (2) Add useRequireAuth() guard (F-03 — detail page is the only unguarded page). (3) Fix STAGES constant to match domain 7-stage enum (F-04 — uses CLOSED instead of CLOSED_WON/CLOSED_LOST, omits NEEDS_ANALYSIS). (4) Fix StageProgress to use deal prop instead of SAMPLE_DEAL.value directly (F-05). (5) Remove _SAMPLE_ACTIVITIES dead code (F-06). (6) Add clickable links to account/contact detail pages (F-07). (7) Wire real owner data from getById relation include. Router getById exists (IFC-186). Cross-entity patterns from Lead 360 wiring (2026-03-04) should be followed. Audit: docs/audit/deal-detail-wiring-audit.md section 1.",Frontend Dev (STOA-Quality),,FILE:docs/audit/deal-detail-wiring-audit.md;SPEC:.specify/sprints/sprint-16/specifications/IFC-278-spec.md,Deal detail loads real API data via trpc.opportunity.getById; auth guard present; STAGES matches domain enum; StageProgress uses deal prop; dead code removed; account/contact linked; owner from API; loading/error states; tests >=90%,Completed,Zero SAMPLE_DEAL references; all fields from API; auth guard present,16,ARTIFACT:apps/web/src/app/deals/[id]/page.tsx;PLAN:.specify/sprints/sprint-16/planning/IFC-278-plan.md;EVIDENCE:.specify/sprints/sprint-16/attestations/IFC-278/attestation.json,VALIDATE:pnpm test --filter @intelliflow/web,240/480/960,2026-03-17,2026-03-18,100,,
IFC-279,Core CRM,"Deal Create Form + /deals/new Route. No deal creation form exists — both 'New Deal' buttons (deals/(list)/page.tsx lines 454 and 492) link to /deals/new which is a 404 (F-02). Must: (1) Create page at apps/web/src/app/deals/new/page.tsx or deals/(list)/new/page.tsx. (2) Form fields: name, value (money input), stage (default PROSPECTING), probability, expectedCloseDate (date picker), accountId (account search combobox), contactId (contact search combobox). (3) Wire to trpc.opportunity.create mutation. (4) Add useRequireAuth(). (5) Validate with createOpportunitySchema. (6) Success: navigate to /deals/[newId]. Audit: docs/audit/deal-detail-wiring-audit.md section 1 F-02.",Frontend Dev (STOA-Quality),,FILE:docs/audit/deal-detail-wiring-audit.md,Deal create form page exists; all fields validated; submits via trpc.opportunity.create; success navigates to deal detail; auth guard present; error handling; tests >=90%,Completed,Create form submits successfully; validation errors displayed,16,ARTIFACT:apps/web/src/app/deals/(list)/new/page.tsx;ARTIFACT:apps/web/src/components/deals/DealForm.tsx;SPEC:.specify/sprints/sprint-16/specifications/IFC-279-spec.md;PLAN:.specify/sprints/sprint-16/planning/IFC-279-plan.md;EVIDENCE:.specify/sprints/sprint-16/attestations/IFC-279/attestation.json,VALIDATE:pnpm test --filter @intelliflow/web,120/240/480,2026-03-17,2026-03-17,100,,
IFC-280,Core CRM,Deal Detail Action Buttons — Wire 14 No-Ops. (1) EntityHeader 6 no-ops all with onClick: () => {} (F-08): Won → moveStage CLOSED_WON with success dialog; Lost → moveStage CLOSED_LOST with LossReasonModal (reuse from list page); Edit → navigate to edit form or open inline edit; Clone → duplicate mutation; Archive → set archived status; Delete → AlertDialog confirmation + delete mutation. (2) Stakeholder/Product/File 8 no-ops (F-09): Edit stakeholders → open edit dialog; Account icons → navigate to /accounts/[id] and website; Contact icons → mailto: and tel: links; Add Product → product association dialog; File upload → upload mutation; File links → presigned URL download. Depends on IFC-278 (real data needed for mutations). Audit: docs/audit/deal-detail-wiring-audit.md section 2.,Frontend Dev (STOA-Quality),IFC-278:FS,FILE:docs/audit/deal-detail-wiring-audit.md,Won/Lost buttons trigger moveStage mutations with confirmation; Edit navigates to edit; Clone/Archive/Delete functional with confirmations; stakeholder/product/file buttons all wired; tests >=90%,Backlog,14/14 buttons functional; confirmation dialogs for destructive actions,18,ARTIFACT:apps/web/src/app/deals/[id]/page.tsx,VALIDATE:pnpm test --filter @intelliflow/web,240/480/960,,,0,,
IFC-281,Core CRM,Deal Backend Tenant Isolation & Audit Logging. (1) CRITICAL: PrismaOpportunityRepository.findById() (line 82) has NO tenantId WHERE clause — cross-tenant read/write/delete possible via getById/update/delete/moveStage/dealForecast (B-01). Fix: add tenantId to findById() and findByOwnerId() WHERE clauses. (2) CRITICAL: Zero auditLogger.log() calls across all 16 opportunity + pipeline-config procedures (B-02). Add audit logging to create/update/delete/moveStage (especially CLOSED_WON/CLOSED_LOST) and pipeline config changes. (3) Create notification in create procedure uses raw ctx.prisma instead of prismaWithTenant (B-03). Audit: docs/audit/deal-detail-wiring-audit.md sections 5-6.,Backend Dev (STOA-Domain),,FILE:docs/audit/deal-detail-wiring-audit.md,Repository findById/findByOwnerId include tenantId; auditLogger.log on all mutations; notification uses prismaWithTenant; cross-tenant access tests; tests >=90%,Completed,Zero cross-tenant data leaks; audit entries for all 16 procedures,16,ARTIFACT:packages/adapters/src/repositories/PrismaOpportunityRepository.ts;ARTIFACT:apps/api/src/modules/opportunity/opportunity.router.ts;ARTIFACT:apps/api/src/modules/opportunity/pipeline-config.router.ts,VALIDATE:pnpm test --filter @intelliflow/api --filter @intelliflow/adapters,120/240/480,2026-03-18,,100,,SPEC:.specify/sprints/sprint-16/specifications/IFC-281-spec.md;PLAN:.specify/sprints/sprint-16/planning/IFC-281-plan.md
IFC-282,Core CRM,"Deal Router Correctness Fixes. (1) Name updates silently dropped — service has TODO 'Add updateName method' (B-04, OpportunityService.ts:313). Add updateName to domain and wire in service. (2) data.probability?.value unwrapping may be undefined if percentageSchema returns plain number (B-05, router:460). Verify and fix. (3) opportunityListResponseSchema key 'data' vs router key 'opportunities' mismatch (B-07, validators:88 vs router:437). (4) throwOpportunityCreateError maps VALIDATION_ERROR to NOT_FOUND — wrong HTTP semantic (B-09, router:55). (5) validateStageDeactivation throws plain Error → 500 instead of BAD_REQUEST (B-10, validators:214). (6) mapOpportunityToResponse drops closedAt field (B-11, mappers.ts:88-108). (7) CLOSED_LOST no-reason passes Zod but fails at service (B-12, router:322). Audit: docs/audit/deal-detail-wiring-audit.md section 6.",Backend Dev (STOA-Domain),,FILE:docs/audit/deal-detail-wiring-audit.md,Name updates persisted; probability correctly unwrapped; schema key matches router; VALIDATION_ERROR → BAD_REQUEST; validateStageDeactivation throws TRPCError; closedAt included in response; CLOSED_LOST reason properly validated; tests >=90%,Plan Complete,All 7 correctness issues resolved; zero silent data drops,18,ARTIFACT:apps/api/src/modules/opportunity/opportunity.router.ts;ARTIFACT:packages/validators/src/opportunity.ts;ARTIFACT:packages/domain/src/crm/opportunity/Opportunity.ts;ARTIFACT:apps/api/src/shared/mappers.ts,VALIDATE:pnpm test --filter @intelliflow/api --filter @intelliflow/validators --filter @intelliflow/domain,120/240/480,2026-06-13,2026-06-13,50,,
IFC-283,Core CRM,"Deal Event Pipeline — Worker Handlers. (1) Only opportunity.won has a handler in events worker; opportunity.created, opportunity.stage_changed, and opportunity.lost are defined in DOMAIN_EVENT_TYPES but have NO registered handlers (W-01). (2) No OpportunityDescriptionUpdatedEvent defined — description changes emit no event (W-02). Add handlers for the 3 missing event types. Add OpportunityDescriptionUpdatedEvent to domain. Cross-ref: same pattern as Account (IFC-272) and Contact (IFC-261). Audit: docs/audit/deal-detail-wiring-audit.md section 7.",Backend Dev (STOA-Domain),,FILE:docs/audit/deal-detail-wiring-audit.md,Events worker has handlers for opportunity.created/stage_changed/lost; OpportunityDescriptionUpdatedEvent added to domain; all 5 event types handled; tests >=90%,Backlog,5/5 opportunity event types handled in worker,22,ARTIFACT:apps/workers/events-worker/src/main.ts;ARTIFACT:packages/domain/src/crm/opportunity/OpportunityEvents.ts,VALIDATE:pnpm test --filter @intelliflow/events-worker --filter @intelliflow/domain,120/240/480,,,0,,
IFC-284,Core CRM,"Deal Forecast Algorithm Fixes. (1) buildWinRateTrend hardcodes months ['May','Jun','Jul','Aug','Sep','Oct'] regardless of current date — semantically incorrect data (B-06, forecast-algorithm.ts:283). Fix to derive from actual 6-month window. (2) DEFAULT_STAGE_PROBABILITIES diverge: validators has NEEDS_ANALYSIS=30/PROPOSAL=70 while domain/service/router/forecast-algorithm uses 40/60 (B-08). Unify to single source of truth. (3) buildMonthlyRevenue uses locale-dependent toLocaleString for month names — breaks on non-en-US servers (B-15, forecast-algorithm.ts:269). (4) Forecast trend values hardcoded as 12 and 5 in forecast page (F-16, deals/forecast/page.tsx:709-710). Compute from API data. Audit: docs/audit/deal-detail-wiring-audit.md sections 4, 6.",Backend Dev (STOA-Domain),,FILE:docs/audit/deal-detail-wiring-audit.md,Win rate trend months derived from current date; stage probabilities unified to single source; month names locale-independent; forecast trends computed from data; tests >=90%,Backlog,Win rate trend matches actual date window; single probability source,20,ARTIFACT:apps/api/src/shared/forecast-algorithm.ts;ARTIFACT:packages/validators/src/opportunity.ts;ARTIFACT:apps/web/src/app/deals/forecast/page.tsx,VALIDATE:pnpm test --filter @intelliflow/api --filter @intelliflow/validators --filter @intelliflow/web,120/240/480,,,0,,
IFC-285,Core CRM,"Deal Service Dead Code & Minor Fixes. (1) 11 dead service methods unreachable from router: listOpportunities, advanceStage, updateValue, updateProbability, updateExpectedCloseDate, reopenOpportunity, getPipelineForecast, getOpportunitiesClosingSoon, getHighValueOpportunities, getOpportunitiesByAccount, getOpportunitiesByContact, getWinRateStatistics (B-13). Decide: wire to router or remove. (2) toMoney/toPercentage silent zero fallback on DB corruption (B-14). (3) TOCTOU in stage transitions — no optimistic locking (B-16). (4) Event publish failure swallowed with console.error only (B-17). (5) DealQuickView is a 49-line stub not used anywhere (F-13). (6) RecommendedActions.onActionClick not wired at forecast page level (F-18). (7) Sidebar deals config settingsHref points to /settings/deals instead of /settings/pipeline (W-03). Audit: docs/audit/deal-detail-wiring-audit.md sections 6-7.",Backend Dev (STOA-Domain),,FILE:docs/audit/deal-detail-wiring-audit.md,Dead code either wired to router or removed; toMoney/toPercentage propagate errors; event publish has retry; DealQuickView wired or removed; sidebar settingsHref fixed; tests >=90%,Backlog,Zero dead code methods; zero silent error swallowing,24,ARTIFACT:packages/application/src/services/OpportunityService.ts;ARTIFACT:packages/adapters/src/repositories/PrismaOpportunityRepository.ts;ARTIFACT:apps/web/src/components/deals/DealQuickView.tsx;ARTIFACT:apps/web/src/components/sidebar/configs/deals.ts,VALIDATE:pnpm test --filter @intelliflow/application --filter @intelliflow/adapters --filter @intelliflow/web,120/240/480,,,0,,
IFC-286,Core CRM,"Deal Detail Page Tests + E2E. (1) Deal detail page (792 lines) has ZERO test coverage (T-01). (2) No E2E Playwright tests for /deals, /deals/[id], or /deals/forecast — only pipeline-settings has E2E (T-02). (3) No cross-tenant access attempt test in router tests (T-03). (4) Contract test missing NEEDS_ANALYSIS stage in test data (T-04). Depends on IFC-278 (real data) and IFC-280 (wired buttons). Audit: docs/audit/deal-detail-wiring-audit.md section 10.",Frontend Dev (STOA-Quality),IFC-278:FS;IFC-280:FS,FILE:docs/audit/deal-detail-wiring-audit.md,Deal detail page test file with >=20 tests; E2E create-view-edit-delete flow; router tests for cross-tenant access; contract test includes NEEDS_ANALYSIS; coverage >=90%,Backlog,Deal detail page test coverage >=90%; E2E CRUD flow passing,20,ARTIFACT:apps/web/src/app/deals/[id]/__tests__/page.test.tsx;ARTIFACT:tests/e2e/deal-crud.spec.ts;ARTIFACT:apps/api/src/__tests__/contract/opportunity.contract.test.ts,VALIDATE:pnpm test --filter @intelliflow/web --filter @intelliflow/api && npx playwright test,240/480/960,,,0,,
IFC-287,Core CRM,"Deal Filter Wiring & Type Safety. (1) DealFilters state (filters) captured in page but NEVER passed to trpc.opportunity.list.useQuery — ownerId and dateRange selections have no effect on kanban view data (F-10, deals/(list)/page.tsx:214,226). (2) 'More Filters' button has no onClick handler (F-11, DealFilters.tsx). (3) Owner filter only has 2 hardcoded options: 'All Deals' and 'My Deals' — no dynamic user list (F-12). (4) transformDeals uses loose Record<string,unknown> casting at API boundary instead of typed response (F-19, types.ts:102-119). Wire filters to API query params; add server-side owner filter with user list; type-safe API response handling. Audit: docs/audit/deal-detail-wiring-audit.md sections 3, 8.",Frontend Dev (STOA-Quality),,FILE:docs/audit/deal-detail-wiring-audit.md,DealFilters ownerId/dateRange passed to API query; More Filters opens filter panel; owner dropdown shows team members from API; transformDeals properly typed; tests >=90%,Backlog,Filter selections affect displayed data; owner list from API,18,ARTIFACT:apps/web/src/app/deals/(list)/page.tsx;ARTIFACT:apps/web/src/components/deals/DealFilters.tsx;ARTIFACT:apps/web/src/components/deals/types.ts,VALIDATE:pnpm test --filter @intelliflow/web,60/120/240,,,0,,
IFC-288,Core CRM,"Analytics Dashboard Endpoint Wiring. Wire 9 dead analytics router endpoints: exportConversionFunnel, exportMetrics, exportReport, getConversionFunnel, getLeadMetrics, getOverview, getSalesMetrics, getTimeSeriesData, leadStats. Backend built (ANALYTICS-001), zero web callers. Decision: wire to analytics dashboard UI (IFC-037) with charts/export buttons. Audit: artifacts/reports/dead-endpoints-audit.csv rows 20-28.",Frontend Dev (STOA-Quality),IFC-037:FS,FILE:artifacts/reports/dead-endpoints-audit.csv,All 9 analytics endpoints wired to dashboard UI with working charts/exports; zero dead endpoints in analytics router; tests >=90%,Backlog,9/9 analytics endpoints wired to UI,21,ARTIFACT:apps/api/src/modules/analytics/analytics.router.ts;ARTIFACT:apps/web/src/app/analytics/(list)/page.tsx,VALIDATE:pnpm test --filter @intelliflow/api --filter @intelliflow/web,120/240/480,,,0,,
IFC-289,Core CRM,"Agent/Conversation Router Frontend Wiring. 17 dead endpoints (13 conversation.* + 4 agent.*) with zero frontend callers. Frontend uses autoResponse/aiReview/aiMonitoring routers that query the same DB tables directly bypassing the canonical conversation router. Fix: wire all endpoints to proper frontend consumers — chat panel, agent-approvals, AI Search, admin dashboard — and refactor aiMonitoring to delegate to conversation router instead of duplicating DB queries. Audit: artifacts/reports/dead-endpoints-audit.csv rows 4-18.",Frontend Dev (STOA-Quality),IFC-139:FS;IFC-148:FS,FILE:artifacts/reports/dead-endpoints-audit.csv,All 17 endpoints wired to frontend callers; aiMonitoring delegates to conversation router (no duplicate Prisma queries); agent-approvals uses conversation.approveToolCall/escalate/getPendingApprovals; AI Search wires conversation.search; admin dashboard wires getAnalytics/archiveOld; zero dead endpoints in Knip; tests >=90%,Backlog,17/17 dead endpoints wired to frontend consumers,22,ARTIFACT:apps/api/src/modules/agent/conversation.router.ts;ARTIFACT:apps/api/src/modules/agent/agent.router.ts;ARTIFACT:apps/api/src/modules/ai-monitoring/ai-monitoring.router.ts;ARTIFACT:apps/web/src/app/agent-approvals/page.tsx;ARTIFACT:apps/web/src/components/ai-monitoring/AgentLogsViewer.tsx;ARTIFACT:apps/web/src/components/ai-intelligence/AISearchPage.tsx,VALIDATE:pnpm test --filter @intelliflow/api --filter @intelliflow/web,120/240/480,,,0,,
IFC-290,Core CRM,"Integrations Dashboard Endpoint Wiring. Wire 5 dead integrations router endpoints: getAllConnectorsHealth, getConnectorHealth, getConnectorsByType, getDashboardConfig, triggerSync. Backend built (IFC-003), zero web callers. Decision: build integrations settings page to consume these. Audit: artifacts/reports/dead-endpoints-audit.csv rows 61-65.",Frontend Dev (STOA-Quality),,FILE:artifacts/reports/dead-endpoints-audit.csv,All 5 integrations endpoints wired to dashboard UI; zero dead endpoints in integrations router; tests >=90%,Backlog,5/5 integrations endpoints wired to UI,23,ARTIFACT:apps/api/src/modules/integrations/integrations.router.ts,VALIDATE:pnpm test --filter @intelliflow/api --filter @intelliflow/web,120/240/480,,,0,,
IFC-291,Core CRM,"Feedback Submission UI Wiring. Wire 5 dead feedback router endpoints: checkRetraining, exportTrainingData, getForLead, submitCorrection, submitSimple. Backend built (IFC-068), zero web callers. Decision: add feedback UI to AI review workflow. Audit: artifacts/reports/dead-endpoints-audit.csv rows 55-60.",Frontend Dev (STOA-Quality),IFC-068:FS,FILE:artifacts/reports/dead-endpoints-audit.csv,All 5 feedback endpoints wired to feedback UI; zero dead endpoints in feedback router; tests >=90%,Backlog,5/5 feedback endpoints wired to UI,23,ARTIFACT:apps/api/src/modules/feedback/feedback.router.ts,VALIDATE:pnpm test --filter @intelliflow/api --filter @intelliflow/web,120/240/480,,,0,,
IFC-292,Core CRM,"Legal Document Management UI Wiring. Wire 6 dead legal router endpoints: appointments.findNextSlot, documents.grantAccess, documents.placeLegalHold, documents.releaseLegalHold, documents.revokeAccess, documents.submitForReview. Backend built (IFC-137, IFC-140, IFC-152), zero web callers. Decision: build legal management UIs to consume these. Audit: artifacts/reports/dead-endpoints-audit.csv rows 78-83.",Frontend Dev (STOA-Quality),IFC-140:FS;IFC-152:FS,FILE:artifacts/reports/dead-endpoints-audit.csv,All 6 legal endpoints wired to management UI; zero dead endpoints in legal router; tests >=90%,Backlog,6/6 legal endpoints wired to UI,24,ARTIFACT:apps/api/src/modules/legal/documents.router.ts;ARTIFACT:apps/api/src/modules/legal/appointments.router.ts,VALIDATE:pnpm test --filter @intelliflow/api --filter @intelliflow/web,120/240/480,,,0,,
IFC-293,Core CRM,"Security Admin + Notifications Settings Wiring. Wire 6 dead endpoints: security.audit.getByResource, security.audit.getMyActivity, security.audit.getSecurityEvents, notifications.batchAction, notifications.getPreferences, notifications.updatePreferences. Backend built (IFC-098, IFC-072, IFC-046, IFC-157), zero web callers. Decision: build admin security page + notification settings page (PG-116). Audit: artifacts/reports/dead-endpoints-audit.csv rows 93-95, 101-103.",Frontend Dev (STOA-Quality),IFC-157:FS,FILE:artifacts/reports/dead-endpoints-audit.csv,All 6 security/notification endpoints wired to admin pages; zero dead endpoints in security.audit and notifications routers; tests >=90%,Backlog,6/6 security+notification endpoints wired to UI,24,ARTIFACT:apps/api/src/security/audit/audit-logger.ts;ARTIFACT:apps/api/src/modules/notifications/notifications.router.ts,VALIDATE:pnpm test --filter @intelliflow/api --filter @intelliflow/web,120/240/480,,,0,,
IFC-294,Core CRM,"Experiment + Intelligence + AI Monitoring Wiring. Wire 7 dead endpoints: experiment.assignVariant, experiment.recordConversion, experiment.recordScore, intelligence.getInsightsSummary, intelligence.triggerPrediction, intelligence.updateContactInsights, ai-monitoring.getHallucinationReport. Backend built (IFC-025, IFC-095, IFC-117), zero web callers. Decision: wire to experiment dashboard (IFC-181) and AI monitoring page. Audit: artifacts/reports/dead-endpoints-audit.csv rows 19, 52-54, 66-69.",Frontend Dev (STOA-Quality),IFC-025:FS;IFC-095:FS,FILE:artifacts/reports/dead-endpoints-audit.csv,All 7 experiment/intelligence/AI-monitoring endpoints wired to dashboards; zero dead endpoints in these routers; tests >=90%,Backlog,7/7 experiment+intelligence+AI-monitoring endpoints wired to UI,25,ARTIFACT:apps/api/src/modules/intelligence/intelligence.router.ts,VALIDATE:pnpm test --filter @intelliflow/api --filter @intelliflow/web,120/240/480,,,0,,
IFC-295,Core CRM,"Billing/Auth/Subscription/Admin Miscellaneous Wiring. Wire 8 dead endpoints: billing.ensureCustomer, billing.getUsageMetrics, billing.updateBillingInformation, auth.getSessions, subscription.getPlans, subscription.toggleModule, autoresponse.submitForApproval, admin.queues.getByName. Backend built across IFC-006/IFC-014/IFC-028/IFC-099, zero web callers. admin.queues.getByName is completely phantom (no tests, no matrix entry) � needs queue inspector or admin tools UI. Audit: artifacts/reports/dead-endpoints-audit.csv rows 2, 29, 33-37, 104-105.",Frontend Dev (STOA-Quality),,FILE:artifacts/reports/dead-endpoints-audit.csv,All 8 miscellaneous endpoints wired to appropriate UI pages; zero dead endpoints in billing/auth/subscription/autoresponse/admin routers; tests >=90%,Backlog,8/8 misc endpoints wired to UI,25,ARTIFACT:apps/api/src/modules/billing/billing.router.ts;ARTIFACT:apps/api/src/modules/auth/auth.router.ts,VALIDATE:pnpm test --filter @intelliflow/api --filter @intelliflow/web,120/240/480,,,0,,
IFC-296,AI Foundation,"Queue Scheduler Administration — Implement queuesAdmin tRPC router with live BullMQ stats and scheduler CRUD (list/pause/resume/retry/delete), wire to /agent-approvals/agents page. Replace stub router with live Redis/BullMQ data. Add queue health panel to ActiveAgentsDashboard showing scheduler cron patterns, queue counts, and action buttons.",Backend Dev + Frontend Dev (STOA-Domain),"IFC-015,IFC-197,PG-151",FILE:apps/api/src/modules/admin/queues.router.ts;FILE:apps/web/src/components/ai-monitoring/ActiveAgentsDashboard.tsx;FILE:packages/platform/src/queues/queue-factory.ts;ENV:Redis running;ENV:BullMQ configured,"queuesAdmin router returns live queue stats from Redis; scheduler list/pause/resume/retry/delete endpoints functional; ActiveAgentsDashboard displays queue health panel with cron patterns and action buttons; stub router fully replaced; artifacts: queues.router.ts, QueueSchedulerPanel.tsx; targets: response <200ms, coverage >90%; verified by: pnpm test",Completed,"Coverage >90%, API response <200ms, All 3 queues visible, Scheduler CRUD functional",15,ARTIFACT:apps/api/src/modules/admin/queues.router.ts;ARTIFACT:apps/web/src/components/ai-monitoring/QueueSchedulerPanel.tsx;ARTIFACT:apps/web/src/lib/ai-monitoring/queue-scheduler-hooks.ts;EVIDENCE:.specify/sprints/sprint-15/attestations/IFC-296/attestation.json;SPEC:.specify/sprints/sprint-15/specifications/IFC-296-spec.md;PLAN:.specify/sprints/sprint-15/planning/IFC-296-plan.md;EVIDENCE:.specify/sprints/sprint-15/attestations/IFC-296/attestation.json,VALIDATE:pnpm typecheck;VALIDATE:pnpm test;VALIDATE:pnpm lint;VALIDATE:pnpm build,120/240/480,2026-03-08,2026-03-08,100,"IFC-015:FS,IFC-197:FS,PG-151:FS",
IFC-297,AI Foundation,"AI Monitoring Data Persistence — Replace in-memory singleton monitoring data (driftDetector, latencyMonitor, hallucinationChecker, roiTracker) with DB-backed persistence via new AIMonitoringEvent model. Add ai-worker flush service to write metrics to DB periodically. Rewrite monitoring router to query DB instead of in-process singletons. Enables multi-process deployments to share monitoring data.",Backend Dev (STOA-Domain),"IFC-015,IFC-025",FILE:apps/api/src/modules/ai-monitoring/ai-monitoring.router.ts;FILE:apps/ai-worker/src/monitoring/index.ts;FILE:packages/db/prisma/schema.prisma;ENV:PostgreSQL running,"AIMonitoringEvent Prisma model created with migration; ai-worker flushes metrics to DB every 60s; monitoring router queries DB; drift/latency/ROI dashboards show real data in multi-process mode; targets: flush latency <100ms, coverage >90%; verified by: pnpm test",Completed,"Coverage >90%, Flush latency <100ms, Multi-process data visible",16,ARTIFACT:packages/db/prisma/migrations/*_ai_monitoring_events;ARTIFACT:apps/ai-worker/src/monitoring/monitoring-flush.service.ts;ARTIFACT:apps/api/src/modules/ai-monitoring/ai-monitoring.router.ts,VALIDATE:pnpm typecheck;VALIDATE:pnpm test;VALIDATE:pnpm lint;VALIDATE:pnpm build,180/360/720,2026-03-15,2026-03-16,100,"IFC-015:FS,IFC-025:FS",
IFC-298,Support,HelpArticle Prisma Model + Migration,Backend Dev (STOA-Domain),PG-045,FILE:packages/db/prisma/schema.prisma;FILE:apps/web/src/lib/support/help-articles.ts;FILE:docs/planning/prd-support-help-center.md,"HelpArticle, ArticleSection, ArticleFeedback Prisma models; migration applied; fields match HelpArticle TS interface; status enum (draft/published); verified by: pnpm test",Completed,3 models + 1 enum + migration + 14 tests; all 4 validations pass,17,ARTIFACT:packages/db/prisma/schema.prisma;EVIDENCE:.specify/sprints/sprint-17/attestations/IFC-298/attestation.json;EVIDENCE:.specify/sprints/sprint-17/attestations/IFC-298/attestation.json;SPEC:.specify/sprints/sprint-17/specifications/IFC-298-spec.md;PLAN:.specify/sprints/sprint-17/planning/IFC-298-plan.md,VALIDATE:pnpm --filter @intelliflow/db typecheck;VALIDATE:pnpm test,60/120/240,2026-03-10,2026-03-10,100,PG-045:FS,
IFC-299,Support,Help Article CRUD tRPC Router,Backend Dev (STOA-Domain),IFC-298,FILE:packages/db/prisma/schema.prisma;FILE:apps/api/src/router.ts;FILE:docs/planning/prd-support-help-center.md,helpArticle tRPC router with list/getBySlug/getByCategory/getRelated/create/update/delete/publish/unpublish; tenant-scoped; coverage >=90%; verified by: pnpm test,Completed,"9 procedures, 49 tests, coverage 91%/80%/100%/95%",17,ARTIFACT:apps/api/src/modules/help-article/help-article.router.ts;ARTIFACT:packages/validators/src/help-article.ts;EVIDENCE:.specify/sprints/sprint-17/attestations/IFC-299/attestation.json;EVIDENCE:.specify/sprints/sprint-17/attestations/IFC-299/attestation.json;SPEC:.specify/sprints/sprint-17/specifications/IFC-299-spec.md;PLAN:.specify/sprints/sprint-17/planning/IFC-299-plan.md,VALIDATE:pnpm --filter @intelliflow/api typecheck;VALIDATE:pnpm test;GATE:coverage-gte-90,90/180/360,2026-03-18,2026-03-19,100,IFC-298:FS,
IFC-300,Support,Help Article Seed Script — Static to DB Migration,Backend Dev (STOA-Foundation),IFC-298,FILE:packages/db/prisma/schema.prisma;FILE:apps/web/src/lib/support/help-articles.ts,Seed script migrates DEFAULT_HELP_ARTICLES into DB; idempotent (skip existing slugs); validates data integrity post-seed; verified by: pnpm test,Completed,"17 articles seeded, idempotent re-run passes; coverage 100%/90%/100%/100%; 11 tests pass",17,ARTIFACT:packages/db/prisma/seed-help-articles.ts;ARTIFACT:packages/db/prisma/seed-help-articles.cli.ts;ARTIFACT:packages/db/prisma/data/help-articles.snapshot.json;EVIDENCE:.specify/sprints/sprint-17/attestations/IFC-300/attestation.json;EVIDENCE:.specify/sprints/sprint-17/attestations/IFC-300/attestation.json;SPEC:.specify/sprints/sprint-17/specifications/IFC-300-spec.md;PLAN:.specify/sprints/sprint-17/planning/IFC-300-plan.md,VALIDATE:pnpm --filter @intelliflow/db typecheck;VALIDATE:pnpm test,60/120/240,2026-04-13,2026-04-13,100,IFC-298:FS,2026-04-14
IFC-303,Support,Article Feedback tRPC Mutation,Backend Dev (STOA-Domain),IFC-298,FILE:packages/db/prisma/schema.prisma;FILE:apps/web/src/components/support/feedback-widget.tsx,helpArticle.submitFeedback mutation stores feedback in ArticleFeedback table; FeedbackWidget onFeedback wired to tRPC; analytics aggregation; coverage >=90%; verified by: pnpm test,Completed,Stmts 91.45% Branch 80.48% Funcs 100% Lines 95.45%; 59 router + 17 widget tests pass,17,ARTIFACT:apps/api/src/modules/help-article/help-article.router.ts;EVIDENCE:.specify/sprints/sprint-17/attestations/IFC-303/attestation.json;EVIDENCE:.specify/sprints/sprint-17/attestations/IFC-303/attestation.json;SPEC:.specify/sprints/sprint-17/specifications/IFC-303-spec.md;PLAN:.specify/sprints/sprint-17/planning/IFC-303-plan.md,VALIDATE:pnpm --filter @intelliflow/api typecheck;VALIDATE:pnpm test;GATE:coverage-gte-90,60/120/240,2026-03-18,2026-03-19,100,IFC-298:FS,
PG-180,Support Pages,Help Article Admin List Page,Support Eng (STOA-Domain),IFC-299,FILE:apps/api/src/modules/help-article/help-article.router.ts;FILE:docs/planning/prd-support-help-center.md;DESIGN:docs/design/README.md,"Response <200ms, Lighthouse >=90; admin page at /settings/help-center/articles with article list, status badges, category filters, search, CRUD actions; verified by: pnpm test",Completed,"Articles listed, filters working, CRUD actions functional; coverage 97.26/95.06/91.66/96.96 (S/B/F/L)",18,ARTIFACT:apps/web/src/app/settings/help-center/articles/page.tsx;ARTIFACT:apps/web/src/components/support/article-admin-list.tsx;EVIDENCE:.specify/sprints/sprint-18/attestations/PG-180/attestation.json;EVIDENCE:.specify/sprints/sprint-18/attestations/PG-180/attestation.json;SPEC:.specify/sprints/sprint-18/specifications/PG-180-spec.md;PLAN:.specify/sprints/sprint-18/planning/PG-180-plan.md,GATE:lighthouse-gte-90;VALIDATE:pnpm --filter @intelliflow/web typecheck;VALIDATE:pnpm --filter @intelliflow/web test --run,90/180/360,2026-04-19,2026-04-19,100,IFC-299:FS,
IFC-301,Infrastructure,Rich Text Editor Integration — Tiptap,Frontend Dev (STOA-Foundation),PG-180,FILE:packages/ui/src/index.ts;FILE:docs/planning/prd-support-help-center.md,Tiptap editor as reusable @intelliflow/ui component; headings/bold/italic/lists/links/images/code blocks; exports structured sections; coverage >=90%; verified by: pnpm test,Backlog,"Editor renders, all formatting works, structured output correct",18,ARTIFACT:packages/ui/src/components/rich-text-editor.tsx;ARTIFACT:packages/ui/src/components/__tests__/rich-text-editor.test.tsx;EVIDENCE:.specify/sprints/sprint-18/attestations/IFC-301/context_ack.json,VALIDATE:pnpm --filter @intelliflow/ui typecheck;VALIDATE:pnpm test;GATE:coverage-gte-90,120/240/480,,,0,PG-180:FS,
PG-181,Support Pages,Help Article Editor Page,Support Eng (STOA-Domain),"PG-180,IFC-301",FILE:apps/web/src/app/settings/help-center/articles/page.tsx;FILE:packages/ui/src/components/rich-text-editor.tsx;DESIGN:docs/design/README.md,"Response <200ms, Lighthouse >=90; editor at /settings/help-center/articles/[id]/edit and /new; Tiptap editor, metadata fields, preview, save draft, publish; verified by: pnpm test",Backlog,"Articles editable, preview works, draft/publish functional",18,ARTIFACT:apps/web/src/app/settings/help-center/articles/[id]/edit/page.tsx;ARTIFACT:apps/web/src/app/settings/help-center/articles/new/page.tsx;EVIDENCE:.specify/sprints/sprint-18/attestations/PG-181/context_ack.json,GATE:lighthouse-gte-90;VALIDATE:pnpm --filter @intelliflow/web typecheck;VALIDATE:pnpm --filter @intelliflow/web test --run,90/180/360,,,0,"PG-180:FS,IFC-301:FS",
IFC-302,Support,Refactor Help Article Page to Use Database,Support Eng (STOA-Domain),IFC-299,FILE:apps/web/src/app/help-center/[article]/page.tsx;FILE:apps/api/src/modules/help-article/help-article.router.ts,"Replace static DEFAULT_HELP_ARTICLES in [article]/page.tsx with tRPC queries; same UI, DB data source; static dependency removed; all tests passing; verified by: pnpm test",Backlog,"Page renders from DB, no static imports, tests passing",18,ARTIFACT:apps/web/src/app/help-center/[article]/page.tsx;EVIDENCE:.specify/sprints/sprint-18/attestations/IFC-302/context_ack.json,VALIDATE:pnpm --filter @intelliflow/web typecheck;VALIDATE:pnpm --filter @intelliflow/web test --run,60/120/240,,,0,IFC-299:FS,
IFC-304,Support,Article Analytics Dashboard,Support Eng (STOA-Domain),"IFC-303,PG-180",FILE:apps/api/src/modules/help-article/help-article.router.ts;FILE:apps/web/src/app/settings/help-center/articles/page.tsx,"Analytics in help article admin; views, feedback stats, most/least helpful, search terms; helpArticle.getAnalytics tRPC; coverage >=90%; verified by: pnpm test",Backlog,"Analytics render, data accurate, coverage >=90%",19,ARTIFACT:apps/web/src/components/support/article-analytics.tsx;ARTIFACT:apps/api/src/modules/help-article/help-article.router.ts;EVIDENCE:.specify/sprints/sprint-19/attestations/IFC-304/context_ack.json,VALIDATE:pnpm --filter @intelliflow/web typecheck;VALIDATE:pnpm test;GATE:coverage-gte-90,90/180/360,,,0,"IFC-303:FS,PG-180:FS",
PG-182,Settings,Module Settings - Contacts (/contacts/contact-settings),Frontend Dev (STOA-Foundation),PG-178,FILE:apps/web/src/components/sidebar/configs/contacts.ts;FILE:apps/web/src/components/contacts/ContactSettingsSidebarNav.tsx,"Contact settings page at /contacts/contact-settings with duplicate detection, required fields, tags config; uses in-module settings sidebar pattern; Lighthouse >=90; verified by: pnpm test",Completed,All form fields render and save; sidebar settings nav works; Lighthouse >=90,17,ARTIFACT:apps/web/src/app/contacts/(list)/contact-settings/page.tsx;SPEC:.specify/sprints/sprint-17/specifications/PG-182-spec.md;PLAN:.specify/sprints/sprint-17/planning/PG-182-plan.md;EVIDENCE:.specify/sprints/sprint-17/attestations/PG-182/attestation.json;EVIDENCE:.specify/sprints/sprint-17/attestations/PG-182/attestation.json,VALIDATE:pnpm test,120/240/480,2026-04-13,2026-04-15,100,PG-178:FS,
PG-183,Settings,Module Settings - Accounts (/accounts/account-settings),Frontend Dev (STOA-Foundation),PG-178,FILE:apps/web/src/components/sidebar/configs/accounts.ts;FILE:apps/web/src/components/accounts/AccountSettingsSidebarNav.tsx,"Account settings page at /accounts/account-settings with 8 sections: hierarchy, industry taxonomy, custom fields, duplicate detection, required fields, automation, AI & intelligence, tags; bento grid layout matching /contacts/contact-settings; uses in-module settings sidebar pattern; Lighthouse >=90; verified by: pnpm test",Completed,All form fields render and save; sidebar settings nav works; Lighthouse >=90,17,ARTIFACT:apps/web/src/app/accounts/(list)/account-settings/page.tsx,VALIDATE:pnpm test,120/240/480,2026-04-13,2026-04-15,100,PG-178:FS,SPEC:.specify/sprints/sprint-17/specifications/PG-183-spec.md;PLAN:.specify/sprints/sprint-17/planning/PG-183-plan.md;EVIDENCE:.specify/sprints/sprint-17/attestations/PG-183/attestation.json
PG-184,Settings,Module Settings - Deals (/deals/deal-settings),Frontend Dev (STOA-Foundation),"PG-178,PG-182,PG-183",FILE:apps/web/src/components/sidebar/configs/deals.ts;FILE:apps/web/src/components/deals/DealSettingsSidebarNav.tsx;FILE:docs/planning/module-settings-playbook.md;FILE:apps/web/src/app/accounts/(list)/account-settings/AccountSettingsContent.tsx;FILE:apps/api/src/modules/account/account-automation.ts;FILE:apps/api/src/modules/contact/contact-automation.ts,"Deal settings at /deals/deal-settings (pipeline stages, win-loss reasons, scoring). MUST follow docs/planning/module-settings-playbook.md: PageHeader+bento grid (NOT ModuleSettingsLayout); canonical EmptyState (entity + phase=passive); Add Rule button = <Button size='sm'>Add Rule</Button> right-aligned, no icon no outline; TagsTab via forwardRef+useImperativeHandle; wrap ALL destructive writes in $transaction; drop skipDuplicates; Zod superRefine for duplicate (field,strategy); colorToken CHECK constraint; AI defaults FALSE; wire every Boolean toggle in deal-automation.ts (mirror contact-automation.ts) OR declare each as category-2 follow-up under IFC-310/311/312; include cross-tenant negative test; Lighthouse >=90; verified by: pnpm test",Completed,All 4 validations pass; every toggle has runtime consumer or IFC-* follow-up; EmptyState uses project SVG; Add Rule button matches system design; cross-tenant negative test; Lighthouse >=90,17,ARTIFACT:apps/web/src/app/deals/deal-settings/page.tsx;ARTIFACT:apps/api/src/modules/opportunity/deal-settings.router.ts;ARTIFACT:apps/api/src/modules/opportunity/deal-automation.ts;ARTIFACT:packages/validators/src/deal-settings.ts,VALIDATE:pnpm typecheck;VALIDATE:pnpm test --run;VALIDATE:pnpm lint;VALIDATE:pnpm build;GATE:lighthouse-gte-90,180/360/540,2026-04-15,,100,"PG-178:FS,PG-182:FS,PG-183:FS",
PG-185,Settings,Module Settings - Tickets (/tickets/sla-policies),Frontend Dev (STOA-Foundation),"PG-178,PG-182,PG-183",FILE:apps/web/src/components/sidebar/configs/tickets.ts;FILE:apps/web/src/components/tickets/TicketSettingsSidebarNav.tsx;FILE:docs/planning/module-settings-playbook.md;FILE:apps/web/src/app/accounts/(list)/account-settings/AccountSettingsContent.tsx;FILE:apps/api/src/modules/account/account-automation.ts;FILE:apps/api/src/modules/contact/contact-automation.ts,"Ticket settings at /tickets/sla-policies (default SLA, auto-close, notification triggers). MUST follow docs/planning/module-settings-playbook.md: PageHeader+bento grid; canonical EmptyState (entity + phase=passive); Add Rule button system-compliant; TagsTab via forwardRef; $transaction on all destructive writes; no skipDuplicates; Zod superRefine for duplicate (field,strategy); colorToken CHECK constraint; AI defaults FALSE; wire every Boolean toggle in ticket-automation.ts (mirror contact-automation.ts) OR declare each as category-2 follow-up under IFC-310/311/312; include cross-tenant negative test; Lighthouse >=90; verified by: pnpm test",Completed,All 4 validations pass; every toggle has runtime consumer or IFC-* follow-up; EmptyState uses project SVG; Add Rule button matches system design; cross-tenant negative test; Lighthouse >=90,17,ARTIFACT:apps/web/src/app/tickets/(list)/sla-policies/page.tsx;ARTIFACT:apps/api/src/modules/ticket/ticket-settings.router.ts;ARTIFACT:apps/api/src/modules/ticket/ticket-automation.ts;ARTIFACT:packages/validators/src/ticket-settings.ts,VALIDATE:pnpm typecheck;VALIDATE:pnpm test --run;VALIDATE:pnpm lint;VALIDATE:pnpm build;GATE:lighthouse-gte-90,180/360/540,2026-04-15,2026-04-17,100,"PG-178:FS,PG-182:FS,PG-183:FS",
PG-186,Settings,Module Settings - Documents (/documents/document-settings),Frontend Dev (STOA-Foundation),"PG-178,PG-182,PG-183",FILE:apps/web/src/components/sidebar/configs/documents.ts;FILE:apps/web/src/components/documents/DocumentSettingsSidebarNav.tsx;FILE:docs/planning/module-settings-playbook.md;FILE:apps/web/src/app/accounts/(list)/account-settings/AccountSettingsContent.tsx;FILE:apps/api/src/modules/account/account-automation.ts;FILE:apps/api/src/modules/contact/contact-automation.ts,"Document settings at /documents/document-settings (file types, size limits, antivirus, retention). MUST follow docs/planning/module-settings-playbook.md: PageHeader+bento grid; canonical EmptyState (entity + phase=passive); Add Rule button system-compliant; TagsTab via forwardRef; $transaction on all destructive writes; no skipDuplicates; Zod superRefine for duplicate (field,strategy); colorToken CHECK constraint; AI defaults FALSE; wire every Boolean toggle in document-automation.ts (mirror contact-automation.ts) OR declare each as category-2 follow-up under IFC-310/311/312; include cross-tenant negative test; Lighthouse >=90; verified by: pnpm test",Completed,All 4 validations pass; every toggle has runtime consumer or IFC-* follow-up; EmptyState uses project SVG; Add Rule button matches system design; cross-tenant negative test; Lighthouse >=90,17,ARTIFACT:apps/web/src/app/documents/(list)/document-settings/page.tsx;ARTIFACT:apps/web/src/app/documents/(list)/document-settings/DocumentSettingsContent.tsx;ARTIFACT:apps/api/src/modules/legal/document-settings.router.ts;ARTIFACT:apps/api/src/modules/legal/document-automation.ts;ARTIFACT:packages/validators/src/document-settings.ts,VALIDATE:pnpm typecheck;VALIDATE:pnpm test --run;VALIDATE:pnpm lint;VALIDATE:pnpm build;GATE:lighthouse-gte-90,180/360/540,2026-04-15,2026-04-16,100,"PG-178:FS,PG-182:FS,PG-183:FS",
PG-187,Settings,Module Settings - Reports (/analytics/report-settings),Frontend Dev (STOA-Foundation),PG-178,FILE:apps/web/src/components/settings/ModuleSettingsLayout.tsx,"Report settings page at /analytics/report-settings with default range, currency, scheduled delivery config; uses in-module settings sidebar pattern; Lighthouse >=90; verified by: pnpm test",Completed,All form fields render and save; sidebar settings nav works; Lighthouse >=90,18,ARTIFACT:apps/web/src/app/analytics/(list)/report-settings/page.tsx,VALIDATE:pnpm test,120/240/480,2026-04-19,2026-04-19,100,PG-178:FS,
PG-188,Settings,Module Settings - Billing (/billing/settings),Frontend Dev (STOA-Foundation),PG-178,FILE:apps/web/src/components/settings/ModuleSettingsLayout.tsx,"Billing settings page at /billing/settings with billing address, tax ID, invoice contact config; uses in-module settings sidebar pattern; Lighthouse >=90; verified by: pnpm test",Backlog,All form fields render and save; sidebar settings nav works; Lighthouse >=90,18,ARTIFACT:apps/web/src/app/billing/settings/page.tsx,VALIDATE:pnpm test,120/240/480,,,0,PG-178:FS,
PG-189,Settings,Module Settings - Appointments (/calendar/calendar-settings),Frontend Dev (STOA-Foundation),PG-178,FILE:apps/web/src/components/sidebar/configs/appointments.ts;FILE:apps/web/src/components/calendar/CalendarSettingsSidebarNav.tsx,"Appointment settings page at /calendar/calendar-settings with duration, buffer, calendar integration config; uses in-module settings sidebar pattern; Lighthouse >=90; verified by: pnpm test",Completed,All form fields render and save; sidebar settings nav works; Lighthouse >=90,18,ARTIFACT:apps/web/src/app/calendar/calendar-settings/page.tsx;SPEC:.specify/sprints/sprint-18/specifications/PG-189-spec.md;PLAN:.specify/sprints/sprint-18/planning/PG-189-plan.md;EVIDENCE:.specify/sprints/sprint-18/attestations/PG-189/attestation.json;DELIVERY:.specify/sprints/sprint-18/execution/PG-189/exec-20260419T144000Z/PG-189-delivery.md,VALIDATE:pnpm test,120/240/480,2026-04-19,2026-04-19,100,PG-178:FS,
PG-190,Settings,Module Settings - Cases (/cases/case-settings),Frontend Dev (STOA-Foundation),PG-178,FILE:apps/web/src/components/sidebar/configs/cases.ts;FILE:apps/web/src/components/cases/CaseSettingsSidebarNav.tsx,"Case settings page at /cases/case-settings with case prefix, default priority, auto-assign config; uses in-module settings sidebar pattern; Lighthouse >=90; verified by: pnpm test",Completed,All form fields render and save; sidebar settings nav works; Lighthouse >=90,18,ARTIFACT:apps/web/src/app/cases/(list)/case-settings/page.tsx;ARTIFACT:apps/web/src/app/cases/(list)/case-settings/CaseSettingsContent.tsx;ARTIFACT:apps/web/src/app/cases/(list)/case-settings/CaseSettingsLoading.tsx;ARTIFACT:apps/api/src/modules/legal/case-settings.router.ts;ARTIFACT:apps/api/src/modules/legal/case-automation.ts;ARTIFACT:packages/validators/src/case-settings.ts;ARTIFACT:apps/api/src/__tests__/app-router.smoke.test.ts,VALIDATE:pnpm test,120/240/480,2026-04-19,2026-04-20,100,PG-178:FS,
PG-191,Settings,Module Settings - Tasks (/tasks/task-settings),Frontend Dev (STOA-Foundation),PG-178,FILE:apps/web/src/components/sidebar/configs/tasks.ts;FILE:apps/web/src/components/tasks/TaskSettingsSidebarNav.tsx,"Task settings page at /tasks/task-settings with due-date offset, reminder, templates config; uses in-module settings sidebar pattern; Lighthouse >=90; verified by: pnpm test",Backlog,All form fields render and save; sidebar settings nav works; Lighthouse >=90,18,ARTIFACT:apps/web/src/app/tasks/(list)/task-settings/page.tsx,VALIDATE:pnpm test,120/240/480,,,0,PG-178:FS,
PG-192,AI Intelligence,Fix missing /agent-approvals/logs page — PG-152 regression; AgentLogsViewer component exists at apps/web/src/components/ai-monitoring/AgentLogsViewer.tsx but page.tsx is absent causing 404 on route,Frontend Dev (STOA-Intelligence),PG-152,FILE:apps/web/src/components/ai-monitoring/AgentLogsViewer.tsx;FILE:apps/web/src/components/sidebar/configs/agent-approvals.ts,page.tsx created at apps/web/src/app/agent-approvals/logs/page.tsx; route /agent-approvals/logs renders AgentLogsViewer with auth guard and Suspense boundary; matches PG-151/PG-150 shell pattern; Lighthouse >=90; verified by: pnpm test,Completed,Route no longer 404; page loads <500ms; Lighthouse >=90; test coverage >=90%,16,ARTIFACT:apps/web/src/app/agent-approvals/logs/page.tsx;SPEC:.specify/sprints/sprint-16/specifications/PG-192-spec.md;PLAN:.specify/sprints/sprint-16/planning/PG-192-plan.md;EVIDENCE:.specify/sprints/sprint-16/attestations/PG-192/attestation.json,VALIDATE:pnpm --filter @intelliflow/web typecheck;VALIDATE:pnpm --filter @intelliflow/web test --run,30/60/120,2026-03-17,2026-03-17,100,PG-152:FS,
PG-193,AI Intelligence,Workflow Step Progress Panel — Add real-time N/N step progress tracker to /agent-approvals/agents and /agent-approvals/logs; reads WorkflowExecution.currentStep + stepResults from tRPC; shows named steps with status icons (pending/running/completed/failed) and a % progress bar matching the AEO workflow progress UI pattern,Frontend Dev (STOA-Intelligence),"PG-151,PG-192",DESIGN:docs/design/mockups/workflow-progress-panel.png;FILE:apps/web/src/components/ai-monitoring/ActiveAgentsDashboard.tsx;FILE:apps/web/src/components/ai-monitoring/AgentLogsViewer.tsx;FILE:packages/db/prisma/schema.prisma,WorkflowProgressPanel component created; integrated into ActiveAgentsDashboard agent detail expand and AgentLogsViewer log detail view; reads currentStep and stepResults from WorkflowExecution via tRPC; renders progress bar + per-step status with checkmarks; WCAG AA accessible; Lighthouse >=90; verified by: pnpm test. NOTE: 3 follow-ups for whoever touches workflow next — (1) workflow.getExecution procedure has no production caller yet (wire a deep-link page or remove); (2) KNOWN_ENTITY_TYPES in workflow.router.ts is hardcoded (update when adding new entity kinds or derive from @intelliflow/domain); (3) entityId-only fallback returns most-recent workflow per entity which is ambiguous for multi-workflow entities (long-term: add workflowExecutionId FK on ConversationRecord). See memory/project_pg193_follow_ups.md,Completed,Progress panel renders <200ms; step states accurate; accessible (WCAG AA); Lighthouse >=90; test coverage >=90%,16,ARTIFACT:apps/web/src/components/ai-monitoring/WorkflowProgressPanel.tsx;ARTIFACT:apps/web/src/components/ai-monitoring/__tests__/WorkflowProgressPanel.test.tsx,VALIDATE:pnpm --filter @intelliflow/web typecheck;VALIDATE:pnpm --filter @intelliflow/web test --run,120/240/480,2026-03-19,2026-04-09,100,"PG-151:FS,PG-192:FS",
IFC-305,Core CRM,"Componentize CRM entity detail pages (Leads, Contacts) — extract shared SOLID-compliant components from 5284 lines of duplicated god-files; wire bypassed shared components (EntityHeader, SearchFilterBar, ActivityFeed); create cross-entity reusable components (EntityProfileCard, ActivityFilterBar, AiInsightMetricsGrid, ai-insight-transforms utility, EntityErrorState, EntityDetailSkeleton, ConfirmationDialog); reduce page files from 2691/2593 to ~200 lines each",Frontend Dev (STOA-Quality),IFC-226,FILE:apps/web/src/app/leads/[id]/page.tsx;FILE:apps/web/src/app/contacts/[id]/page.tsx;FILE:apps/web/src/components/contacts/ContactDetail.tsx;FILE:apps/web/src/components/shared/entity-header.tsx;FILE:apps/web/src/components/shared/search-filter-bar.tsx;FILE:docs/planning/prd-core-crm.md;FILE:docs/architecture/adr/ADR-045-entity-detail-componentization.md,Entity detail pages reduced to <300 lines each; shared components extracted and reused across leads/contacts; EntityHeader/SearchFilterBar/ActivityFeed wired; AI insight transforms deduplicated into shared utility; each component independently testable >=90% coverage; zero functional regression; verified by: pnpm typecheck + test + lint + build,Backlog,Page file reduction >=80%; Component coverage >=90%; Shared component reuse (3+ bypassed wired); Duplication eliminated >=1500 lines,19,ARTIFACT:apps/web/src/components/leads/LeadDetail.tsx;ARTIFACT:apps/web/src/components/shared/entity-profile-card.tsx;ARTIFACT:apps/web/src/lib/shared/ai-insight-transforms.ts;EVIDENCE:.specify/sprints/sprint-19/attestations/IFC-305/context_ack.json,VALIDATE:pnpm --filter web typecheck;VALIDATE:pnpm --filter web test --run;VALIDATE:pnpm --filter web lint;VALIDATE:pnpm --filter web build;GATE:coverage-gte-90,180/360/720,,,0,IFC-226:FS,
IFC-306,Compliance,"Fix Compliance Calendar Seed Data — replace fabricated/stale events in compliance-calendar.json with realistic SaaS CRM compliance milestones; remove irrelevant ISO 14001 events; update 6 past events still marked scheduled to completed; extend date range through 2026-12 covering GDPR quarterly reviews, SOC 2 audit cycle, ISO 27001 surveillance, ISO 42001 certification path, OWASP assessments; update metadata version and lastUpdated",DPO + Legal (STOA-Foundation),IFC-073,FILE:docs/planning/compliance-calendar.json;FILE:apps/web/src/app/api/compliance/timeline/route.ts;FILE:apps/web/src/app/api/compliance/types.ts,"compliance-calendar.json has 22 events covering 4 standards (GDPR, SOC 2, ISO 27001, ISO 42001, OWASP); no ISO 14001; all past events status=completed; all future events status=scheduled; date range Oct 2025–Dec 2026; timeline API serves updated data; verified by: pnpm test",Backlog,22 events; 0 stale statuses; 5 standards; 12-month forward coverage; API returns updated events,19,ARTIFACT:docs/planning/compliance-calendar.json;EVIDENCE:.specify/sprints/sprint-19/attestations/IFC-306/context_ack.json,VALIDATE:pnpm --filter web typecheck;VALIDATE:pnpm --filter web test --run,15/30/60,,,0,IFC-073:FS,
PG-194,Governance Pages,"Governance Compliance Dashboard — register and wire existing /governance/compliance page; replace 5 hardcoded ComplianceCard scores (ISO 27001 92%, ISO 42001 45%, ISO 14001 78%, GDPR 98%, ADR 60%) with real compliance API data; remove hardcoded overall score 74.6 and '16 Total' action items; remove ISO 14001 card (irrelevant to SaaS); connect ComplianceTimeline and RiskHeatMap to live API endpoints; ensure ComplianceDetailPanel drilldown shows real control data; tests >=90%",Frontend Dev (STOA-Quality),"IFC-073,IFC-100,IFC-306",FILE:apps/web/src/app/governance/compliance/page.tsx;FILE:apps/web/src/app/governance/compliance/components/ComplianceTimeline.tsx;FILE:apps/web/src/app/api/compliance/timeline/route.ts;FILE:apps/web/src/app/api/compliance/[standardId]/route.ts;FILE:apps/web/src/app/api/compliance/risks/route.ts;DESIGN:docs/design/README.md,ComplianceCards load scores from API not hardcoded; overall score computed from live data; ISO 14001 card removed; ComplianceTimeline renders events from compliance-calendar.json; RiskHeatMap fetches from /api/compliance/risks; ComplianceDetailPanel shows real controls; Lighthouse >=90; test coverage >=90%; verified by: pnpm test,Backlog,0 hardcoded scores; API-driven cards; Lighthouse >=90; coverage >=90%,20,ARTIFACT:apps/web/src/app/governance/compliance/page.tsx;ARTIFACT:apps/web/src/app/governance/compliance/components/ComplianceTimeline.tsx;EVIDENCE:.specify/sprints/sprint-20/attestations/PG-194/context_ack.json,GATE:lighthouse-gte-90;VALIDATE:pnpm --filter web typecheck;VALIDATE:pnpm --filter web test --run;GATE:coverage-gte-90,60/120/240,,,0,"IFC-073:FS,IFC-100:FS,IFC-306:FS",
IFC-307,AI & Intelligence,"Contact Enrichment Pipeline — Automated background job that periodically enriches contact/lead data from external providers (Clearbit, Apollo). Includes: BullMQ queue intelliflow-contact-enrichment, enrichment adapter with rate limiting, on-create trigger in contact.router.ts, periodic cron sweep for stale profiles (>30 days), cost tracking via CostTracker, field updates (company, title, social profiles, industry)",Tech Lead (STOA-Domain),"IFC-168,IFC-131",FILE:apps/ai-worker/src/jobs/enrichment.job.ts;FILE:packages/adapters/src/enrichment/enrichment-provider.ts;FILE:apps/api/src/modules/contact/contact.router.ts,"External enrichment provider adapter with rate limiting; BullMQ queue intelliflow-contact-enrichment wired with producer on contact create; periodic cron sweep for stale profiles; cost tracking per call via CostTracker; contact fields updated: company, title, social profiles, industry; >=90% test coverage; all 4 validations pass",Backlog,Enrichment rate >=60%; API cost <$0.05 per call; Queue p95 <5s; Coverage >=90%,22,ARTIFACT:apps/ai-worker/src/chains/enrichment.chain.ts;ARTIFACT:apps/ai-worker/src/jobs/enrichment.job.ts;ARTIFACT:packages/adapters/src/enrichment/enrichment-provider.ts;EVIDENCE:.specify/sprints/sprint-22/attestations/IFC-307/context_ack.json,VALIDATE:pnpm typecheck;VALIDATE:pnpm test --run;VALIDATE:pnpm lint;VALIDATE:pnpm build;GATE:coverage-gte-90,300/480/780,,,0,"IFC-168:FS,IFC-131:FS",
IFC-308,AI & Intelligence,"Scheduled Report Generation — BullMQ cron job that generates daily/weekly analytics snapshots and emails summary reports to team leads. Includes: report template system (pipeline summary, lead conversion, revenue trends, SLA compliance), PDF/HTML report rendering, email delivery via notifications worker, configurable schedule per tenant, report archive storage",Tech Lead (STOA-Domain),"IFC-168,IFC-024",FILE:apps/ai-worker/src/jobs/report-generation.job.ts;FILE:apps/api/src/modules/analytics/analytics.router.ts;FILE:apps/api/src/modules/analytics/report-templates.ts,"4+ report templates (pipeline, leads, revenue, SLA); PDF/HTML rendering; email delivery via notifications worker; configurable schedule per tenant; report archive in storage; >=90% test coverage; all 4 validations pass",Backlog,>=4 report templates; >=99% delivery reliability; Generation p95 <30s; Coverage >=90%,24,ARTIFACT:apps/ai-worker/src/jobs/report-generation.job.ts;ARTIFACT:apps/api/src/modules/analytics/report-templates.ts;EVIDENCE:.specify/sprints/sprint-24/attestations/IFC-308/context_ack.json,VALIDATE:pnpm typecheck;VALIDATE:pnpm test --run;VALIDATE:pnpm lint;VALIDATE:pnpm build;GATE:coverage-gte-90,360/600/960,,,0,"IFC-168:FS,IFC-024:FS",
PG-195,Performance,"Subset Material Symbols font to unblock Lighthouse Performance >=90 gate — reduces 3.5 MB MaterialSymbolsOutlined.woff2 shipped by root layout to every route (PG-056 Lighthouse=63 baseline). Audit the 1,421 .material-symbols-outlined call sites, build a subsetter script that extracts the exact glyph set, regenerate a smaller woff2 (<500 KB target), add CI guard so new glyphs are added to the audit list.",Growth FE (STOA-Foundation),PG-056,FILE:apps/web/src/app/layout.tsx;FILE:apps/web/src/app/globals.css;FILE:apps/web/public/fonts/MaterialSymbolsOutlined.woff2;FILE:.specify/sprints/sprint-17/attestations/PG-056/attestation.json;FILE:artifacts/lighthouse/pg-056-500-r1.json;FILE:docs/claude-refs/nonfunctional.md;POLICY:Lighthouse >=90 per apps/web/CLAUDE.md,"Subsetted font replaces full Material Symbols woff2 (<500 KB); Lighthouse Performance >=90 for /404 and /500 on desktop production build; zero visual regressions across the 1,421 .material-symbols-outlined call sites; subsetter script committed + reproducible; glyph-audit JSON enumerates the used glyph set; artifacts: subsetted woff2, glyph-audit.json, subset script, updated layout.tsx",Completed,Font transfer <500 KB (from 3473 KB); Lighthouse Perf /500 >=90; Lighthouse Perf /404 >=90; Glyph coverage 100% (zero tofu); Total page byte-weight /500 <1 MB,17,ARTIFACT:apps/web/public/fonts/MaterialSymbolsOutlined.woff2;ARTIFACT:tools/scripts/subset-material-symbols.mjs;ARTIFACT:artifacts/reports/material-symbols-glyph-audit.json;ARTIFACT:apps/web/src/app/layout.tsx;EVIDENCE:.specify/sprints/sprint-17/attestations/PG-195/attestation.json;EVIDENCE:artifacts/lighthouse/pg-195-post-subset-500.json;EVIDENCE:artifacts/lighthouse/pg-195-post-subset-404.json,GATE:lighthouse-gte-90;VALIDATE:pnpm --filter @intelliflow/web typecheck;VALIDATE:pnpm --filter @intelliflow/web test --run;VALIDATE:pnpm --filter @intelliflow/web build;AUDIT:node tools/scripts/subset-material-symbols.mjs --verify,90/180/360,2026-04-13,2026-04-15,100,PG-056:FS,
IFC-309,Compliance,"Server-side terms acceptance — persist immutable TermsAcceptance audit record (tenantId, userId, termsVersion, acceptedAt, ipAddress, userAgent, route) via tRPC legal.acceptTerms mutation and legal.getAcceptance query; wire Confirm UI on /terms for authenticated users only; replaces client-only localStorage tracker removed from PG-051 as a misleading legal-compliance signal.",Tech Lead (STOA-Domain),"PG-051,IFC-058,IFC-124",FILE:packages/db/prisma/schema.prisma;FILE:apps/api/src/modules/auth/auth.router.ts;FILE:apps/web/src/app/(public)/terms/page.tsx;FILE:docs/shared/terms-content.md;POLICY:Terms v2026.08 published (PG-051);ENV:Supabase RLS enabled per tenant,"TermsAcceptance Prisma model (tenantId, userId, termsVersion, acceptedAt, ipAddress, userAgent, route) with no UPDATE/DELETE paths; tRPC legal.acceptTerms mutation idempotent per (userId, termsVersion); legal.getAcceptance query returns latest record per user; RLS policy scoped by tenantId; Confirm UI on /terms (authenticated users only) calls mutation and hides when current version already accepted; DB migration reviewed; >=90% scoped coverage; all 4 validations pass",Backlog,Mutation p95 <200ms; Audit record immutability (no UPDATE/DELETE on router); 100% tenant isolation in RLS integration test; Coverage >=90%,18,ARTIFACT:packages/db/prisma/schema.prisma;ARTIFACT:packages/domain/src/legal/TermsAcceptance.ts;ARTIFACT:apps/api/src/modules/legal/legal.router.ts;ARTIFACT:apps/web/src/components/legal/TermsAcceptanceConfirm.tsx;EVIDENCE:.specify/sprints/sprint-18/attestations/IFC-309/context_ack.json,VALIDATE:pnpm typecheck;VALIDATE:pnpm test --run;VALIDATE:pnpm lint;VALIDATE:pnpm build;GATE:coverage-gte-90,240/480/720,2026-04-20,2026-05-11,0,"PG-051:FS,IFC-058:FS,IFC-124:FS",
IFC-310,Core CRM,"Duplicate-detection runtime for contacts + accounts (PG-182/PG-183 follow-up) — new DuplicateDetectionService (or per-entity services sharing a rule-evaluator) that reads {Contact,Account}DuplicateRule rows at create/update time and either flags or auto-merges/auto-links records; consumes autoMergeOnExactEmail + autoLinkContactsByDomain + notifyOnDuplicate + aiDuplicateDetection + aiIndustryInference + aiEnrichment toggles from the respective AutomationSetting table; transactional merge combines rows (activities, notes, opportunities, tags, aiInsight) with conflict resolution.",Backend Eng (STOA-Domain),"PG-182,PG-183",FILE:apps/api/src/modules/contact/contact-automation.ts;FILE:apps/api/src/modules/contact/contact.router.ts;FILE:apps/api/src/modules/account/account-automation.ts;FILE:apps/api/src/modules/account/account.router.ts;FILE:packages/db/prisma/schema.prisma;FILE:.specify/sprints/sprint-17/specifications/PG-182-spec.md;FILE:.specify/sprints/sprint-17/specifications/PG-183-spec.md,"Rule evaluator runs {Contact,Account}DuplicateRule checks at create+update time; contacts respect autoMergeOnExactEmail/notifyOnDuplicate/aiDuplicateDetection; accounts respect autoLinkContactsByDomain/notifyOnDuplicate; auto-merge/auto-link operations are transactional and preserve the oldest record's id while folding in newer relations; new contact_duplicate and account_duplicate notification types added to NOTIFICATION_TYPES; aiDuplicateDetection uses pgvector similarity on the entity's embeddings; >=90% scoped coverage; all 4 validations pass",Completed,Duplicate-flag rate per entity; auto-merge/auto-link success rate; merge p95 <500ms; zero cross-tenant merges in integration test; Coverage >=90%,18,ARTIFACT:apps/api/src/shared/duplicate-rule-evaluator.ts;ARTIFACT:apps/api/src/modules/contact/contact-duplicate-detection.service.ts;ARTIFACT:apps/api/src/modules/account/account-duplicate-detection.service.ts;ARTIFACT:apps/api/src/shared/__tests__/duplicate-rule-evaluator.test.ts;ARTIFACT:apps/api/src/modules/contact/__tests__/contact-duplicate-detection.service.test.ts;ARTIFACT:apps/api/src/modules/account/__tests__/account-duplicate-detection.service.test.ts;ARTIFACT:apps/api/src/modules/contact/__tests__/contact-merge.bench.test.ts;ARTIFACT:apps/api/src/modules/contact/__tests__/contact-merge.real-db.bench.test.ts;ARTIFACT:apps/api/src/modules/contact/__tests__/contact-duplicate-detection.integration.test.ts;ARTIFACT:apps/ai-worker/src/workers/contact-embed-worker.ts;ARTIFACT:apps/ai-worker/src/workers/__tests__/contact-embed-worker.test.ts;ARTIFACT:packages/application/src/services/events/ContactMergedEvent.ts;ARTIFACT:packages/application/src/services/events/__tests__/ContactMergedEvent.test.ts;ARTIFACT:packages/application/src/services/AccountService.ts;ARTIFACT:packages/application/src/services/ContactService.ts;ARTIFACT:packages/application/src/ports/repositories/ContactRepositoryPort.ts;ARTIFACT:packages/domain/src/crm/contact/CrossTenantOrNotFoundError.ts;ARTIFACT:packages/domain/src/crm/contact/ContactRepository.ts;ARTIFACT:packages/adapters/src/repositories/PrismaContactRepository.ts;ARTIFACT:packages/adapters/src/repositories/InMemoryContactRepository.ts;ARTIFACT:packages/validators/src/notifications.ts;ARTIFACT:packages/validators/src/contact.ts;ARTIFACT:apps/api/src/container.ts;ARTIFACT:apps/api/src/context.ts;ARTIFACT:apps/api/src/modules/contact/contact.router.ts;ARTIFACT:apps/api/src/modules/account/account.router.ts;ARTIFACT:apps/ai-worker/src/ai-worker.ts;ARTIFACT:apps/ai-worker/src/index.ts;ARTIFACT:eslint.config.mjs;ARTIFACT:docs/architecture/adr/ADR-050-duplicate-detection-runtime.md;ARTIFACT:artifacts/coverage/IFC-310-before.json;ARTIFACT:artifacts/coverage/IFC-310-after.json;ARTIFACT:artifacts/benchmarks/IFC-310-merge.json;SPEC:.specify/sprints/sprint-18/specifications/IFC-310-spec.md;PLAN:.specify/sprints/sprint-18/planning/IFC-310-plan.md;EVIDENCE:.specify/sprints/sprint-18/attestations/IFC-310/attestation.json,VALIDATE:pnpm typecheck;VALIDATE:pnpm test --run;VALIDATE:pnpm lint;VALIDATE:pnpm build;GATE:coverage-gte-90,360/720/1080,2026-04-20,2026-04-20,100,"PG-182:FS,PG-183:FS",
IFC-311,Core CRM,"Reassign endpoints + notifyOnOwnerChange wiring for contacts + accounts (PG-182/PG-183 follow-up) — add contact.reassign/contact.bulkReassign and account.reassign/account.bulkReassign tRPC procedures; on owner change, invoke the notifyContactReassignment or notifyAccountReassignment helper (both already shipped — PG-182 in contact-automation.ts, PG-183 in account-automation.ts) with the bound createNotification from notifications.router.ts; contact_reassigned is already in NOTIFICATION_TYPES — add account_reassigned alongside it.",Backend Eng (STOA-Domain),"PG-182,PG-183",FILE:apps/api/src/modules/contact/contact-automation.ts;FILE:apps/api/src/modules/contact/contact.router.ts;FILE:apps/api/src/modules/account/account-automation.ts;FILE:apps/api/src/modules/account/account.router.ts;FILE:apps/api/src/modules/notifications/notifications.router.ts;FILE:packages/validators/src/notifications.ts,contact.reassign + contact.bulkReassign and account.reassign + account.bulkReassign mutations; all validate caller permission; each reads the matching AutomationSetting.notifyOnOwnerChange flag and invokes the notify*Reassignment helper when true; emit contact_reassigned + account_reassigned notifications to both old and new owner; idempotent when new owner == current owner; >=90% scoped coverage,Completed,Reassign p95 <200ms per entity; Bulk reassign handles 100 rows <2s; Both parties receive notification in integration test; Coverage >=90%,18,ARTIFACT:apps/api/src/modules/contact/contact.router.ts;ARTIFACT:apps/api/src/modules/account/account.router.ts;ARTIFACT:apps/api/src/modules/contact/__tests__/contact.reassign.test.ts;ARTIFACT:apps/api/src/modules/account/__tests__/account.reassign.test.ts;ARTIFACT:packages/validators/src/notifications.ts;ARTIFACT:packages/validators/src/contact.ts;ARTIFACT:packages/validators/src/account.ts;ARTIFACT:apps/api/src/modules/account/account-reassign.ts;ARTIFACT:apps/api/src/modules/contact/contact-reassign.ts;SPEC:.specify/sprints/sprint-18/specifications/IFC-311-spec.md;PLAN:.specify/sprints/sprint-18/planning/IFC-311-plan.md;EVIDENCE:.specify/sprints/sprint-18/attestations/IFC-311/attestation.json,VALIDATE:pnpm typecheck;VALIDATE:pnpm test --run;VALIDATE:pnpm lint;VALIDATE:pnpm build;GATE:coverage-gte-90,240/480/720,2026-04-20,2026-04-20,100,"PG-182:FS,PG-183:FS",
IFC-312,AI/Intelligence,"AI chains for contacts + accounts (PG-182/PG-183 follow-up) — wire the remaining AI toggles on both entities to real LLM/embedding consumers: aiEnrichment (external enrichment API + provider adapter, shared across entities), aiTagSuggestions (LLM prompt + surface on detail pages), aiInsightGeneration (LLM chain writing to {Contact,Account}AIInsight + surface), aiAutoReplyDrafting (contact inbox), aiIndustryInference (account-only LLM classifier that picks the best AccountIndustryOption), aiAccountScoring (account-only LLM scorer that writes to the Account score field).",AI Eng (STOA-Intelligence),"PG-182,PG-183,IFC-310",FILE:apps/api/src/modules/contact/contact-automation.ts;FILE:apps/api/src/modules/contact/contact.router.ts;FILE:apps/api/src/modules/account/account-automation.ts;FILE:apps/api/src/modules/account/account.router.ts;FILE:apps/ai-worker/src/contact-ai.chains.ts;FILE:apps/ai-worker/src/account-ai.chains.ts;FILE:packages/db/prisma/schema.prisma,"Each AI toggle reads the tenant flag from the matching AutomationSetting before consuming the chain; aiEnrichment (contact+account) backfills empty fields on create via a shared enrichment adapter; aiTagSuggestions renders suggestions on both detail pages; aiInsightGeneration writes to {Contact,Account}AIInsight (both models already exist) and renders on the detail page; aiAutoReplyDrafting drafts contact inbox replies (review-before-send); aiIndustryInference classifies an account against AccountIndustryOption vocabulary; aiAccountScoring writes to Account score + records provenance; >=90% scoped coverage on chain orchestration; AI safety guardrails per stoa-intelligence",Completed,Enrichment fill rate per entity; tag-suggestion acceptance rate; insight freshness (insights per active record); chain p95 <5s; Coverage >=90%,19,ARTIFACT:apps/ai-worker/src/contact-enrichment.chain.ts;ARTIFACT:apps/ai-worker/src/account-enrichment.chain.ts;ARTIFACT:apps/ai-worker/src/shared/enrichment-adapter.ts;ARTIFACT:apps/ai-worker/src/contact-tag-suggestion.chain.ts;ARTIFACT:apps/ai-worker/src/account-tag-suggestion.chain.ts;ARTIFACT:apps/ai-worker/src/contact-insight.chain.ts;ARTIFACT:apps/ai-worker/src/account-insight.chain.ts;ARTIFACT:apps/ai-worker/src/contact-reply-draft.chain.ts;ARTIFACT:apps/ai-worker/src/account-industry-inference.chain.ts;ARTIFACT:apps/ai-worker/src/account-scoring.chain.ts;ARTIFACT:apps/ai-worker/src/chains/deal-duplicate.chain.ts;ARTIFACT:apps/ai-worker/src/chains/deal-scoring.chain.ts;ARTIFACT:apps/ai-worker/src/chains/deal-next-step.chain.ts;ARTIFACT:apps/ai-worker/src/chains/deal-tag-suggestion.chain.ts;ARTIFACT:apps/ai-worker/src/chains/deal-insight.chain.ts;ARTIFACT:apps/ai-worker/src/chains/deal-win-loss-prediction.chain.ts;ARTIFACT:apps/ai-worker/src/chains/ticket-duplicate.chain.ts;ARTIFACT:apps/ai-worker/src/chains/ticket-categorization.chain.ts;ARTIFACT:apps/ai-worker/src/chains/ticket-sentiment.chain.ts;ARTIFACT:apps/ai-worker/src/chains/ticket-next-step.chain.ts;ARTIFACT:apps/ai-worker/src/chains/ticket-tag-suggestion.chain.ts;ARTIFACT:apps/ai-worker/src/chains/ticket-insight.chain.ts,VALIDATE:pnpm typecheck;VALIDATE:pnpm test --run;VALIDATE:pnpm lint;VALIDATE:pnpm build;GATE:coverage-gte-90,540/1080/1620,2026-04-20,2026-04-22,100,"PG-182:FS,PG-183:FS,IFC-310:FS",
PG-196,Settings,Module Settings - Account Tiers (/accounts/(list)/account-tiers),Frontend Dev (STOA-Foundation),"PG-178,PG-183",FILE:apps/web/src/components/sidebar/configs/accounts.ts;FILE:apps/web/src/app/accounts/(list)/account-settings/AccountSettingsContent.tsx;FILE:apps/api/src/modules/account/account-automation.ts;FILE:docs/planning/module-settings-playbook.md;FILE:docs/planning/prd-module-settings.md,"Account tiers at /accounts/(list)/account-tiers (tier definitions bronze/silver/gold/platinum, point thresholds, benefits matrix, default tier, upgrade/downgrade rules). MUST follow docs/planning/module-settings-playbook.md: PageHeader+bento grid; canonical EmptyState (entity + phase=passive); system-compliant CTAs; TagsTab via forwardRef; $transaction on all destructive writes; no skipDuplicates; Zod superRefine for duplicate tier names; colorToken CHECK constraint; AI defaults FALSE; wire every Boolean toggle in account-automation.ts OR declare as category-2 follow-up under IFC-310/311/312; include cross-tenant negative test; Lighthouse >=90; verified by: pnpm test",Backlog,All 4 validations pass; every toggle has runtime consumer or IFC-* follow-up; EmptyState uses project SVG; cross-tenant negative test; Lighthouse >=90,18,ARTIFACT:apps/web/src/app/accounts/(list)/account-tiers/page.tsx;ARTIFACT:apps/web/src/app/accounts/(list)/account-tiers/AccountTiersContent.tsx;ARTIFACT:apps/api/src/modules/account/account-tiers.router.ts;ARTIFACT:packages/validators/src/account-tiers.ts;EVIDENCE:.specify/sprints/sprint-18/attestations/PG-196/context_ack.json,VALIDATE:pnpm typecheck;VALIDATE:pnpm test --run;VALIDATE:pnpm lint;VALIDATE:pnpm build;GATE:lighthouse-gte-90,180/360/540,,,0,"PG-178:FS,PG-183:FS",
PG-197,Settings,Module Settings - Territory Mapping (/accounts/(list)/territory-mapping),Frontend Dev (STOA-Foundation),"PG-178,PG-183",FILE:apps/web/src/components/sidebar/configs/accounts.ts;FILE:apps/web/src/app/accounts/(list)/account-settings/AccountSettingsContent.tsx;FILE:apps/api/src/modules/account/account-automation.ts;FILE:docs/planning/module-settings-playbook.md;FILE:docs/planning/prd-module-settings.md,"Territory mapping at /accounts/(list)/territory-mapping (geographic territory rules by region/country/postcode, assignment strategies round-robin/load-balance/manual, overlap resolution priority, default territory). MUST follow docs/planning/module-settings-playbook.md: PageHeader+bento grid; canonical EmptyState (entity + phase=passive); system-compliant CTAs; TagsTab via forwardRef; $transaction on all destructive writes; no skipDuplicates; Zod superRefine for duplicate (region, country) pairs; colorToken CHECK constraint; AI defaults FALSE; wire every Boolean toggle in account-automation.ts OR declare as category-2 follow-up under IFC-310/311/312; include cross-tenant negative test; Lighthouse >=90; verified by: pnpm test",Backlog,All 4 validations pass; every toggle has runtime consumer or IFC-* follow-up; EmptyState uses project SVG; cross-tenant negative test; Lighthouse >=90,18,ARTIFACT:apps/web/src/app/accounts/(list)/territory-mapping/page.tsx;ARTIFACT:apps/web/src/app/accounts/(list)/territory-mapping/TerritoryMappingContent.tsx;ARTIFACT:apps/api/src/modules/account/account-territories.router.ts;ARTIFACT:packages/validators/src/account-territories.ts;EVIDENCE:.specify/sprints/sprint-18/attestations/PG-197/context_ack.json,VALIDATE:pnpm typecheck;VALIDATE:pnpm test --run;VALIDATE:pnpm lint;VALIDATE:pnpm build;GATE:lighthouse-gte-90,180/360/540,,,0,"PG-178:FS,PG-183:FS",
PG-198,Settings,Module Settings - Approval Policies (/agent-approvals/approval-policies),Frontend Dev (STOA-Foundation),"PG-178,PG-152,PG-192",FILE:apps/web/src/components/sidebar/configs/agent-approvals.ts;FILE:apps/web/src/components/ai-monitoring/AgentLogsViewer.tsx;FILE:docs/planning/module-settings-playbook.md;FILE:docs/planning/prd-module-settings.md,"Approval policies at /agent-approvals/approval-policies (policy rules: auto-approve thresholds, required reviewers, escalation paths, approval timeout SLAs, per-agent overrides). MUST follow docs/planning/module-settings-playbook.md: PageHeader+bento grid; canonical EmptyState (entity + phase=passive); system-compliant CTAs; TagsTab via forwardRef; $transaction on all destructive writes; no skipDuplicates; Zod superRefine for duplicate (agent, action) pairs; colorToken CHECK constraint; AI defaults FALSE; wire every Boolean toggle in agent-approval automation OR declare as category-2 follow-up under IFC-310/311/312; include cross-tenant negative test; Lighthouse >=90; verified by: pnpm test",Backlog,All 4 validations pass; every toggle has runtime consumer or IFC-* follow-up; EmptyState uses project SVG; cross-tenant negative test; Lighthouse >=90,18,ARTIFACT:apps/web/src/app/agent-approvals/approval-policies/page.tsx;ARTIFACT:apps/web/src/app/agent-approvals/approval-policies/ApprovalPoliciesContent.tsx;ARTIFACT:apps/api/src/modules/agent-approval/approval-policies.router.ts;ARTIFACT:packages/validators/src/approval-policies.ts;EVIDENCE:.specify/sprints/sprint-18/attestations/PG-198/context_ack.json,VALIDATE:pnpm typecheck;VALIDATE:pnpm test --run;VALIDATE:pnpm lint;VALIDATE:pnpm build;GATE:lighthouse-gte-90,180/360/540,,,0,"PG-178:FS,PG-152:FS,PG-192:FS",
PG-199,Settings,Module Settings - Model Config (/agent-approvals/model-config),Frontend Dev (STOA-Foundation),"PG-178,PG-152,PG-192",FILE:apps/web/src/components/sidebar/configs/agent-approvals.ts;FILE:apps/web/src/components/ai-monitoring/AgentLogsViewer.tsx;FILE:docs/planning/module-settings-playbook.md;FILE:docs/planning/prd-module-settings.md,"Model config at /agent-approvals/model-config (per-agent model selection, temperature, max tokens, fallback chain, per-agent cost ceilings). Respect Never-Downgrade rule for model IDs (memory/feedback_never_downgrade_without_approval.md). MUST follow docs/planning/module-settings-playbook.md: PageHeader+bento grid; canonical EmptyState (entity + phase=passive); system-compliant CTAs; TagsTab via forwardRef; $transaction on all destructive writes; no skipDuplicates; Zod superRefine for duplicate agent keys; colorToken CHECK constraint; AI defaults FALSE; wire every Boolean toggle in agent-approval automation OR declare as category-2 follow-up under IFC-310/311/312; include cross-tenant negative test; Lighthouse >=90; verified by: pnpm test",Backlog,All 4 validations pass; every toggle has runtime consumer or IFC-* follow-up; EmptyState uses project SVG; cross-tenant negative test; Lighthouse >=90,18,ARTIFACT:apps/web/src/app/agent-approvals/model-config/page.tsx;ARTIFACT:apps/web/src/app/agent-approvals/model-config/ModelConfigContent.tsx;ARTIFACT:apps/api/src/modules/agent-approval/model-config.router.ts;ARTIFACT:packages/validators/src/model-config.ts;EVIDENCE:.specify/sprints/sprint-18/attestations/PG-199/context_ack.json,VALIDATE:pnpm typecheck;VALIDATE:pnpm test --run;VALIDATE:pnpm lint;VALIDATE:pnpm build;GATE:lighthouse-gte-90,180/360/540,,,0,"PG-178:FS,PG-152:FS,PG-192:FS",
PG-200,Settings,Module Settings - Report Templates (/analytics/report-templates),Frontend Dev (STOA-Foundation),"PG-178,PG-187",FILE:apps/web/src/components/sidebar/configs/analytics.ts;FILE:apps/web/src/app/analytics/report-settings/page.tsx;FILE:docs/planning/module-settings-playbook.md;FILE:docs/planning/prd-module-settings.md,Report templates at /analytics/report-templates (saveable report layouts: filter set + selected columns + chart type + default period + sharing scope). MUST follow docs/planning/module-settings-playbook.md: PageHeader+bento grid; canonical EmptyState (entity + phase=passive); system-compliant CTAs; TagsTab via forwardRef; $transaction on all destructive writes; no skipDuplicates; Zod superRefine for duplicate template names within scope; colorToken CHECK constraint; AI defaults FALSE; wire every Boolean toggle in analytics automation OR declare as category-2 follow-up under IFC-310/311/312; include cross-tenant negative test; Lighthouse >=90; verified by: pnpm test,Backlog,All 4 validations pass; every toggle has runtime consumer or IFC-* follow-up; EmptyState uses project SVG; cross-tenant negative test; Lighthouse >=90,18,ARTIFACT:apps/web/src/app/analytics/report-templates/page.tsx;ARTIFACT:apps/web/src/app/analytics/report-templates/ReportTemplatesContent.tsx;ARTIFACT:apps/api/src/modules/analytics/report-templates.router.ts;ARTIFACT:packages/validators/src/report-templates.ts;EVIDENCE:.specify/sprints/sprint-18/attestations/PG-200/context_ack.json,VALIDATE:pnpm typecheck;VALIDATE:pnpm test --run;VALIDATE:pnpm lint;VALIDATE:pnpm build;GATE:lighthouse-gte-90,180/360/540,,,0,"PG-178:FS,PG-187:FS",
PG-201,Settings,Module Settings - Scheduled Reports (/analytics/scheduled-reports),Frontend Dev (STOA-Foundation),"PG-178,PG-187",FILE:apps/web/src/components/sidebar/configs/analytics.ts;FILE:apps/web/src/app/analytics/report-settings/page.tsx;FILE:docs/planning/module-settings-playbook.md;FILE:docs/planning/prd-module-settings.md,"Scheduled reports at /analytics/scheduled-reports (cron schedules, recipient lists, delivery format PDF/CSV/email-body, template ref). IFC-308 BullMQ cron READS these schedules - schema must match job expectations. MUST follow docs/planning/module-settings-playbook.md: PageHeader+bento grid; canonical EmptyState (entity + phase=passive); system-compliant CTAs; TagsTab via forwardRef; $transaction on all destructive writes; no skipDuplicates; Zod superRefine for duplicate schedule names; colorToken CHECK constraint; AI defaults FALSE; wire every Boolean toggle in analytics automation OR declare as category-2 follow-up under IFC-310/311/312; include cross-tenant negative test; Lighthouse >=90; verified by: pnpm test",Backlog,All 4 validations pass; every toggle has runtime consumer or IFC-* follow-up; EmptyState uses project SVG; cross-tenant negative test; Lighthouse >=90,18,ARTIFACT:apps/web/src/app/analytics/scheduled-reports/page.tsx;ARTIFACT:apps/web/src/app/analytics/scheduled-reports/ScheduledReportsContent.tsx;ARTIFACT:apps/api/src/modules/analytics/scheduled-reports.router.ts;ARTIFACT:packages/validators/src/scheduled-reports.ts;EVIDENCE:.specify/sprints/sprint-18/attestations/PG-201/context_ack.json,VALIDATE:pnpm typecheck;VALIDATE:pnpm test --run;VALIDATE:pnpm lint;VALIDATE:pnpm build;GATE:lighthouse-gte-90,180/360/540,,,0,"PG-178:FS,PG-187:FS",
PG-202,Settings,Module Settings - Availability (/calendar/availability),Frontend Dev (STOA-Foundation),"PG-178,PG-189",FILE:apps/web/src/components/sidebar/configs/appointments.ts;FILE:apps/web/src/app/calendar/calendar-settings/page.tsx;FILE:apps/web/src/lib/shared/timezone-utils.ts;FILE:apps/web/src/providers/TimezoneProvider.tsx;FILE:docs/planning/module-settings-playbook.md;FILE:docs/planning/prd-module-settings.md,"Availability at /calendar/availability (working hours per weekday, timezones, buffers before/after, max daily bookings, unavailable date ranges). TIMEZONE-REFACTOR-AWARE: store UTC in DB, display via useTimezoneContext() (memory/project_timezone_refactor.md). MUST follow docs/planning/module-settings-playbook.md: PageHeader+bento grid; canonical EmptyState (entity + phase=passive); system-compliant CTAs; TagsTab via forwardRef; $transaction on all destructive writes; no skipDuplicates; Zod superRefine for overlapping time ranges per weekday; colorToken CHECK constraint; AI defaults FALSE; wire every Boolean toggle in calendar automation OR declare as category-2 follow-up under IFC-310/311/312; include cross-tenant negative test; Lighthouse >=90; verified by: pnpm test",Backlog,All 4 validations pass; every toggle has runtime consumer or IFC-* follow-up; EmptyState uses project SVG; cross-tenant negative test; Lighthouse >=90,18,ARTIFACT:apps/web/src/app/calendar/availability/page.tsx;ARTIFACT:apps/web/src/app/calendar/availability/AvailabilityContent.tsx;ARTIFACT:apps/api/src/modules/calendar/availability.router.ts;ARTIFACT:packages/validators/src/availability.ts;EVIDENCE:.specify/sprints/sprint-18/attestations/PG-202/context_ack.json,VALIDATE:pnpm typecheck;VALIDATE:pnpm test --run;VALIDATE:pnpm lint;VALIDATE:pnpm build;GATE:lighthouse-gte-90,180/360/540,,,0,"PG-178:FS,PG-189:FS",
PG-203,Settings,Module Settings - Event Types (/calendar/event-types),Frontend Dev (STOA-Foundation),"PG-178,PG-189",FILE:apps/web/src/components/sidebar/configs/appointments.ts;FILE:apps/web/src/app/calendar/calendar-settings/page.tsx;FILE:docs/planning/module-settings-playbook.md;FILE:docs/planning/prd-module-settings.md,"Event types at /calendar/event-types (meeting type definitions: duration, color, default description, booking link slug, required form fields, location type). MUST follow docs/planning/module-settings-playbook.md: PageHeader+bento grid; canonical EmptyState (entity + phase=passive); system-compliant CTAs; TagsTab via forwardRef; $transaction on all destructive writes; no skipDuplicates; Zod superRefine for duplicate booking slugs; colorToken CHECK constraint; AI defaults FALSE; wire every Boolean toggle in calendar automation OR declare as category-2 follow-up under IFC-310/311/312; include cross-tenant negative test; Lighthouse >=90; verified by: pnpm test",Backlog,All 4 validations pass; every toggle has runtime consumer or IFC-* follow-up; EmptyState uses project SVG; cross-tenant negative test; Lighthouse >=90,18,ARTIFACT:apps/web/src/app/calendar/event-types/page.tsx;ARTIFACT:apps/web/src/app/calendar/event-types/EventTypesContent.tsx;ARTIFACT:apps/api/src/modules/calendar/event-types.router.ts;ARTIFACT:packages/validators/src/event-types.ts;EVIDENCE:.specify/sprints/sprint-18/attestations/PG-203/context_ack.json,VALIDATE:pnpm typecheck;VALIDATE:pnpm test --run;VALIDATE:pnpm lint;VALIDATE:pnpm build;GATE:lighthouse-gte-90,180/360/540,,,0,"PG-178:FS,PG-189:FS",
PG-204,Settings,Module Settings - Case Types (/cases/case-types),Frontend Dev (STOA-Foundation),"PG-178,PG-190",FILE:apps/web/src/components/sidebar/configs/cases.ts;FILE:apps/web/src/app/cases/case-settings/page.tsx;FILE:docs/planning/module-settings-playbook.md;FILE:docs/planning/prd-module-settings.md,"Case types at /cases/case-types (taxonomy: category, default priority, default SLA, required fields, resolution workflow). MUST follow docs/planning/module-settings-playbook.md: PageHeader+bento grid; canonical EmptyState (entity + phase=passive); system-compliant CTAs; TagsTab via forwardRef; $transaction on all destructive writes; no skipDuplicates; Zod superRefine for duplicate type names; colorToken CHECK constraint; AI defaults FALSE; wire every Boolean toggle in case automation OR declare as category-2 follow-up under IFC-310/311/312; include cross-tenant negative test; Lighthouse >=90; verified by: pnpm test",Backlog,All 4 validations pass; every toggle has runtime consumer or IFC-* follow-up; EmptyState uses project SVG; cross-tenant negative test; Lighthouse >=90,18,ARTIFACT:apps/web/src/app/cases/case-types/page.tsx;ARTIFACT:apps/web/src/app/cases/case-types/CaseTypesContent.tsx;ARTIFACT:apps/api/src/modules/case/case-types.router.ts;ARTIFACT:packages/validators/src/case-types.ts;EVIDENCE:.specify/sprints/sprint-18/attestations/PG-204/context_ack.json,VALIDATE:pnpm typecheck;VALIDATE:pnpm test --run;VALIDATE:pnpm lint;VALIDATE:pnpm build;GATE:lighthouse-gte-90,180/360/540,,,0,"PG-178:FS,PG-190:FS",
PG-205,Settings,Module Settings - Contact Types (/contacts/(list)/contact-types),Frontend Dev (STOA-Foundation),"PG-178,PG-182",FILE:apps/web/src/components/sidebar/configs/contacts.ts;FILE:apps/web/src/app/contacts/(list)/contact-settings/ContactSettingsContent.tsx;FILE:apps/api/src/modules/contact/contact-automation.ts;FILE:docs/planning/module-settings-playbook.md;FILE:docs/planning/prd-module-settings.md,"Contact types at /contacts/(list)/contact-types (taxonomy: person/organization/vendor/partner, required fields per type, default fields, default labels). MUST follow docs/planning/module-settings-playbook.md: PageHeader+bento grid; canonical EmptyState (entity + phase=passive); system-compliant CTAs; TagsTab via forwardRef; $transaction on all destructive writes; no skipDuplicates; Zod superRefine for duplicate type names; colorToken CHECK constraint; AI defaults FALSE; wire every Boolean toggle in contact-automation.ts OR declare as category-2 follow-up under IFC-310/311/312; include cross-tenant negative test; Lighthouse >=90; verified by: pnpm test",Backlog,All 4 validations pass; every toggle has runtime consumer or IFC-* follow-up; EmptyState uses project SVG; cross-tenant negative test; Lighthouse >=90,18,ARTIFACT:apps/web/src/app/contacts/(list)/contact-types/page.tsx;ARTIFACT:apps/web/src/app/contacts/(list)/contact-types/ContactTypesContent.tsx;ARTIFACT:apps/api/src/modules/contact/contact-types.router.ts;ARTIFACT:packages/validators/src/contact-types.ts;EVIDENCE:.specify/sprints/sprint-18/attestations/PG-205/context_ack.json,VALIDATE:pnpm typecheck;VALIDATE:pnpm test --run;VALIDATE:pnpm lint;VALIDATE:pnpm build;GATE:lighthouse-gte-90,180/360/540,,,0,"PG-178:FS,PG-182:FS",
PG-206,Settings,Module Settings - Storage Policies (/documents/(list)/storage-policies),Frontend Dev (STOA-Foundation),"PG-178,PG-186",FILE:apps/web/src/components/sidebar/configs/documents.ts;FILE:apps/web/src/app/documents/(list)/document-settings/DocumentSettingsContent.tsx;FILE:apps/api/src/modules/legal/document-automation.ts;FILE:docs/planning/module-settings-playbook.md;FILE:docs/planning/prd-module-settings.md,"Storage policies at /documents/(list)/storage-policies (per-tenant retention periods by doc type, archival rules, cold storage migration thresholds, legal hold exceptions). MUST follow docs/planning/module-settings-playbook.md: PageHeader+bento grid; canonical EmptyState (entity + phase=passive); system-compliant CTAs; TagsTab via forwardRef; $transaction on all destructive writes; no skipDuplicates; Zod superRefine for duplicate (docType, retentionPeriod) pairs; colorToken CHECK constraint; AI defaults FALSE; wire every Boolean toggle in document-automation.ts OR declare as category-2 follow-up under IFC-310/311/312; include cross-tenant negative test; Lighthouse >=90; verified by: pnpm test",Backlog,All 4 validations pass; every toggle has runtime consumer or IFC-* follow-up; EmptyState uses project SVG; cross-tenant negative test; Lighthouse >=90,18,ARTIFACT:apps/web/src/app/documents/(list)/storage-policies/page.tsx;ARTIFACT:apps/web/src/app/documents/(list)/storage-policies/StoragePoliciesContent.tsx;ARTIFACT:apps/api/src/modules/legal/storage-policies.router.ts;ARTIFACT:packages/validators/src/storage-policies.ts;EVIDENCE:.specify/sprints/sprint-18/attestations/PG-206/context_ack.json,VALIDATE:pnpm typecheck;VALIDATE:pnpm test --run;VALIDATE:pnpm lint;VALIDATE:pnpm build;GATE:lighthouse-gte-90,180/360/540,,,0,"PG-178:FS,PG-186:FS",
PG-207,Settings,Module Settings - Email (/email/email-settings),Frontend Dev (STOA-Foundation),"PG-178,PG-182",FILE:apps/web/src/components/sidebar/configs/email.ts;FILE:apps/web/src/app/contacts/(list)/contact-settings/ContactSettingsContent.tsx;FILE:docs/planning/module-settings-playbook.md;FILE:docs/planning/prd-module-settings.md,"Email settings at /email/email-settings (SMTP/IMAP config per tenant, signatures per user/org, tracking pixel on/off, reply-to override, bounce handling rules). Secrets MUST go through server-side tRPC - never in client bundle. MUST follow docs/planning/module-settings-playbook.md: PageHeader+bento grid; canonical EmptyState (entity + phase=passive); system-compliant CTAs; TagsTab via forwardRef; $transaction on all destructive writes; no skipDuplicates; Zod superRefine for duplicate signature names; colorToken CHECK constraint; AI defaults FALSE; wire every Boolean toggle in email automation OR declare as category-2 follow-up under IFC-310/311/312; include cross-tenant negative test; Lighthouse >=90; verified by: pnpm test",Backlog,All 4 validations pass; every toggle has runtime consumer or IFC-* follow-up; EmptyState uses project SVG; cross-tenant negative test; Lighthouse >=90,18,ARTIFACT:apps/web/src/app/email/email-settings/page.tsx;ARTIFACT:apps/web/src/app/email/email-settings/EmailSettingsContent.tsx;ARTIFACT:apps/api/src/modules/email/email-settings.router.ts;ARTIFACT:packages/validators/src/email-settings.ts;EVIDENCE:.specify/sprints/sprint-18/attestations/PG-207/context_ack.json,VALIDATE:pnpm typecheck;VALIDATE:pnpm test --run;VALIDATE:pnpm lint;VALIDATE:pnpm build;GATE:lighthouse-gte-90,180/360/540,,,0,"PG-178:FS,PG-182:FS",
PG-208,Settings,Module Settings - Task Automation (/tasks/(list)/automation),Frontend Dev (STOA-Foundation),"PG-178,PG-191",FILE:apps/web/src/components/sidebar/configs/tasks.ts;FILE:apps/web/src/app/tasks/(list)/task-settings/page.tsx;FILE:docs/planning/module-settings-playbook.md;FILE:docs/planning/prd-module-settings.md,"Task automation at /tasks/(list)/automation (rule builder: when X happens create/assign task; trigger types = entity event/schedule/webhook; actions = create task, assign by round-robin, notify). MUST follow docs/planning/module-settings-playbook.md: PageHeader+bento grid; canonical EmptyState (entity + phase=passive); system-compliant CTAs; TagsTab via forwardRef; $transaction on all destructive writes; no skipDuplicates; Zod superRefine for duplicate (trigger, action) pairs; colorToken CHECK constraint; AI defaults FALSE; wire every Boolean toggle in task automation OR declare as category-2 follow-up under IFC-310/311/312; include cross-tenant negative test; Lighthouse >=90; verified by: pnpm test",Backlog,All 4 validations pass; every toggle has runtime consumer or IFC-* follow-up; EmptyState uses project SVG; cross-tenant negative test; Lighthouse >=90,18,ARTIFACT:apps/web/src/app/tasks/(list)/automation/page.tsx;ARTIFACT:apps/web/src/app/tasks/(list)/automation/TaskAutomationContent.tsx;ARTIFACT:apps/api/src/modules/task/task-automation.router.ts;ARTIFACT:packages/validators/src/task-automation.ts;EVIDENCE:.specify/sprints/sprint-18/attestations/PG-208/context_ack.json,VALIDATE:pnpm typecheck;VALIDATE:pnpm test --run;VALIDATE:pnpm lint;VALIDATE:pnpm build;GATE:lighthouse-gte-90,180/360/540,,,0,"PG-178:FS,PG-191:FS",
PG-209,Settings,Module Settings - Task Types (/tasks/(list)/task-types),Frontend Dev (STOA-Foundation),"PG-178,PG-191",FILE:apps/web/src/components/sidebar/configs/tasks.ts;FILE:apps/web/src/app/tasks/(list)/task-settings/page.tsx;FILE:docs/planning/module-settings-playbook.md;FILE:docs/planning/prd-module-settings.md,"Task types at /tasks/(list)/task-types (taxonomy: category, default duration, default priority, reminder defaults). MUST follow docs/planning/module-settings-playbook.md: PageHeader+bento grid; canonical EmptyState (entity + phase=passive); system-compliant CTAs; TagsTab via forwardRef; $transaction on all destructive writes; no skipDuplicates; Zod superRefine for duplicate type names; colorToken CHECK constraint; AI defaults FALSE; wire every Boolean toggle in task automation OR declare as category-2 follow-up under IFC-310/311/312; include cross-tenant negative test; Lighthouse >=90; verified by: pnpm test",Backlog,All 4 validations pass; every toggle has runtime consumer or IFC-* follow-up; EmptyState uses project SVG; cross-tenant negative test; Lighthouse >=90,18,ARTIFACT:apps/web/src/app/tasks/(list)/task-types/page.tsx;ARTIFACT:apps/web/src/app/tasks/(list)/task-types/TaskTypesContent.tsx;ARTIFACT:apps/api/src/modules/task/task-types.router.ts;ARTIFACT:packages/validators/src/task-types.ts;EVIDENCE:.specify/sprints/sprint-18/attestations/PG-209/context_ack.json,VALIDATE:pnpm typecheck;VALIDATE:pnpm test --run;VALIDATE:pnpm lint;VALIDATE:pnpm build;GATE:lighthouse-gte-90,180/360/540,,,0,"PG-178:FS,PG-191:FS",
PG-210,Core CRM,"IFC-311 reassign UI wiring follow-up (contacts + accounts) — wire the four new tRPC procedures shipped by IFC-311 (api.contact.reassign, api.contact.bulkReassign, api.account.reassign, api.account.bulkReassign) into real UI so the notifyOnOwnerChange Cat-1 toggle is reachable for end users on both entities. Source: IFC-311 post-completion code review Finding 1 — all four procedures are dead-on-arrival at runtime (zero direct UI callers). The account SINGLE-reassign path is transitively reachable via AccountDetail.tsx:152 → api.account.assignOwner (refactored in IFC-311 to delegate to performAccountReassign, so the notification fires), but api.account.bulkReassign is fully orphaned and the account detail page still calls the legacy name. Scope: (a) contacts-list bulk-actions bar exposes a Reassign action that calls contact.bulkReassign; (b) contact detail page actions expose a Reassign option that calls contact.reassign; (c) accounts-list bulk-actions bar exposes a Reassign action that calls account.bulkReassign (brand-new UI surface — no legacy shim covers this); (d) migrate AccountDetail.tsx:152 from api.account.assignOwner.useMutation to api.account.reassign.useMutation so the canonical IFC-311 name is the production caller (assignOwner stays as a deprecated legacy alias); (e) one integration test per entity that exercises the toggle flipping the notification path end-to-end. Backend API surface is already shipped by IFC-311 — this task is UI + wiring + one cosmetic endpoint migration only.",Frontend Dev (STOA-Foundation),IFC-311,FILE:apps/api/src/modules/contact/contact.router.ts;FILE:apps/api/src/modules/contact/contact-reassign.ts;FILE:apps/api/src/modules/account/account.router.ts;FILE:apps/api/src/modules/account/account-reassign.ts;FILE:apps/web/src/app/contacts/[id]/page.tsx;FILE:apps/web/src/components/contacts/bulk-actions-bar.tsx;FILE:apps/web/src/components/accounts/AccountDetail.tsx;FILE:docs/planning/prd-core-crm.md,api.contact.reassign + api.contact.bulkReassign + api.account.reassign + api.account.bulkReassign each have >=1 production UI caller in apps/web/src; contacts-list bulk-actions Reassign calls contact.bulkReassign with selected ids + target owner; contact detail Reassign calls contact.reassign; accounts-list bulk-actions Reassign calls account.bulkReassign; AccountDetail.tsx migrated from account.assignOwner to account.reassign (canonical); two integration tests (one per entity) verify both parties receive the matching *_reassigned notification when notifyOnOwnerChange=true; Lighthouse >=90 on contacts-list and accounts-list,Backlog,All 4 new procedures reachable from >=1 UI surface; 2 integration tests pass; Cat-1 wiring proof: rg api.(contact|account).(reassign|bulkReassign) apps/web/src returns >=4 distinct hits; Coverage >=90%,19,ARTIFACT:apps/web/src/components/contacts/bulk-actions-bar.tsx;ARTIFACT:apps/web/src/components/contacts/reassign-sheet.tsx;ARTIFACT:apps/web/src/components/accounts/bulk-actions-bar.tsx;ARTIFACT:apps/web/src/components/accounts/reassign-sheet.tsx;ARTIFACT:apps/web/src/app/contacts/(list)/__tests__/bulk-reassign.integration.test.ts;ARTIFACT:apps/web/src/app/accounts/(list)/__tests__/bulk-reassign.integration.test.ts,VALIDATE:pnpm typecheck;VALIDATE:pnpm test --run;VALIDATE:pnpm lint;VALIDATE:pnpm build;GATE:lighthouse-gte-90,180/360/540,,,0,IFC-311:FS,
IFC-313,AI/Intelligence,Real inbox integration - contact.draftReply real-thread resolver. IFC-312 audit fix F5 follow-up: the draftReply procedure currently requires the client to supply a full emailThread array (server returns PRECONDITION_FAILED otherwise). IFC-313 replaces this with a server-side resolver that takes input.emailThreadId and fetches the actual ContactEmailThread history (pending real inbox ingestion infra - to be scoped separately). Keep the client-supplied emailThread path as a fallback for power users / integrations.,AI Eng (STOA-Intelligence),IFC-312,FILE:packages/db/prisma/schema.prisma;FILE:apps/api/src/modules/contact/contact.router.ts;FILE:apps/ai-worker/src/contact-reply-draft.chain.ts;FILE:apps/ai-worker/src/jobs/reply-draft.job.ts,contact.draftReply resolves emailThreadId to real thread messages when supplied; client-supplied emailThread remains as fallback; zero placeholder drafts persisted in production; regression on IFC-312 assertions; scoped coverage >=90%,Backlog,Draft generation uses real thread context when emailThreadId resolvable; Coverage >=90%,19,ARTIFACT:apps/api/src/modules/contact/contact.router.ts;ARTIFACT:apps/ai-worker/src/contact-reply-draft.chain.ts,VALIDATE:pnpm typecheck;VALIDATE:pnpm test --run;VALIDATE:pnpm lint;VALIDATE:pnpm build;GATE:coverage-gte-90,180/360/540,,,0,IFC-312:FS,
INFRA-TF-001,Infrastructure,"Fix Terraform provider-schema drift (Railway + Vercel modules) so `terraform validate` is green. Migrate railway_deployment->railway_service source_image, default_environment object, and Vercel env->vercel_project_environment_variable / vercel_webhook / edge-config to the current provider schemas.",DevOps (STOA-Foundation),,FILE:infra/terraform/main.tf;POLICY:ADR-064,terraform validate exits 0 in terraform.yml; railway + vercel modules match the pinned provider schemas; fmt clean.,Backlog,terraform_validate=pass; fmt_check=pass,18,ARTIFACT:infra/terraform/modules/railway/main.tf;ARTIFACT:infra/terraform/modules/vercel/main.tf,VALIDATE:terraform validate;GATE:terraform plan,120/240/480,2026-06-08,2026-06-22,0,,One-time
INFRA-TF-002,Infrastructure,"Provision the three apps/workers (events-worker, ingestion-worker, notifications-worker) as first-class Railway services in Terraform. Closes GH #230/#259/#270 (workers built/tested but never deployed).",DevOps (STOA-Foundation),INFRA-TF-001,FILE:infra/terraform/main.tf;POLICY:ADR-064,Workers present in variables.tf railway_services + covered by the module for_each; a reproducible Railway deploy path exists for each.,Backlog,workers_provisioned=3; undeployed_workers=0,18,ARTIFACT:infra/terraform/variables.tf;ARTIFACT:infra/terraform/modules/railway/main.tf,VALIDATE:terraform validate;GATE:terraform plan,120/240/360,2026-06-08,2026-06-22,0,INFRA-TF-001:FS,One-time
INFRA-TF-003,Infrastructure,Replace the Supabase null_resource + curl scaffolding with the official supabase/supabase Terraform provider so Supabase auth/storage/extensions config is genuinely drift-detected.,DevOps (STOA-Foundation),INFRA-TF-001,FILE:infra/terraform/main.tf;POLICY:ADR-064,Supabase module uses the official provider; null_resource/curl removed; terraform plan shows real Supabase resources with drift detection.,Backlog,supabase_null_resources=0; drift_detection=active,18,ARTIFACT:infra/terraform/modules/supabase/main.tf,VALIDATE:terraform validate;GATE:terraform plan,180/360/600,2026-06-08,2026-06-22,0,INFRA-TF-001:FS,One-time
INFRA-TF-004,Infrastructure,Environment tfvars (dev/staging/prod) + remote state backend + a monitoring Terraform module (Grafana/Prometheus/Loki/Tempo as observability-as-code) + wire ai-worker OpenTelemetry (IFC-032).,DevOps (STOA-Foundation),INFRA-TF-001,FILE:infra/terraform/main.tf;POLICY:ADR-064,tfvars exist for all 3 envs; remote backend bootstrapped; monitoring module provisions the stack; OTel endpoint is a TF output; ai-worker emits traces.,Backlog,env_tfvars=3; remote_state=active; ai_worker_otel=emitting,18,ARTIFACT:infra/terraform/environments;ARTIFACT:infra/terraform/modules/monitoring/main.tf,VALIDATE:terraform validate;GATE:terraform plan,300/600/900,2026-06-08,2026-06-22,0,INFRA-TF-001:FS,One-time
INFRA-TF-005,Infrastructure,CI + import + runbooks: add the three workers to build-images.yml and railway-deploy.yml; terraform import existing live Vercel/Railway/Supabase infra into state; update railway-deploy / workers / observability runbooks.,DevOps (STOA-Foundation),"INFRA-TF-002,INFRA-TF-004",FILE:infra/terraform/main.tf;POLICY:ADR-064,build-images + railway-deploy cover the 3 workers; live infra imported into TF state (plan shows no spurious recreate); runbooks updated.,Backlog,workers_in_ci=3; imported_resources_clean=true,18,ARTIFACT:.github/workflows/build-images.yml;ARTIFACT:.github/workflows/railway-deploy.yml;ARTIFACT:docs/operations/runbooks/railway-deploy.md,VALIDATE:terraform validate;GATE:terraform plan,240/480/720,2026-06-08,2026-06-22,0,"INFRA-TF-002:FS,INFRA-TF-004:FS",One-time
IFC-314,Integration,"CRM-to-portal delivery & billing sync (Leangency 14-day flow). On deal-won, provision the portal tenant + push initial delivery state, then mirror billing as it changes. Adds SetupInstalment model + DeliveryTier enum + tenantSlug on Opportunity; Stripe invoice create/finalize for the 3x GBP167 Setup fee (D0/7/14); StripeSubscription persistence on customer.subscription.* webhooks; a PortalDeliverySync service that POSTs /api/internal/tenants then /api/internal/delivery via the domain_events outbox; extends CloseDealWonUseCase; registers a deal_won_enriched handler in events-worker; adds a daily portal-delivery-sweep BullMQ job in ai-worker; and verifies the Stripe webhook signature (handleSubscriptionWebhook moved off tRPC).",Backend Eng (STOA-Domain),,FILE:packages/db/prisma/schema.prisma;FILE:apps/api/src/modules/billing/billing.router.ts;FILE:apps/workers/events-worker/src/main.ts;FILE:apps/ai-worker/src/ai-worker.ts;FILE:docs/architecture/adr/ADR-065-crm-portal-delivery-sync.md;ENV:LEANGENCY_PORTAL_INTERNAL_URL + PORTAL_INTERNAL_SECRET (Railway);POLICY:portal owns delivery phase/clock - CRM mirrors billing only,"SetupInstalment + DeliveryTier + tenantSlug on Opportunity (migration applied); Stripe adapter createInvoiceItem/createInvoice/finalizeInvoice; StripeSubscription persisted on customer.subscription.*; PortalDeliverySync POSTs provision + delivery via the domain_events outbox; CloseDealWonUseCase creates 3 instalments + finalises instalment-1 + enqueues the push; events-worker handles opportunity.deal_won_enriched; ai-worker runs a daily portal-delivery-sweep job; handleSubscriptionWebhook verifies the Stripe signature; artifacts: packages/db, packages/adapters, packages/application, apps/api, apps/workers/events-worker, apps/ai-worker; targets: >=90% scoped coverage, idempotent push; verified by: pnpm typecheck/test/lint/build + pre-ship",Backlog,Idempotent at-least-once portal push (outbox); instalments D0/7/14; Stripe webhook signature-verified; Coverage >=90%,18,ARTIFACT:packages/db/prisma/schema.prisma;ARTIFACT:packages/adapters/src/payments/stripe/handlers/invoices.ts;ARTIFACT:packages/adapters/src/payments/stripe/handlers/__tests__/invoices.test.ts;ARTIFACT:packages/application/src/usecases/deals/CloseDealWonUseCase.ts;ARTIFACT:apps/api/src/modules/billing/billing.router.ts;ARTIFACT:apps/workers/events-worker/src/main.ts;ARTIFACT:apps/ai-worker/src/jobs/portal-sweep.job.ts;ARTIFACT:apps/ai-worker/src/ai-worker.ts;ARTIFACT:docs/architecture/adr/ADR-065-crm-portal-delivery-sync.md;SPEC:.specify/sprints/sprint-18/specifications/IFC-314-spec.md;PLAN:.specify/sprints/sprint-18/planning/IFC-314-plan.md;EVIDENCE:.specify/sprints/sprint-18/attestations/IFC-314/attestation.json,VALIDATE:pnpm typecheck;VALIDATE:pnpm test --run;VALIDATE:pnpm lint;VALIDATE:pnpm build;GATE:coverage-gte-90,480/960/1440,2026-06-07,2026-06-09,0,,
